,proj_id,location,size,complexity,price,task_id,task_name,duration
0,11369,Outer Banks,2577,medium,10255.0,0,00000 START,1
1,11369,Outer Banks,2577,medium,10255.0,252,252 Site Plan,1
2,11369,Outer Banks,2577,medium,10255.0,260,260 Plan Review/Permit Allocation,0
3,11369,Outer Banks,2577,medium,10255.0,420,420 House placement survey,1
4,11369,Outer Banks,2577,medium,10255.0,900,900 Bldg Stakeout,1
5,11369,Outer Banks,2577,medium,10255.0,901,901 Engineering Allocation,0
6,11369,Outer Banks,2577,medium,10255.0,1020,1020 Install Construction Entrance,1
7,11369,Outer Banks,2577,medium,10255.0,1060,1060 Foundation Excavation,1
8,11369,Outer Banks,2577,medium,10255.0,1181,1181 Pump Truck Allowance,1
9,11369,Outer Banks,2577,medium,10255.0,2230,2230 Receive Dumpster Allocation,1
10,11369,Outer Banks,2577,medium,10255.0,2240,2240 Receive Portable Toilet Allocation,1
11,11369,Outer Banks,2577,medium,10255.0,2340,2340.1 Dirt/Haul Allowance,0
12,11369,Outer Banks,2577,medium,10255.0,10300,10300.1 Driveway/Curb Repair Allowance,0
13,11369,Outer Banks,2577,medium,10255.0,1,1 START  CONSTRUCTION,1
14,11369,Outer Banks,2577,medium,10255.0,980,980 Install Silt Fence,1
15,11369,Outer Banks,2577,medium,10255.0,1100,1100 Form Footings,1
16,11369,Outer Banks,2577,medium,10255.0,1140,1140 Footing Inspection,1
17,11369,Outer Banks,2577,medium,10255.0,1180,1180 Pour Footings,2
18,11369,Outer Banks,2577,medium,10255.0,1780,1780 Order Steel,1
19,11369,Outer Banks,2577,medium,10255.0,1190,1190 Capillary Break,1
20,11369,Outer Banks,2577,medium,10255.0,1195,1195 Pin Footings,1
21,11369,Outer Banks,2577,medium,10255.0,1580,1580 Form Foundation Walls,1
22,11369,Outer Banks,2577,medium,10255.0,1820,1820 Foundation Wall Inspection,1
23,11369,Outer Banks,2577,medium,10255.0,1860,1860 Foundation Wall Pour,1
24,11369,Outer Banks,2577,medium,10255.0,1900,1900 Strip Foundation Forms,1
25,11369,Outer Banks,2577,medium,10255.0,1940,1940 Install Perimeter Drain/Croc,1
26,11369,Outer Banks,2577,medium,10255.0,2060,2060 Waterproof Foundation Walls,1
27,11369,Outer Banks,2577,medium,10255.0,3100,3100 Foundation Survey,1
28,11369,Outer Banks,2577,medium,10255.0,3020,3020 Termite & Pest PreTreatment,1
29,11369,Outer Banks,2577,medium,10255.0,2340,2340 Backfill & Compact,1
30,11369,Outer Banks,2577,medium,10255.0,2020,2020 Install Underground Plumbing,1
31,11369,Outer Banks,2577,medium,10255.0,2344,2344 Meter Pit Install,1
32,11369,Outer Banks,2577,medium,10255.0,2140,2140 Underground Plumbing Inspection,1
33,11369,Outer Banks,2577,medium,10255.0,2420,2420 Slab Inspection,1
34,11369,Outer Banks,2577,medium,10255.0,2380,2380 Pour Basement Slab,1
35,11369,Outer Banks,2577,medium,10255.0,2700,2700 Pour Garage Slab,1
36,11369,Outer Banks,2577,medium,10255.0,2,2 FRAMING START,1
37,11369,Outer Banks,2577,medium,10255.0,2440,2440 Receive Steel,1
38,11369,Outer Banks,2577,medium,10255.0,2460,2460 Receive Lumber Drop #1,1
39,11369,Outer Banks,2577,medium,10255.0,2540,2540 Receive 1st Floor Joists,1
40,11369,Outer Banks,2577,medium,10255.0,3740,3740 Receive 2nd Floor Joists,1
41,11369,Outer Banks,2577,medium,10255.0,3300,3300 1st Floor Deck Framing,1
42,11369,Outer Banks,2577,medium,10255.0,3540,3540 Receive Lumber Drop #2,1
43,11369,Outer Banks,2577,medium,10255.0,4070,4070 Receive Exterior Deck Material,1
44,11369,Outer Banks,2577,medium,10255.0,4230,4230 Receive Housewrap/Flashing,1
45,11369,Outer Banks,2577,medium,10255.0,3380,3380 1st Floor Wall Framing,1
46,11369,Outer Banks,2577,medium,10255.0,3700,3700 Receive Trusses,1
47,11369,Outer Banks,2577,medium,10255.0,3780,3780 2nd Floor Deck Framing,1
48,11369,Outer Banks,2577,medium,10255.0,100,100 Framing DRAW 1,1
49,11369,Outer Banks,2577,medium,10255.0,3820,3820 2nd Floor Wall Framing,1
50,11369,Outer Banks,2577,medium,10255.0,3900,3900 Receive Lumber Drop #3,1
51,11369,Outer Banks,2577,medium,10255.0,4020,4020 Set Trusses,3
52,11369,Outer Banks,2577,medium,10255.0,3340,3340 Basement Wall Framing,1
53,11369,Outer Banks,2577,medium,10255.0,4380,4380 Roof Sheathing,3
54,11369,Outer Banks,2577,medium,10255.0,4071,4071 Receive Exterior Decking,1
55,11369,Outer Banks,2577,medium,10255.0,4260,4260 Receive Windows,1
56,11369,Outer Banks,2577,medium,10255.0,4300,4300 Receive Window/Door Flashings,1
57,11369,Outer Banks,2577,medium,10255.0,4340,4340 Receive Exterior Doors,1
58,11369,Outer Banks,2577,medium,10255.0,4390,4390 Receive Roofing Material,1
59,11369,Outer Banks,2577,medium,10255.0,4777,4777 Receive Box Stairs,1
60,11369,Outer Banks,2577,medium,10255.0,4580,4580 Install Roofing,2
61,11369,Outer Banks,2577,medium,10255.0,140,140 Framing DRAW 2,1
62,11369,Outer Banks,2577,medium,10255.0,4100,4100 Exterior Deck Framing,1
63,11369,Outer Banks,2577,medium,10255.0,4540,4540 Install Windows,1
64,11369,Outer Banks,2577,medium,10255.0,4775,4775 Receive Hardwood Stairs,1
65,11369,Outer Banks,2577,medium,10255.0,3,3 TRADES START,1
66,11369,Outer Banks,2577,medium,10255.0,180,180 Framing DRAW 3,1
67,11369,Outer Banks,2577,medium,10255.0,5100,5100 HVAC Rough,2
68,11369,Outer Banks,2577,medium,10255.0,4940,4940 Install Fireplace,1
69,11369,Outer Banks,2577,medium,10255.0,4980,4980 Plumbing Rough,2
70,11369,Outer Banks,2577,medium,10255.0,8820,8820 Schedule Irrigation Well,1
71,11369,Outer Banks,2577,medium,10255.0,5180,5180 Electric Rough,4
72,11369,Outer Banks,2577,medium,10255.0,5740,5740 Install Gas Lines,1
73,11369,Outer Banks,2577,medium,10255.0,9390,9390 Install Water Meter/Sewer Frame,1
74,11369,Outer Banks,2577,medium,10255.0,9900,9900 Water Lateral,1
75,11369,Outer Banks,2577,medium,10255.0,9905,9905 Sewer Lateral,1
76,11369,Outer Banks,2577,medium,10255.0,5860,5860 Pre Drywall Walk,1
77,11369,Outer Banks,2577,medium,10255.0,5940,5940 Order Cabinets,1
78,11369,Outer Banks,2577,medium,10255.0,5941,5941 Order Cabinet Hardware,1
79,11369,Outer Banks,2577,medium,10255.0,9910,9910 Utility Grade,1
80,11369,Outer Banks,2577,medium,10255.0,5580,5580 Structured Wiring Rough,1
81,11369,Outer Banks,2577,medium,10255.0,5300,5300 Municipal Electric Inspection,1
82,11369,Outer Banks,2577,medium,10255.0,5900,5900 Air Seal,1
83,11369,Outer Banks,2577,medium,10255.0,4700,4700 Internal Framing Inspection,1
84,11369,Outer Banks,2577,medium,10255.0,5820,5820 Framing Inspection,1
85,11369,Outer Banks,2577,medium,10255.0,10940,10940 Framing Retainage,1
86,11369,Outer Banks,2577,medium,10255.0,0,GrillOrd Order Grill/Firebox,1
87,11369,Outer Banks,2577,medium,10255.0,6180,6180 Install Insulation,3
88,11369,Outer Banks,2577,medium,10255.0,6300,6300 Energy Inspection,1
89,11369,Outer Banks,2577,medium,10255.0,6380,6380 Install Drywall,10
90,11369,Outer Banks,2577,medium,10255.0,5179,5179 Electric Connection,1
91,11369,Outer Banks,2577,medium,10255.0,6620,6620 Receive Vinyl Siding,1
92,11369,Outer Banks,2577,medium,10255.0,6700,6700 Receive Composite Ext Trim,1
93,11369,Outer Banks,2577,medium,10255.0,6720,6720 Receive Siding Accents,1
94,11369,Outer Banks,2577,medium,10255.0,6725,6725 Receive Shutters,1
95,11369,Outer Banks,2577,medium,10255.0,6740,6740 Receive PVC Exterior Trim,1
96,11369,Outer Banks,2577,medium,10255.0,6781,6781 Receive Column Wrap/Flower Bx/Pediment,1
97,11369,Outer Banks,2577,medium,10255.0,6820,6820 Receive Deck Skirting,1
98,11369,Outer Banks,2577,medium,10255.0,6860,6860 Siding Installation,7
99,11369,Outer Banks,2577,medium,10255.0,8500,8500 Order Appliance Pkg 1,1
100,11369,Outer Banks,2577,medium,10255.0,9140,9140 2nd Stage Air Seal,1
101,11369,Outer Banks,2577,medium,10255.0,7900,7900 Receive Cabinets Allocation,1
102,11369,Outer Banks,2577,medium,10255.0,8420,8420 1st Paint,1
103,11369,Outer Banks,2577,medium,10255.0,6340,6340 Install Overhead Door,1
104,11369,Outer Banks,2577,medium,10255.0,7340,7340 Install Ceramic Tile,2
105,11369,Outer Banks,2577,medium,10255.0,7350,7350 Install Shower Tile,2
106,11369,Outer Banks,2577,medium,10255.0,8220,8220 Install Fireplace Surround/Mantel,1
107,11369,Outer Banks,2577,medium,10255.0,9860,9860 Final Utility Connection,1
108,11369,Outer Banks,2577,medium,10255.0,4981,4981 Deliver Farm Sink,1
109,11369,Outer Banks,2577,medium,10255.0,7300,7300 Receive Interior Trim,1
110,11369,Outer Banks,2577,medium,10255.0,7304,7304 Receive Goodie Box,1
111,11369,Outer Banks,2577,medium,10255.0,7700,7700 Receive Interior Doors,1
112,11369,Outer Banks,2577,medium,10255.0,7862,7862 Receive Cabinet Hardware Allocation,1
113,11369,Outer Banks,2577,medium,10255.0,7865,7865 Receive Door Hardware Allocation,1
114,11369,Outer Banks,2577,medium,10255.0,7866,7866 Receive Door Hardware,1
115,11369,Outer Banks,2577,medium,10255.0,7901,7901 Cabinet Delivery Charges,1
116,11369,Outer Banks,2577,medium,10255.0,7940,7940 Receive Vanity Tops,1
117,11369,Outer Banks,2577,medium,10255.0,7980,7980 Receive Stair Parts,1
118,11369,Outer Banks,2577,medium,10255.0,8020,8020 Receive Interior Railing,1
119,11369,Outer Banks,2577,medium,10255.0,4145,4145 Schedule Screen Porch Contractor,1
120,11369,Outer Banks,2577,medium,10255.0,4590,4590 Install Metal Roofing,1
121,11369,Outer Banks,2577,medium,10255.0,6880,6880 Build Trellis,1
122,11369,Outer Banks,2577,medium,10255.0,7140,7140 Exterior Painting,1
123,11369,Outer Banks,2577,medium,10255.0,7180,7180 Install Exterior Railings,1
124,11369,Outer Banks,2577,medium,10255.0,7220,7220 Install Deck Skirting/Flower Boxes,1
125,11369,Outer Banks,2577,medium,10255.0,7860,7860 Install Interior Trim,2
126,11369,Outer Banks,2577,medium,10255.0,8260,8260 Install Interior Railing,1
127,11369,Outer Banks,2577,medium,10255.0,8300,8300 Install Cabinets,3
128,11369,Outer Banks,2577,medium,10255.0,9360,9360 Receive Grill/Firebox,1
129,11369,Outer Banks,2577,medium,10255.0,9380,9380 Install Irrigation Well,1
130,11369,Outer Banks,2577,medium,10255.0,9460,9460 Attic Insulation,1
131,11369,Outer Banks,2577,medium,10255.0,9540,9540 Rec. GE Appliance Pkg1 Allocation,1
132,11369,Outer Banks,2577,medium,10255.0,9620,9620 Install Appliances,1
133,11369,Outer Banks,2577,medium,10255.0,8380,8380 Template Countertops,1
134,11369,Outer Banks,2577,medium,10255.0,8381,8381 Template Laminate Countertops,1
135,11369,Outer Banks,2577,medium,10255.0,10460,10460 Drywall Touch Up,2
136,11369,Outer Banks,2577,medium,10255.0,10500,10500 Paint 2,2
137,11369,Outer Banks,2577,medium,10255.0,0,vancheck Check Vanity Tops/Windows for Damage,1
138,11369,Outer Banks,2577,medium,10255.0,8460,8460 Install Countertops,1
139,11369,Outer Banks,2577,medium,10255.0,8920,8920 Install Water Heater,1
140,11369,Outer Banks,2577,medium,10255.0,8940,8940 Plumbing Trim,1
141,11369,Outer Banks,2577,medium,10255.0,9020,9020 Electric Trim,2
142,11369,Outer Banks,2577,medium,10255.0,9100,9100 HVAC Trim / Set Unit,1
143,11369,Outer Banks,2577,medium,10255.0,10301,10301 Driveway Apron,1
144,11369,Outer Banks,2577,medium,10255.0,10340,10340 Install Leadwalk & Comm. Sidewalk,1
145,11369,Outer Banks,2577,medium,10255.0,9110,9110 Gas Trim,1
146,11369,Outer Banks,2577,medium,10255.0,9260,9260 Structured Wiring Trim,1
147,11369,Outer Banks,2577,medium,10255.0,10300,10300 Install Driveway,1
148,11369,Outer Banks,2577,medium,10255.0,8465,8465 Install Tiled Backsplash,1
149,11369,Outer Banks,2577,medium,10255.0,9740,9740 Fireplace Start Up,1
150,11369,Outer Banks,2577,medium,10255.0,9790,9790 Basement Blanket Insulation,1
151,11369,Outer Banks,2577,medium,10255.0,10020,10020 Final Grade,1
152,11369,Outer Banks,2577,medium,10255.0,10380,10380 As Built Survey,1
153,11369,Outer Banks,2577,medium,10255.0,9820,9820 Install Gutters,1
154,11369,Outer Banks,2577,medium,10255.0,10100,10100 Irrigation Installation,1
155,11369,Outer Banks,2577,medium,10255.0,6885,6885 Install Screen Porch Enclosure,1
156,11369,Outer Banks,2577,medium,10255.0,10140,10140 Sod Installation,1
157,11369,Outer Banks,2577,medium,10255.0,10180,10180 Shrub Installation,1
158,11369,Outer Banks,2577,medium,10255.0,9750,9750 Order Appliance Pkg 2,1
159,11369,Outer Banks,2577,medium,10255.0,9990,9990 2nd Stage Termite Treatment,1
160,11369,Outer Banks,2577,medium,10255.0,9101,9101 HVAC Startup,1
161,11369,Outer Banks,2577,medium,10255.0,0,cabcheck Check Cabinets for Damage,1
162,11369,Outer Banks,2577,medium,10255.0,9700,9700 Install Hardwood Flooring,1
163,11369,Outer Banks,2577,medium,10255.0,7861,7861 Interior Trim Punch,1
164,11369,Outer Banks,2577,medium,10255.0,8540,8540 Install Bath Accessories,1
165,11369,Outer Banks,2577,medium,10255.0,8545,8545 Install Mirrors,1
166,11369,Outer Banks,2577,medium,10255.0,8580,8580 Install Shower Enclosures,1
167,11369,Outer Banks,2577,medium,10255.0,9660,9660 Install Carpet Flooring,1
168,11369,Outer Banks,2577,medium,10255.0,10260,10260 Install House Numbers,1
169,11369,Outer Banks,2577,medium,10255.0,6381,6381 Drywall Punch,1
170,11369,Outer Banks,2577,medium,10255.0,8900,8900 Install Closet Shelving,1
171,11369,Outer Banks,2577,medium,10255.0,8980,8980 Final Plumbing Inspection,1
172,11369,Outer Banks,2577,medium,10255.0,9060,9060 Final Electric Inspection,1
173,11369,Outer Banks,2577,medium,10255.0,9980,9980 Final Cleaning,1
174,11369,Outer Banks,2577,medium,10255.0,10420,10420 Powerwash,1
175,11369,Outer Banks,2577,medium,10255.0,0,appcheck Check Appliances for Damage,1
176,11369,Outer Banks,2577,medium,10255.0,9500,9500 Blower Door/Ductblaster,1
177,11369,Outer Banks,2577,medium,10255.0,10501,10501 Paint Retouch,1
178,11369,Outer Banks,2577,medium,10255.0,10620,10620 Punch Out Allocation,1
179,11369,Outer Banks,2577,medium,10255.0,9755,9755 Rec. GE Appliance Pkg2 Allocation,1
180,11369,Outer Banks,2577,medium,10255.0,9940,9940 Final Inspection,1
181,11369,Outer Banks,2577,medium,10255.0,9985,9985 Final Clean 2,1
182,11369,Outer Banks,2577,medium,10255.0,10660,10660 Quality Inspection,1
183,11369,Outer Banks,2577,medium,10255.0,10700,10700 Pick up C/O,1
184,11369,Outer Banks,2577,medium,10255.0,10780,10780 Customer Walk,1
185,11369,Outer Banks,2577,medium,10255.0,10888,10888 Release All Retainage,1
186,11369,Outer Banks,2577,medium,10255.0,11585,11585 Exterior Paint Retainage,1
187,11369,Outer Banks,2577,medium,10255.0,11980,11980 Sod Retainage,1
188,11369,Outer Banks,2577,medium,10255.0,12060,12060 Irrigation Retainage,1
189,11369,Outer Banks,2577,medium,10255.0,12100,12100 Shrub Retainage,1
190,11369,Outer Banks,2577,medium,10255.0,12180,12180 Driveway Retainage,1
191,11369,Outer Banks,2577,medium,10255.0,12180,12180.1 Driveway Top Coat Allocation,0
192,11369,Outer Banks,2577,medium,10255.0,10820,10820 Settlement,1
193,11369,Outer Banks,2577,medium,10255.0,99999,99999 HOME COMPLETE,1
194,12451,Peninsula,5195,high,750956.0,1,1 START  CONSTRUCTION,1
195,12451,Peninsula,5195,high,750956.0,980,980 Install Silt Fence,1
196,12451,Peninsula,5195,high,750956.0,1020,1020 Install Construction Entrance,1
197,12451,Peninsula,5195,high,750956.0,1780,1780 Order Steel,1
198,12451,Peninsula,5195,high,750956.0,0,00000 START,1
199,12451,Peninsula,5195,high,750956.0,252,252 Site Plan,1
200,12451,Peninsula,5195,high,750956.0,420,420 House placement survey,1
201,12451,Peninsula,5195,high,750956.0,900,900 Bldg Stakeout,1
202,12451,Peninsula,5195,high,750956.0,901,901 Engineering Allocation,0
203,12451,Peninsula,5195,high,750956.0,1100,1100 Form Footings,1
204,12451,Peninsula,5195,high,750956.0,1140,1140 Footing Inspection,1
205,12451,Peninsula,5195,high,750956.0,1180,1180 Pour Footings,1
206,12451,Peninsula,5195,high,750956.0,1181,1181 Pump Truck Allowance,1
207,12451,Peninsula,5195,high,750956.0,2230,2230 Receive Dumpster Allocation,1
208,12451,Peninsula,5195,high,750956.0,2240,2240 Receive Portable Toilet Allocation,1
209,12451,Peninsula,5195,high,750956.0,1190,1190 Capillary Break,1
210,12451,Peninsula,5195,high,750956.0,1580,1580 Form Foundation Walls,1
211,12451,Peninsula,5195,high,750956.0,1820,1820 Foundation Wall Inspection,1
212,12451,Peninsula,5195,high,750956.0,1860,1860 Foundation Wall Pour,1
213,12451,Peninsula,5195,high,750956.0,1900,1900 Strip Foundation Forms,1
214,12451,Peninsula,5195,high,750956.0,2340,2340 Backfill & Compact,1
215,12451,Peninsula,5195,high,750956.0,3020,3020 Termite & Pest PreTreatment,1
216,12451,Peninsula,5195,high,750956.0,3100,3100 Foundation Survey,1
217,12451,Peninsula,5195,high,750956.0,2020,2020 Install Underground Plumbing,1
218,12451,Peninsula,5195,high,750956.0,2344,2344 Meter Pit Install,1
219,12451,Peninsula,5195,high,750956.0,1980,1980 Install Underground Electric,1
220,12451,Peninsula,5195,high,750956.0,2140,2140 Underground Plumbing Inspection,1
221,12451,Peninsula,5195,high,750956.0,2385,2385 Pour SOG Slab,6
222,12451,Peninsula,5195,high,750956.0,2700,2700 Pour Garage Slab,1
223,12451,Peninsula,5195,high,750956.0,2440,2440 Receive Steel,1
224,12451,Peninsula,5195,high,750956.0,3740,3740 Receive 2nd Floor Joists,1
225,12451,Peninsula,5195,high,750956.0,3990,3990 Receive 3nd Floor Joists,1
226,12451,Peninsula,5195,high,750956.0,3540,3540 Receive Lumber Drop #2,1
227,12451,Peninsula,5195,high,750956.0,3700,3700 Receive Trusses,1
228,12451,Peninsula,5195,high,750956.0,4070,4070 Receive Exterior Deck Material,1
229,12451,Peninsula,5195,high,750956.0,4230,4230 Receive Housewrap/Flashing,1
230,12451,Peninsula,5195,high,750956.0,2460,2460 Receive Lumber Drop #1,1
231,12451,Peninsula,5195,high,750956.0,3900,3900 Receive Lumber Drop #3,1
232,12451,Peninsula,5195,high,750956.0,2,2 FRAMING START,1
233,12451,Peninsula,5195,high,750956.0,3380,3380 1st Floor Wall Framing,1
234,12451,Peninsula,5195,high,750956.0,3780,3780 2nd Floor Deck Framing,1
235,12451,Peninsula,5195,high,750956.0,100,100 Framing DRAW 1,1
236,12451,Peninsula,5195,high,750956.0,3820,3820 2nd Floor Wall Framing,2
237,12451,Peninsula,5195,high,750956.0,4660,4660 Schedule Elevator Rough,1
238,12451,Peninsula,5195,high,750956.0,3940,3940 3rd Floor Deck Framing,1
239,12451,Peninsula,5195,high,750956.0,3980,3980 3rd Floor Wall Framing,2
240,12451,Peninsula,5195,high,750956.0,4071,4071 Receive Exterior Decking,1
241,12451,Peninsula,5195,high,750956.0,4020,4020 Set Trusses,9
242,12649,Peninsula,5996,high,750956.0,0,00000 START,1
243,12649,Peninsula,5996,high,750956.0,1,1 START  CONSTRUCTION,1
244,12649,Peninsula,5996,high,750956.0,252,252 Site Plan,1
245,12649,Peninsula,5996,high,750956.0,260,260 Plan Review/Permit Allocation,0
246,12649,Peninsula,5996,high,750956.0,900,900 Bldg Stakeout,1
247,12649,Peninsula,5996,high,750956.0,901,901 Engineering Allocation,0
248,12649,Peninsula,5996,high,750956.0,980,980 Install Silt Fence,6
249,12649,Peninsula,5996,high,750956.0,1020,1020 Install Construction Entrance,1
250,12649,Peninsula,5996,high,750956.0,1100,1100 Form Footings,1
251,12649,Peninsula,5996,high,750956.0,1181,1181 Pump Truck Allowance,1
252,12649,Peninsula,5996,high,750956.0,1780,1780 Order Steel,1
253,12649,Peninsula,5996,high,750956.0,2230,2230 Receive Dumpster Allocation,1
254,12649,Peninsula,5996,high,750956.0,2240,2240 Receive Portable Toilet Allocation,1
255,12649,Peninsula,5996,high,750956.0,8500,8500 Order Appliance Pkg 1,1
256,12649,Peninsula,5996,high,750956.0,9750,9750 Order Appliance Pkg 2,1
257,12649,Peninsula,5996,high,750956.0,9860,9860 Final Utility Connection,0
258,12649,Peninsula,5996,high,750956.0,10300,10300.1 Driveway/Curb Repair Allowance,0
259,12649,Peninsula,5996,high,750956.0,1140,1140 Footing Inspection,1
260,12649,Peninsula,5996,high,750956.0,1180,1180 Pour Footings,1
261,12649,Peninsula,5996,high,750956.0,1190,1190 Capillary Break,1
262,12451,Peninsula,5195,high,750956.0,5940,5940 Order Cabinets,1
263,12451,Peninsula,5195,high,750956.0,5941,5941 Order Cabinet Hardware,1
264,12649,Peninsula,5996,high,750956.0,1580,1580 Form Foundation Walls,1
265,12649,Peninsula,5996,high,750956.0,1820,1820 Foundation Wall Inspection,1
266,12649,Peninsula,5996,high,750956.0,1860,1860 Foundation Wall Pour,1
267,12451,Peninsula,5195,high,750956.0,4380,4380 Roof Sheathing,3
268,12649,Peninsula,5996,high,750956.0,1900,1900 Strip Foundation Forms,1
269,12649,Peninsula,5996,high,750956.0,2382,2382 Slab Insulation,1
270,12649,Peninsula,5996,high,750956.0,3020,3020 Termite & Pest PreTreatment,1
271,12451,Peninsula,5195,high,750956.0,4300,4300 Receive Window/Door Flashings,1
272,12451,Peninsula,5195,high,750956.0,4340,4340 Receive Exterior Doors,1
273,13099,Arbor-Lyn,2616,medium,381426.0,900,900 Bldg Stakeout,1
274,12649,Peninsula,5996,high,750956.0,2340,2340 Backfill & Compact,2
275,13090,Marsh Island,5603,high,1154185.0,0,00000 START,1
276,13090,Marsh Island,5603,high,1154185.0,1,1 START  CONSTRUCTION,1
277,12451,Peninsula,5195,high,750956.0,140,140 Framing DRAW 2,1
278,13090,Marsh Island,5603,high,1154185.0,252,252 Site Plan,1
279,13090,Marsh Island,5603,high,1154185.0,260,260 Plan Review/Permit Allocation,0
280,13090,Marsh Island,5603,high,1154185.0,900,900 Bldg Stakeout,1
281,13090,Marsh Island,5603,high,1154185.0,901,901 Engineering Allocation,0
282,13090,Marsh Island,5603,high,1154185.0,980,980 Install Silt Fence,1
283,13090,Marsh Island,5603,high,1154185.0,1020,1020 Install Construction Entrance,1
284,13090,Marsh Island,5603,high,1154185.0,1181,1181 Pump Truck Allowance,1
285,13090,Marsh Island,5603,high,1154185.0,1780,1780 Order Steel,1
286,13090,Marsh Island,5603,high,1154185.0,2230,2230 Receive Dumpster Allocation,1
287,13090,Marsh Island,5603,high,1154185.0,2240,2240 Receive Portable Toilet Allocation,1
288,12649,Peninsula,5996,high,750956.0,2344,2344 Meter Pit Install,1
289,12649,Peninsula,5996,high,750956.0,3100,3100 Foundation Survey,1
290,12451,Peninsula,5195,high,750956.0,4100,4100 Exterior Deck Framing,1
291,12451,Peninsula,5195,high,750956.0,4540,4540 Install Windows,1
292,13090,Marsh Island,5603,high,1154185.0,8500,8500 Order Appliance Pkg 1,1
293,13090,Marsh Island,5603,high,1154185.0,9750,9750 Order Appliance Pkg 2,1
294,13090,Marsh Island,5603,high,1154185.0,10300,10300.1 Driveway/Curb Repair Allowance,0
295,12451,Peninsula,5195,high,750956.0,180,180 Framing DRAW 3,1
296,13090,Marsh Island,5603,high,1154185.0,940,940 Install Pilings,2
297,12649,Peninsula,5996,high,750956.0,2020,2020 Install Underground Plumbing,2
298,13090,Marsh Island,5603,high,1154185.0,1100,1100 Form Footings,1
299,13090,Marsh Island,5603,high,1154185.0,1140,1140 Footing Inspection,1
300,13090,Marsh Island,5603,high,1154185.0,1180,1180 Pour Footings,1
301,12451,Peninsula,5195,high,750956.0,4390,4390 Receive Roofing Material,1
302,13099,Arbor-Lyn,2616,medium,381426.0,0,00000 START,1
303,13099,Arbor-Lyn,2616,medium,381426.0,1,1 START  CONSTRUCTION,1
304,13099,Arbor-Lyn,2616,medium,381426.0,252,252 Site Plan,1
305,13099,Arbor-Lyn,2616,medium,381426.0,260,260 Plan Review/Permit Allocation,0
306,13099,Arbor-Lyn,2616,medium,381426.0,901,901 Engineering Allocation,0
307,13099,Arbor-Lyn,2616,medium,381426.0,980,980 Install Silt Fence,1
308,13099,Arbor-Lyn,2616,medium,381426.0,1020,1020 Install Construction Entrance,1
309,13099,Arbor-Lyn,2616,medium,381426.0,1060,1060 Foundation Excavation,1
310,13099,Arbor-Lyn,2616,medium,381426.0,1181,1181 Pump Truck Allowance,1
311,13090,Marsh Island,5603,high,1154185.0,1190,1190 Capillary Break,1
312,13090,Marsh Island,5603,high,1154185.0,1195,1195 Pin Footings,1
313,13099,Arbor-Lyn,2616,medium,381426.0,1780,1780 Order Steel,1
314,12649,Peninsula,5996,high,750956.0,2140,2140 Underground Plumbing Inspection,1
315,13099,Arbor-Lyn,2616,medium,381426.0,2230,2230 Receive Dumpster Allocation,1
316,13099,Arbor-Lyn,2616,medium,381426.0,2240,2240 Receive Portable Toilet Allocation,1
317,12451,Peninsula,5195,high,750956.0,4260,4260 Receive Windows,1
318,12451,Peninsula,5195,high,750956.0,4580,4580 Install Roofing,2
319,13099,Arbor-Lyn,2616,medium,381426.0,8500,8500 Order Appliance Pkg 1,1
320,13099,Arbor-Lyn,2616,medium,381426.0,9750,9750 Order Appliance Pkg 2,1
321,13099,Arbor-Lyn,2616,medium,381426.0,10300,10300.1 Driveway/Curb Repair Allowance,0
322,13090,Marsh Island,5603,high,1154185.0,1580,1580 Form Foundation Walls,1
323,13090,Marsh Island,5603,high,1154185.0,1820,1820 Foundation Wall Inspection,1
324,13090,Marsh Island,5603,high,1154185.0,1860,1860 Foundation Wall Pour,1
325,12649,Peninsula,5996,high,750956.0,2250,2250 Slab Prep,1
326,12649,Peninsula,5996,high,750956.0,2420,2420 Slab Inspection,1
327,12451,Peninsula,5195,high,750956.0,4775,4775 Receive Hardwood Stairs,1
328,12451,Peninsula,5195,high,750956.0,3,3 TRADES START,1
329,13090,Marsh Island,5603,high,1154185.0,1900,1900 Strip Foundation Forms,1
330,13090,Marsh Island,5603,high,1154185.0,2340,2340 Backfill & Compact,1
331,12649,Peninsula,5996,high,750956.0,2385,2385 Pour SOG Slab,1
332,12649,Peninsula,5996,high,750956.0,2700,2700 Pour Garage Slab,1
333,12451,Peninsula,5195,high,750956.0,4585,4585 Install Membrane Roofing,1
334,13090,Marsh Island,5603,high,1154185.0,2344,2344 Meter Pit Install,32
335,13090,Marsh Island,5603,high,1154185.0,2382,2382 Slab Insulation,1
336,13090,Marsh Island,5603,high,1154185.0,3020,3020 Termite & Pest PreTreatment,1
337,13090,Marsh Island,5603,high,1154185.0,3100,3100 Foundation Survey,4
338,12649,Peninsula,5996,high,750956.0,2,2 FRAMING START,1
339,12649,Peninsula,5996,high,750956.0,2440,2440 Receive Steel,1
340,12649,Peninsula,5996,high,750956.0,2460,2460 Receive Lumber Drop #1,1
341,12649,Peninsula,5996,high,750956.0,3540,3540 Receive Lumber Drop #2,1
342,12649,Peninsula,5996,high,750956.0,3740,3740 Receive 2nd Floor Joists,1
343,12649,Peninsula,5996,high,750956.0,3900,3900 Receive Lumber Drop #3,1
344,12649,Peninsula,5996,high,750956.0,3990,3990 Receive 3nd Floor Joists,1
345,13099,Arbor-Lyn,2616,medium,381426.0,1100,1100 Form Footings,1
346,13099,Arbor-Lyn,2616,medium,381426.0,1140,1140 Footing Inspection,1
347,13099,Arbor-Lyn,2616,medium,381426.0,1180,1180 Pour Footings,1
348,13090,Marsh Island,5603,high,1154185.0,2020,2020 Install Underground Plumbing,3
349,12649,Peninsula,5996,high,750956.0,3380,3380 1st Floor Wall Framing,1
350,12649,Peninsula,5996,high,750956.0,3700,3700 Receive Trusses,1
351,12649,Peninsula,5996,high,750956.0,4070,4070 Receive Exterior Deck Material,1
352,12649,Peninsula,5996,high,750956.0,4460,4460 Schedule Gas Lateral Contractor,1
353,13099,Arbor-Lyn,2616,medium,381426.0,1190,1190 Capillary Break,1
354,13099,Arbor-Lyn,2616,medium,381426.0,1195,1195 Pin Footings,1
355,13090,Marsh Island,5603,high,1154185.0,1980,1980 Install Underground Electric,1
356,12649,Peninsula,5996,high,750956.0,3780,3780 2nd Floor Deck Framing,1
357,12649,Peninsula,5996,high,750956.0,100,100 Framing DRAW 1,1
358,13099,Arbor-Lyn,2616,medium,381426.0,1580,1580 Form Foundation Walls,1
359,13099,Arbor-Lyn,2616,medium,381426.0,1820,1820 Foundation Wall Inspection,1
360,13099,Arbor-Lyn,2616,medium,381426.0,1860,1860 Foundation Wall Pour,1
361,12649,Peninsula,5996,high,750956.0,3820,3820 2nd Floor Wall Framing,2
362,12649,Peninsula,5996,high,750956.0,4660,4660 Schedule Elevator Rough,1
363,12451,Peninsula,5195,high,750956.0,8500,8500 Order Appliance Pkg 1,1
364,12673,Peninsula,5996,high,750956.0,0,00000 START,1
365,12673,Peninsula,5996,high,750956.0,1,1 START  CONSTRUCTION,1
366,12673,Peninsula,5996,high,750956.0,252,252 Site Plan,1
367,12673,Peninsula,5996,high,750956.0,900,900 Bldg Stakeout,1
368,12673,Peninsula,5996,high,750956.0,901,901 Engineering Allocation,0
369,12673,Peninsula,5996,high,750956.0,980,980 Install Silt Fence,1
370,12673,Peninsula,5996,high,750956.0,1020,1020 Install Construction Entrance,1
371,12673,Peninsula,5996,high,750956.0,1181,1181 Pump Truck Allowance,1
372,12673,Peninsula,5996,high,750956.0,1780,1780 Order Steel,1
373,13099,Arbor-Lyn,2616,medium,381426.0,1900,1900 Strip Foundation Forms,1
374,12673,Peninsula,5996,high,750956.0,2230,2230 Receive Dumpster Allocation,1
375,12673,Peninsula,5996,high,750956.0,2240,2240 Receive Portable Toilet Allocation,1
376,12673,Peninsula,5996,high,750956.0,8500,8500 Order Appliance Pkg 1,1
377,12673,Peninsula,5996,high,750956.0,9750,9750 Order Appliance Pkg 2,1
378,12673,Peninsula,5996,high,750956.0,9860,9860 Final Utility Connection,0
379,12673,Peninsula,5996,high,750956.0,10300,10300.1 Driveway/Curb Repair Allowance,0
380,12673,Peninsula,5996,high,750956.0,1100,1100 Form Footings,1
381,12673,Peninsula,5996,high,750956.0,1140,1140 Footing Inspection,1
382,12673,Peninsula,5996,high,750956.0,1180,1180 Pour Footings,1
383,12673,Peninsula,5996,high,750956.0,1190,1190 Capillary Break,1
384,13099,Arbor-Lyn,2616,medium,381426.0,1940,1940 Install Perimeter Drain/Croc,2
385,13099,Arbor-Lyn,2616,medium,381426.0,2060,2060 Waterproof Foundation Walls,2
386,12649,Peninsula,5996,high,750956.0,3940,3940 3rd Floor Deck Framing,1
387,12649,Peninsula,5996,high,750956.0,3980,3980 3rd Floor Wall Framing,2
388,12673,Peninsula,5996,high,750956.0,1195,1195 Pin Footings,1
389,12673,Peninsula,5996,high,750956.0,1580,1580 Form Foundation Walls,1
390,12673,Peninsula,5996,high,750956.0,1820,1820 Foundation Wall Inspection,1
391,12673,Peninsula,5996,high,750956.0,1860,1860 Foundation Wall Pour,1
392,13099,Arbor-Lyn,2616,medium,381426.0,2020,2020 Install Underground Plumbing,3
393,13090,Marsh Island,5603,high,1154185.0,2140,2140 Underground Plumbing Inspection,1
394,13099,Arbor-Lyn,2616,medium,381426.0,3020,3020 Termite & Pest PreTreatment,3
395,12649,Peninsula,5996,high,750956.0,4230,4230 Receive Housewrap/Flashing,1
396,12673,Peninsula,5996,high,750956.0,1900,1900 Strip Foundation Forms,1
397,13090,Marsh Island,5603,high,1154185.0,2250,2250 Slab Prep,1
398,13090,Marsh Island,5603,high,1154185.0,2420,2420 Slab Inspection,1
399,13090,Marsh Island,5603,high,1154185.0,2440,2440 Receive Steel,1
400,12649,Peninsula,5996,high,750956.0,4020,4020 Set Trusses,1
401,12451,Peninsula,5195,high,750956.0,5100,5100 HVAC Rough,3
402,13090,Marsh Island,5603,high,1154185.0,9860,9860 Final Utility Connection,101
403,12673,Peninsula,5996,high,750956.0,2340,2340 Backfill & Compact,1
404,13099,Arbor-Lyn,2616,medium,381426.0,2340,2340 Backfill & Compact,3
405,12673,Peninsula,5996,high,750956.0,2382,2382 Slab Insulation,1
406,12673,Peninsula,5996,high,750956.0,3020,3020 Termite & Pest PreTreatment,1
407,12649,Peninsula,5996,high,750956.0,4380,4380 Roof Sheathing,3
408,12671,Peninsula,5870,high,750956.0,0,00000 START,1
409,12671,Peninsula,5870,high,750956.0,1,1 START  CONSTRUCTION,1
410,12671,Peninsula,5870,high,750956.0,252,252 Site Plan,1
411,12671,Peninsula,5870,high,750956.0,260,260 Plan Review/Permit Allocation,0
412,12671,Peninsula,5870,high,750956.0,900,900 Bldg Stakeout,1
413,12671,Peninsula,5870,high,750956.0,901,901 Engineering Allocation,0
414,12671,Peninsula,5870,high,750956.0,980,980 Install Silt Fence,1
415,12671,Peninsula,5870,high,750956.0,1020,1020 Install Construction Entrance,1
416,12671,Peninsula,5870,high,750956.0,1100,1100 Form Footings,1
417,12671,Peninsula,5870,high,750956.0,1140,1140 Footing Inspection,1
418,12671,Peninsula,5870,high,750956.0,1180,1180 Pour Footings,1
419,12671,Peninsula,5870,high,750956.0,1181,1181 Pump Truck Allowance,1
420,12671,Peninsula,5870,high,750956.0,1780,1780 Order Steel,1
421,12671,Peninsula,5870,high,750956.0,2230,2230 Receive Dumpster Allocation,1
422,12671,Peninsula,5870,high,750956.0,2240,2240 Receive Portable Toilet Allocation,1
423,12673,Peninsula,5996,high,750956.0,2344,2344 Meter Pit Install,1
424,13090,Marsh Island,5603,high,1154185.0,2460,2460 Receive Lumber Drop #1,1
425,13090,Marsh Island,5603,high,1154185.0,2540,2540 Receive 1st Floor Joists,1
426,13090,Marsh Island,5603,high,1154185.0,3540,3540 Receive Lumber Drop #2,1
427,13090,Marsh Island,5603,high,1154185.0,3740,3740 Receive 2nd Floor Joists,1
428,13090,Marsh Island,5603,high,1154185.0,3900,3900 Receive Lumber Drop #3,1
429,13090,Marsh Island,5603,high,1154185.0,3990,3990 Receive 3nd Floor Joists,1
430,12671,Peninsula,5870,high,750956.0,8500,8500 Order Appliance Pkg 1,1
431,12671,Peninsula,5870,high,750956.0,9750,9750 Order Appliance Pkg 2,1
432,12671,Peninsula,5870,high,750956.0,9860,9860 Final Utility Connection,0
433,12671,Peninsula,5870,high,750956.0,10300,10300.1 Driveway/Curb Repair Allowance,0
434,12671,Peninsula,5870,high,750956.0,1190,1190 Capillary Break,1
435,12673,Peninsula,5996,high,750956.0,2020,2020 Install Underground Plumbing,1
436,13099,Arbor-Lyn,2616,medium,381426.0,2140,2140 Underground Plumbing Inspection,1
437,13099,Arbor-Lyn,2616,medium,381426.0,2344,2344 Meter Pit Install,1
438,13090,Marsh Island,5603,high,1154185.0,2385,2385 Pour SOG Slab,1
439,13099,Arbor-Lyn,2616,medium,381426.0,2440,2440 Receive Steel,1
440,13090,Marsh Island,5603,high,1154185.0,2700,2700 Pour Garage Slab,1
441,13099,Arbor-Lyn,2616,medium,381426.0,3100,3100 Foundation Survey,6
442,13090,Marsh Island,5603,high,1154185.0,4070,4070 Receive Exterior Deck Material,1
443,12649,Peninsula,5996,high,750956.0,5940,5940 Order Cabinets,1
444,12649,Peninsula,5996,high,750956.0,5941,5941 Order Cabinet Hardware,1
445,13090,Marsh Island,5603,high,1154185.0,2,2 FRAMING START,1
446,13099,Arbor-Lyn,2616,medium,381426.0,2460,2460 Receive Lumber Drop #1,1
447,13099,Arbor-Lyn,2616,medium,381426.0,3540,3540 Receive Lumber Drop #2,1
448,13090,Marsh Island,5603,high,1154185.0,3700,3700 Receive Trusses,1
449,12649,Peninsula,5996,high,750956.0,4100,4100 Exterior Deck Framing,1
450,12649,Peninsula,5996,high,750956.0,4390,4390 Receive Roofing Material,2
451,12671,Peninsula,5870,high,750956.0,1580,1580 Form Foundation Walls,2
452,13090,Marsh Island,5603,high,1154185.0,3300,3300 1st Floor Deck Framing,1
453,12649,Peninsula,5996,high,750956.0,4071,4071 Receive Exterior Decking,1
454,12649,Peninsula,5996,high,750956.0,4580,4580 Install Roofing,2
455,12451,Peninsula,5195,high,750956.0,4940,4940 Install Fireplace,1
456,12451,Peninsula,5195,high,750956.0,4980,4980 Plumbing Rough,3
457,12451,Peninsula,5195,high,750956.0,6900,6900 Schedule Septic Installation,1
458,12671,Peninsula,5870,high,750956.0,1820,1820 Foundation Wall Inspection,1
459,12671,Peninsula,5870,high,750956.0,1860,1860 Foundation Wall Pour,1
460,12673,Peninsula,5996,high,750956.0,2140,2140 Underground Plumbing Inspection,1
461,13090,Marsh Island,5603,high,1154185.0,3380,3380 1st Floor Wall Framing,1
462,13090,Marsh Island,5603,high,1154185.0,4460,4460 Schedule Gas Lateral Contractor,1
463,12649,Peninsula,5996,high,750956.0,4775,4775 Receive Hardwood Stairs,1
464,12451,Peninsula,5195,high,750956.0,9390,9390 Install Water Meter/Sewer Frame,1
465,12451,Peninsula,5195,high,750956.0,9900,9900 Water Lateral,1
466,12451,Peninsula,5195,high,750956.0,9905,9905 Sewer Lateral,1
467,12671,Peninsula,5870,high,750956.0,1900,1900 Strip Foundation Forms,1
468,12673,Peninsula,5996,high,750956.0,2250,2250 Slab Prep,1
469,13099,Arbor-Lyn,2616,medium,381426.0,2380,2380 Pour Basement Slab,1
470,12673,Peninsula,5996,high,750956.0,2420,2420 Slab Inspection,1
471,13099,Arbor-Lyn,2616,medium,381426.0,2700,2700 Pour Garage Slab,1
472,13090,Marsh Island,5603,high,1154185.0,3780,3780 2nd Floor Deck Framing,2
473,12649,Peninsula,5996,high,750956.0,4585,4585 Install Membrane Roofing,7
474,12649,Peninsula,5996,high,750956.0,4591,4591 Install Metal Roof Flashing,10
475,12451,Peninsula,5195,high,750956.0,5740,5740 Install Gas Lines,1
476,13099,Arbor-Lyn,2616,medium,381426.0,5940,5940 Order Cabinets,1
477,13099,Arbor-Lyn,2616,medium,381426.0,5941,5941 Order Cabinet Hardware,1
478,12671,Peninsula,5870,high,750956.0,2340,2340 Backfill & Compact,1
479,12671,Peninsula,5870,high,750956.0,2382,2382 Slab Insulation,1
480,12673,Peninsula,5996,high,750956.0,2385,2385 Pour SOG Slab,1
481,13099,Arbor-Lyn,2616,medium,381426.0,2540,2540 Receive 1st Floor Joists,1
482,12673,Peninsula,5996,high,750956.0,2700,2700 Pour Garage Slab,1
483,12671,Peninsula,5870,high,750956.0,3020,3020 Termite & Pest PreTreatment,1
484,13099,Arbor-Lyn,2616,medium,381426.0,3740,3740 Receive 2nd Floor Joists,1
485,13099,Arbor-Lyn,2616,medium,381426.0,3900,3900 Receive Lumber Drop #3,1
486,12451,Peninsula,5195,high,750956.0,4665,4665 Elevator Rough,2
487,12673,Peninsula,5996,high,750956.0,2,2 FRAMING START,1
488,13090,Marsh Island,5603,high,1154185.0,100,100 Framing DRAW 1,1
489,12671,Peninsula,5870,high,750956.0,2344,2344 Meter Pit Install,1
490,12673,Peninsula,5996,high,750956.0,2440,2440 Receive Steel,1
491,12673,Peninsula,5996,high,750956.0,2460,2460 Receive Lumber Drop #1,1
492,12671,Peninsula,5870,high,750956.0,3100,3100 Foundation Survey,1
493,12673,Peninsula,5996,high,750956.0,3540,3540 Receive Lumber Drop #2,1
494,12673,Peninsula,5996,high,750956.0,3740,3740 Receive 2nd Floor Joists,1
495,13090,Marsh Island,5603,high,1154185.0,3820,3820 2nd Floor Wall Framing,2
496,12673,Peninsula,5996,high,750956.0,3900,3900 Receive Lumber Drop #3,1
497,12673,Peninsula,5996,high,750956.0,3990,3990 Receive 3nd Floor Joists,1
498,13099,Arbor-Lyn,2616,medium,381426.0,4070,4070 Receive Exterior Deck Material,1
499,13090,Marsh Island,5603,high,1154185.0,4230,4230 Receive Housewrap/Flashing,1
500,13090,Marsh Island,5603,high,1154185.0,4660,4660 Schedule Elevator Rough,1
501,12451,Peninsula,5195,high,750956.0,5180,5180 Electric Rough,4
502,12671,Peninsula,5870,high,750956.0,2020,2020 Install Underground Plumbing,2
503,12673,Peninsula,5996,high,750956.0,3380,3380 1st Floor Wall Framing,1
504,12673,Peninsula,5996,high,750956.0,3700,3700 Receive Trusses,1
505,13099,Arbor-Lyn,2616,medium,381426.0,3700,3700 Receive Trusses,1
506,12673,Peninsula,5996,high,750956.0,4070,4070 Receive Exterior Deck Material,1
507,12673,Peninsula,5996,high,750956.0,4460,4460 Schedule Gas Lateral Contractor,1
508,13099,Arbor-Lyn,2616,medium,381426.0,2,2 FRAMING START,1
509,12671,Peninsula,5870,high,750956.0,1980,1980 Install Underground Electric,1
510,12673,Peninsula,5996,high,750956.0,3780,3780 2nd Floor Deck Framing,1
511,13090,Marsh Island,5603,high,1154185.0,3940,3940 3rd Floor Deck Framing,1
512,13090,Marsh Island,5603,high,1154185.0,3980,3980 3rd Floor Wall Framing,2
513,12451,Peninsula,5195,high,750956.0,5860,5860 Pre Drywall Walk,1
514,12673,Peninsula,5996,high,750956.0,100,100 Framing DRAW 1,1
515,13099,Arbor-Lyn,2616,medium,381426.0,3300,3300 1st Floor Deck Framing,1
516,12673,Peninsula,5996,high,750956.0,3820,3820 2nd Floor Wall Framing,2
517,12673,Peninsula,5996,high,750956.0,4660,4660 Schedule Elevator Rough,1
518,12671,Peninsula,5870,high,750956.0,2140,2140 Underground Plumbing Inspection,1
519,13099,Arbor-Lyn,2616,medium,381426.0,3380,3380 1st Floor Wall Framing,1
520,13090,Marsh Island,5603,high,1154185.0,4020,4020 Set Trusses,3
521,13099,Arbor-Lyn,2616,medium,381426.0,4230,4230 Receive Housewrap/Flashing,1
522,12451,Peninsula,5195,high,750956.0,5580,5580 Structured Wiring Rough,1
523,12671,Peninsula,5870,high,750956.0,2250,2250 Slab Prep,1
524,12671,Peninsula,5870,high,750956.0,2420,2420 Slab Inspection,1
525,13099,Arbor-Lyn,2616,medium,381426.0,3780,3780 2nd Floor Deck Framing,1
526,12673,Peninsula,5996,high,750956.0,3940,3940 3rd Floor Deck Framing,1
527,12673,Peninsula,5996,high,750956.0,3980,3980 3rd Floor Wall Framing,2
528,12451,Peninsula,5195,high,750956.0,5300,5300 Municipal Electric Inspection,1
529,13090,Marsh Island,5603,high,1154185.0,5940,5940 Order Cabinets,1
530,13090,Marsh Island,5603,high,1154185.0,5941,5941 Order Cabinet Hardware,1
531,12451,Peninsula,5195,high,750956.0,9750,9750 Order Appliance Pkg 2,1
532,13099,Arbor-Lyn,2616,medium,381426.0,100,100 Framing DRAW 1,1
533,12671,Peninsula,5870,high,750956.0,2385,2385 Pour SOG Slab,3
534,12671,Peninsula,5870,high,750956.0,2700,2700 Pour Garage Slab,3
535,13099,Arbor-Lyn,2616,medium,381426.0,3820,3820 2nd Floor Wall Framing,1
536,12673,Peninsula,5996,high,750956.0,4230,4230 Receive Housewrap/Flashing,1
537,12671,Peninsula,5870,high,750956.0,2440,2440 Receive Steel,1
538,12671,Peninsula,5870,high,750956.0,2460,2460 Receive Lumber Drop #1,1
539,12671,Peninsula,5870,high,750956.0,3540,3540 Receive Lumber Drop #2,1
540,12671,Peninsula,5870,high,750956.0,3740,3740 Receive 2nd Floor Joists,1
541,12671,Peninsula,5870,high,750956.0,3900,3900 Receive Lumber Drop #3,1
542,12671,Peninsula,5870,high,750956.0,3990,3990 Receive 3nd Floor Joists,1
543,12673,Peninsula,5996,high,750956.0,4020,4020 Set Trusses,3
544,13099,Arbor-Lyn,2616,medium,381426.0,4020,4020 Set Trusses,3
545,13090,Marsh Island,5603,high,1154185.0,4380,4380 Roof Sheathing,3
546,12959,Marsh Island,5529,high,1221345.0,940,940 Install Pilings,2
547,12671,Peninsula,5870,high,750956.0,4070,4070 Receive Exterior Deck Material,1
548,13090,Marsh Island,5603,high,1154185.0,4071,4071 Receive Exterior Decking,1
549,13090,Marsh Island,5603,high,1154185.0,4300,4300 Receive Window/Door Flashings,1
550,13090,Marsh Island,5603,high,1154185.0,4340,4340 Receive Exterior Doors,1
551,13090,Marsh Island,5603,high,1154185.0,4390,4390 Receive Roofing Material,1
552,13090,Marsh Island,5603,high,1154185.0,4260,4260 Receive Windows,1
553,13090,Marsh Island,5603,high,1154185.0,4580,4580 Install Roofing,2
554,12673,Peninsula,5996,high,750956.0,5940,5940 Order Cabinets,1
555,12673,Peninsula,5996,high,750956.0,5941,5941 Order Cabinet Hardware,1
556,12959,Marsh Island,5529,high,1221345.0,0,00000 START,1
557,12959,Marsh Island,5529,high,1221345.0,1,1 START  CONSTRUCTION,1
558,12959,Marsh Island,5529,high,1221345.0,252,252 Site Plan,1
559,12959,Marsh Island,5529,high,1221345.0,260,260 Plan Review/Permit Allocation,0
560,12959,Marsh Island,5529,high,1221345.0,900,900 Bldg Stakeout,1
561,12959,Marsh Island,5529,high,1221345.0,901,901 Engineering Allocation,0
562,12959,Marsh Island,5529,high,1221345.0,980,980 Install Silt Fence,1
563,12959,Marsh Island,5529,high,1221345.0,1020,1020 Install Construction Entrance,1
564,12959,Marsh Island,5529,high,1221345.0,1100,1100 Form Footings,1
565,12959,Marsh Island,5529,high,1221345.0,1140,1140 Footing Inspection,1
566,12959,Marsh Island,5529,high,1221345.0,1180,1180 Pour Footings,2
567,12959,Marsh Island,5529,high,1221345.0,1181,1181 Pump Truck Allowance,1
568,12959,Marsh Island,5529,high,1221345.0,1780,1780 Order Steel,1
569,12959,Marsh Island,5529,high,1221345.0,2230,2230 Receive Dumpster Allocation,1
570,12959,Marsh Island,5529,high,1221345.0,2240,2240 Receive Portable Toilet Allocation,1
571,13090,Marsh Island,5603,high,1154185.0,4100,4100 Exterior Deck Framing,1
572,12673,Peninsula,5996,high,750956.0,4380,4380 Roof Sheathing,3
573,13099,Arbor-Lyn,2616,medium,381426.0,4380,4380 Roof Sheathing,3
574,13090,Marsh Island,5603,high,1154185.0,4540,4540 Install Windows,4
575,13090,Marsh Island,5603,high,1154185.0,4775,4775 Receive Hardwood Stairs,1
576,12959,Marsh Island,5529,high,1221345.0,8500,8500 Order Appliance Pkg 1,1
577,12959,Marsh Island,5529,high,1221345.0,9750,9750 Order Appliance Pkg 2,1
578,12959,Marsh Island,5529,high,1221345.0,9860,9860 Final Utility Connection,0
579,12959,Marsh Island,5529,high,1221345.0,10300,10300.1 Driveway/Curb Repair Allowance,0
580,12671,Peninsula,5870,high,750956.0,2,2 FRAMING START,1
581,13090,Marsh Island,5603,high,1154185.0,4585,4585 Install Membrane Roofing,1
582,13090,Marsh Island,5603,high,1154185.0,4591,4591 Install Metal Roof Flashing,1
583,12959,Marsh Island,5529,high,1221345.0,1190,1190 Capillary Break,1
584,12671,Peninsula,5870,high,750956.0,3380,3380 1st Floor Wall Framing,1
585,12671,Peninsula,5870,high,750956.0,3700,3700 Receive Trusses,1
586,12671,Peninsula,5870,high,750956.0,4460,4460 Schedule Gas Lateral Contractor,1
587,12959,Marsh Island,5529,high,1221345.0,1580,1580 Form Foundation Walls,1
588,12959,Marsh Island,5529,high,1221345.0,1820,1820 Foundation Wall Inspection,1
589,12959,Marsh Island,5529,high,1221345.0,1860,1860 Foundation Wall Pour,1
590,12671,Peninsula,5870,high,750956.0,3780,3780 2nd Floor Deck Framing,1
591,12673,Peninsula,5996,high,750956.0,4100,4100 Exterior Deck Framing,1
592,12671,Peninsula,5870,high,750956.0,4230,4230 Receive Housewrap/Flashing,1
593,13099,Arbor-Lyn,2616,medium,381426.0,4260,4260 Receive Windows,1
594,13099,Arbor-Lyn,2616,medium,381426.0,4300,4300 Receive Window/Door Flashings,1
595,12673,Peninsula,5996,high,750956.0,4300,4300 Receive Window/Door Flashings,1
596,12673,Peninsula,5996,high,750956.0,4340,4340 Receive Exterior Doors,1
597,13099,Arbor-Lyn,2616,medium,381426.0,4340,4340 Receive Exterior Doors,1
598,12673,Peninsula,5996,high,750956.0,4390,4390 Receive Roofing Material,1
599,12673,Peninsula,5996,high,750956.0,4540,4540 Install Windows,1
600,12673,Peninsula,5996,high,750956.0,4701,4701 Frame Check,1
601,13090,Marsh Island,5603,high,1154185.0,4701,4701 Frame Check,1
602,13099,Arbor-Lyn,2616,medium,381426.0,4775,4775 Receive Hardwood Stairs,1
603,13090,Marsh Island,5603,high,1154185.0,5100,5100 HVAC Rough,3
604,13090,Marsh Island,5603,high,1154185.0,5120,5120 HVAC Set Furnace,1
605,12671,Peninsula,5870,high,750956.0,100,100 Framing DRAW 1,1
606,12673,Peninsula,5996,high,750956.0,140,140 Framing DRAW 2,1
607,13090,Marsh Island,5603,high,1154185.0,140,140 Framing DRAW 2,1
608,12959,Marsh Island,5529,high,1221345.0,1900,1900 Strip Foundation Forms,1
609,12671,Peninsula,5870,high,750956.0,3820,3820 2nd Floor Wall Framing,2
610,12673,Peninsula,5996,high,750956.0,4071,4071 Receive Exterior Decking,1
611,13099,Arbor-Lyn,2616,medium,381426.0,4540,4540 Install Windows,9
612,12673,Peninsula,5996,high,750956.0,4580,4580 Install Roofing,2
613,12671,Peninsula,5870,high,750956.0,4660,4660 Schedule Elevator Rough,1
614,12673,Peninsula,5996,high,750956.0,5825,5825 Frame Punch,1
615,13090,Marsh Island,5603,high,1154185.0,5825,5825 Frame Punch,20
616,13090,Marsh Island,5603,high,1154185.0,3,3 TRADES START,1
617,13099,Arbor-Lyn,2616,medium,381426.0,140,140 Framing DRAW 2,1
618,12959,Marsh Island,5529,high,1221345.0,2340,2340 Backfill & Compact,1
619,12959,Marsh Island,5529,high,1221345.0,2382,2382 Slab Insulation,1
620,12959,Marsh Island,5529,high,1221345.0,3020,3020 Termite & Pest PreTreatment,1
621,13099,Arbor-Lyn,2616,medium,381426.0,4100,4100 Exterior Deck Framing,5
622,13099,Arbor-Lyn,2616,medium,381426.0,4390,4390 Receive Roofing Material,1
623,13099,Arbor-Lyn,2616,medium,381426.0,4777,4777 Receive Box Stairs,1
624,13099,Arbor-Lyn,2616,medium,381426.0,5825,5825 Frame Punch,11
625,13099,Arbor-Lyn,2616,medium,381426.0,3,3 TRADES START,1
626,12959,Marsh Island,5529,high,1221345.0,2344,2344 Meter Pit Install,1
627,12959,Marsh Island,5529,high,1221345.0,3100,3100 Foundation Survey,1
628,12671,Peninsula,5870,high,750956.0,3940,3940 3rd Floor Deck Framing,1
629,12671,Peninsula,5870,high,750956.0,3980,3980 3rd Floor Wall Framing,2
630,13099,Arbor-Lyn,2616,medium,381426.0,4071,4071 Receive Exterior Decking,1
631,13099,Arbor-Lyn,2616,medium,381426.0,4580,4580 Install Roofing,2
632,12673,Peninsula,5996,high,750956.0,4585,4585 Install Membrane Roofing,1
633,12673,Peninsula,5996,high,750956.0,4591,4591 Install Metal Roof Flashing,1
634,13090,Marsh Island,5603,high,1154185.0,4940,4940 Install Fireplace,4
635,13090,Marsh Island,5603,high,1154185.0,4980,4980 Plumbing Rough,3
636,13099,Arbor-Lyn,2616,medium,381426.0,5120,5120 HVAC Set Furnace,6
637,13090,Marsh Island,5603,high,1154185.0,6900,6900 Schedule Septic Installation,1
638,13090,Marsh Island,5603,high,1154185.0,8820,8820 Schedule Irrigation Well,1
639,12959,Marsh Island,5529,high,1221345.0,2020,2020 Install Underground Plumbing,1
640,13099,Arbor-Lyn,2616,medium,381426.0,4460,4460 Schedule Gas Lateral Contractor,1
641,13099,Arbor-Lyn,2616,medium,381426.0,4701,4701 Frame Check,3
642,13099,Arbor-Lyn,2616,medium,381426.0,5100,5100 HVAC Rough,6
643,13090,Marsh Island,5603,high,1154185.0,9390,9390 Install Water Meter/Sewer Frame,11
644,13090,Marsh Island,5603,high,1154185.0,9900,9900 Water Lateral,10
645,13090,Marsh Island,5603,high,1154185.0,9905,9905 Sewer Lateral,10
646,12959,Marsh Island,5529,high,1221345.0,1980,1980 Install Underground Electric,1
647,12959,Marsh Island,5529,high,1221345.0,2250,2250 Slab Prep,10
648,12671,Peninsula,5870,high,750956.0,4020,4020 Set Trusses,3
649,13099,Arbor-Lyn,2616,medium,381426.0,4591,4591 Install Metal Roof Flashing,8
650,13090,Marsh Island,5603,high,1154185.0,5860,5860 Frame Stage Tour,1
651,12959,Marsh Island,5529,high,1221345.0,2460,2460 Receive Lumber Drop #1,1
652,13099,Arbor-Lyn,2616,medium,381426.0,4940,4940 Install Fireplace,6
653,13099,Arbor-Lyn,2616,medium,381426.0,4980,4980 Plumbing Rough,2
654,13090,Marsh Island,5603,high,1154185.0,5180,5180 Electric Rough,4
655,13090,Marsh Island,5603,high,1154185.0,5740,5740 Install Gas Lines,1
656,12959,Marsh Island,5529,high,1221345.0,2140,2140 Underground Plumbing Inspection,1
657,13090,Marsh Island,5603,high,1154185.0,4461,4461 Install Gas Lateral,16
658,12671,Peninsula,5870,high,750956.0,5940,5940 Order Cabinets,1
659,12671,Peninsula,5870,high,750956.0,5941,5941 Order Cabinet Hardware,1
660,13099,Arbor-Lyn,2616,medium,381426.0,9390,9390 Install Water Meter/Sewer Frame,21
661,13099,Arbor-Lyn,2616,medium,381426.0,9900,9900 Water Lateral,22
662,13099,Arbor-Lyn,2616,medium,381426.0,9905,9905 Sewer Lateral,22
663,12959,Marsh Island,5529,high,1221345.0,3540,3540 Receive Lumber Drop #2,1
664,12959,Marsh Island,5529,high,1221345.0,3900,3900 Receive Lumber Drop #3,1
665,12649,Peninsula,5996,high,750956.0,4260,4260 Receive Windows,1
666,12649,Peninsula,5996,high,750956.0,4300,4300 Receive Window/Door Flashings,1
667,12649,Peninsula,5996,high,750956.0,4340,4340 Receive Exterior Doors,1
668,12671,Peninsula,5870,high,750956.0,4380,4380 Roof Sheathing,3
669,13099,Arbor-Lyn,2616,medium,381426.0,5180,5180 Electric Rough,3
670,13099,Arbor-Lyn,2616,medium,381426.0,5740,5740 Install Gas Lines,1
671,12959,Marsh Island,5529,high,1221345.0,4070,4070 Receive Exterior Deck Material,1
672,13099,Arbor-Lyn,2616,medium,381426.0,4461,4461 Install Gas Lateral,4
673,12649,Peninsula,5996,high,750956.0,4540,4540 Install Windows,4
674,13090,Marsh Island,5603,high,1154185.0,4665,4665 Elevator Rough,2
675,13090,Marsh Island,5603,high,1154185.0,5260,5260 Mechanical Rough Inspection,1
676,13090,Marsh Island,5603,high,1154185.0,5580,5580 Structured Wiring Rough,3
677,13090,Marsh Island,5603,high,1154185.0,5900,5900 Air Seal,4
678,12649,Peninsula,5996,high,750956.0,140,140 Framing DRAW 2,1
679,12959,Marsh Island,5529,high,1221345.0,2440,2440 Receive Steel,1
680,12671,Peninsula,5870,high,750956.0,4701,4701 Frame Check,1
681,13099,Arbor-Lyn,2616,medium,381426.0,5260,5260 Mechanical Rough Inspection,1
682,13090,Marsh Island,5603,high,1154185.0,5300,5300 Municipal Electric Inspection,11
683,13099,Arbor-Lyn,2616,medium,381426.0,5580,5580 Structured Wiring Rough,1
684,12649,Peninsula,5996,high,750956.0,5825,5825 Frame Punch,3
685,12671,Peninsula,5870,high,750956.0,140,140 Framing DRAW 2,1
686,12671,Peninsula,5870,high,750956.0,4100,4100 Exterior Deck Framing,1
687,12671,Peninsula,5870,high,750956.0,4260,4260 Receive Windows,24
688,12671,Peninsula,5870,high,750956.0,4300,4300 Receive Window/Door Flashings,24
689,12671,Peninsula,5870,high,750956.0,4340,4340 Receive Exterior Doors,24
690,12671,Peninsula,5870,high,750956.0,4390,4390 Receive Roofing Material,1
691,12649,Peninsula,5996,high,750956.0,4665,4665 Elevator Rough,2
692,13099,Arbor-Lyn,2616,medium,381426.0,5300,5300 Municipal Electric Inspection,2
693,12671,Peninsula,5870,high,750956.0,5825,5825 Frame Punch,1
694,13099,Arbor-Lyn,2616,medium,381426.0,5900,5900 Air Seal,1
695,13099,Arbor-Lyn,2616,medium,381426.0,9860,9860 Final Utility Connection,31
696,12959,Marsh Island,5529,high,1221345.0,2540,2540 Receive 1st Floor Joists,1
697,12959,Marsh Island,5529,high,1221345.0,3740,3740 Receive 2nd Floor Joists,1
698,12959,Marsh Island,5529,high,1221345.0,3990,3990 Receive 3nd Floor Joists,1
699,12671,Peninsula,5870,high,750956.0,4071,4071 Receive Exterior Decking,1
700,12671,Peninsula,5870,high,750956.0,4580,4580 Install Roofing,2
701,13099,Arbor-Lyn,2616,medium,381426.0,4700,4700 Internal Framing Inspection,1
702,12649,Peninsula,5996,high,750956.0,4701,4701 Frame Check,1
703,13099,Arbor-Lyn,2616,medium,381426.0,5820,5820 Framing Inspection,2
704,12649,Peninsula,5996,high,750956.0,3,3 TRADES START,1
705,12671,Peninsula,5870,high,750956.0,4775,4775 Receive Hardwood Stairs,1
706,12649,Peninsula,5996,high,750956.0,5100,5100 HVAC Rough,3
707,12451,Peninsula,5195,high,750956.0,5900,5900 Air Seal,1
708,13099,Arbor-Lyn,2616,medium,381426.0,6390,6390 Schedule Gas Meter,1
709,13099,Arbor-Lyn,2616,medium,381426.0,10940,10940 Framing Retainage,1
710,12671,Peninsula,5870,high,750956.0,4585,4585 Install Membrane Roofing,1
711,12671,Peninsula,5870,high,750956.0,4591,4591 Install Metal Roof Flashing,12
712,12451,Peninsula,5195,high,750956.0,4700,4700 Internal Framing Inspection,1
713,13099,Arbor-Lyn,2616,medium,381426.0,6180,6180 Install Insulation,2
714,12451,Peninsula,5195,high,750956.0,10940,10940 Framing Retainage,1
715,12959,Marsh Island,5529,high,1221345.0,4230,4230 Receive Housewrap/Flashing,1
716,13099,Arbor-Lyn,2616,medium,381426.0,5860,5860 Frame Stage Tour,1
717,12649,Peninsula,5996,high,750956.0,4940,4940 Install Fireplace,1
718,12649,Peninsula,5996,high,750956.0,4980,4980 Plumbing Rough,3
719,13099,Arbor-Lyn,2616,medium,381426.0,6300,6300 Energy Inspection,1
720,13099,Arbor-Lyn,2616,medium,381426.0,6345,6345 Stock Drywall,1
721,12649,Peninsula,5996,high,750956.0,6900,6900 Schedule Septic Installation,1
722,12959,Marsh Island,5529,high,1221345.0,2420,2420 Slab Inspection,1
723,13099,Arbor-Lyn,2616,medium,381426.0,3140,3140 Pour Porch Slab,1
724,12451,Peninsula,5195,high,750956.0,5820,5820 Framing Inspection,1
725,13099,Arbor-Lyn,2616,medium,381426.0,6380,6380 Install Drywall,9
726,13099,Arbor-Lyn,2616,medium,381426.0,6620,6620 Receive Vinyl Siding,1
727,13099,Arbor-Lyn,2616,medium,381426.0,6700,6700 Receive Composite Ext Trim,1
728,13099,Arbor-Lyn,2616,medium,381426.0,6720,6720 Receive Siding Accents,1
729,13099,Arbor-Lyn,2616,medium,381426.0,6740,6740 Receive PVC Exterior Trim,1
730,13099,Arbor-Lyn,2616,medium,381426.0,6781,6781 Receive Column Wrap/Flower Bx/Pediment,1
731,13099,Arbor-Lyn,2616,medium,381426.0,6820,6820 Receive Deck Skirting,1
732,12649,Peninsula,5996,high,750956.0,9390,9390 Install Water Meter/Sewer Frame,16
733,12649,Peninsula,5996,high,750956.0,9900,9900 Water Lateral,16
734,12649,Peninsula,5996,high,750956.0,9905,9905 Sewer Lateral,16
735,12959,Marsh Island,5529,high,1221345.0,2385,2385 Pour SOG Slab,1
736,12959,Marsh Island,5529,high,1221345.0,2700,2700 Pour Garage Slab,1
737,13099,Arbor-Lyn,2616,medium,381426.0,6860,6860 Siding Installation,25
738,12850,Peninsula,5715,high,750956.0,0,00000 START,1
739,12832,Peninsula,4562,high,1090397.0,0,00000 START,1
740,12832,Peninsula,4562,high,1090397.0,1,1 START  CONSTRUCTION,1
741,12850,Peninsula,5715,high,750956.0,1,1 START  CONSTRUCTION,1
742,12959,Marsh Island,5529,high,1221345.0,2,2 FRAMING START,1
743,12850,Peninsula,5715,high,750956.0,252,252 Site Plan,1
744,12832,Peninsula,4562,high,1090397.0,252,252 Site Plan,1
745,12832,Peninsula,4562,high,1090397.0,260,260 Plan Review/Permit Allocation,0
746,12850,Peninsula,5715,high,750956.0,260,260 Plan Review/Permit Allocation,0
747,12850,Peninsula,5715,high,750956.0,900,900 Bldg Stakeout,1
748,12832,Peninsula,4562,high,1090397.0,900,900 Bldg Stakeout,1
749,12832,Peninsula,4562,high,1090397.0,901,901 Engineering Allocation,0
750,12850,Peninsula,5715,high,750956.0,901,901 Engineering Allocation,0
751,12850,Peninsula,5715,high,750956.0,980,980 Install Silt Fence,1
752,12832,Peninsula,4562,high,1090397.0,980,980 Install Silt Fence,1
753,12832,Peninsula,4562,high,1090397.0,1020,1020 Install Construction Entrance,1
754,12850,Peninsula,5715,high,750956.0,1020,1020 Install Construction Entrance,1
755,12850,Peninsula,5715,high,750956.0,1100,1100 Form Footings,1
756,12850,Peninsula,5715,high,750956.0,1140,1140 Footing Inspection,1
757,12850,Peninsula,5715,high,750956.0,1180,1180 Pour Footings,1
758,12850,Peninsula,5715,high,750956.0,1181,1181 Pump Truck Allowance,1
759,12832,Peninsula,4562,high,1090397.0,1181,1181 Pump Truck Allowance,1
760,12832,Peninsula,4562,high,1090397.0,1780,1780 Order Steel,1
761,12850,Peninsula,5715,high,750956.0,1780,1780 Order Steel,1
762,12850,Peninsula,5715,high,750956.0,2230,2230 Receive Dumpster Allocation,1
763,12832,Peninsula,4562,high,1090397.0,2230,2230 Receive Dumpster Allocation,1
764,12832,Peninsula,4562,high,1090397.0,2240,2240 Receive Portable Toilet Allocation,1
765,12850,Peninsula,5715,high,750956.0,2240,2240 Receive Portable Toilet Allocation,1
766,13090,Marsh Island,5603,high,1154185.0,4700,4700 Internal Framing Inspection,1
767,12649,Peninsula,5996,high,750956.0,5180,5180 Electric Rough,22
768,12649,Peninsula,5996,high,750956.0,5740,5740 Install Gas Lines,1
769,13090,Marsh Island,5603,high,1154185.0,5820,5820 Framing Inspection,1
770,12850,Peninsula,5715,high,750956.0,8500,8500 Order Appliance Pkg 1,1
771,12832,Peninsula,4562,high,1090397.0,8500,8500 Order Appliance Pkg 1,1
772,12832,Peninsula,4562,high,1090397.0,9750,9750 Order Appliance Pkg 2,1
773,12850,Peninsula,5715,high,750956.0,9750,9750 Order Appliance Pkg 2,1
774,12850,Peninsula,5715,high,750956.0,9860,9860 Final Utility Connection,0
775,12832,Peninsula,4562,high,1090397.0,9860,9860 Final Utility Connection,0
776,12832,Peninsula,4562,high,1090397.0,10300,10300.1 Driveway/Curb Repair Allowance,0
777,12850,Peninsula,5715,high,750956.0,10300,10300.1 Driveway/Curb Repair Allowance,0
778,12832,Peninsula,4562,high,1090397.0,1100,1100 Form Footings,1
779,12832,Peninsula,4562,high,1090397.0,1140,1140 Footing Inspection,1
780,12832,Peninsula,4562,high,1090397.0,1180,1180 Pour Footings,1
781,12850,Peninsula,5715,high,750956.0,1190,1190 Capillary Break,1
782,12959,Marsh Island,5529,high,1221345.0,3300,3300 1st Floor Deck Framing,1
783,12649,Peninsula,5996,high,750956.0,4461,4461 Install Gas Lateral,1
784,12673,Peninsula,5996,high,750956.0,4775,4775 Receive Hardwood Stairs,1
785,12451,Peninsula,5195,high,750956.0,6180,6180 Install Insulation,1
786,13099,Arbor-Lyn,2616,medium,381426.0,9910,9910 Utility Grade,1
787,13090,Marsh Island,5603,high,1154185.0,10940,10940 Framing Retainage,4
788,12832,Peninsula,4562,high,1090397.0,1190,1190 Capillary Break,1
789,12959,Marsh Island,5529,high,1221345.0,3380,3380 1st Floor Wall Framing,1
790,12959,Marsh Island,5529,high,1221345.0,3700,3700 Receive Trusses,1
791,12959,Marsh Island,5529,high,1221345.0,3780,3780 2nd Floor Deck Framing,1
792,12959,Marsh Island,5529,high,1221345.0,3820,3820 2nd Floor Wall Framing,2
793,12959,Marsh Island,5529,high,1221345.0,4460,4460 Schedule Gas Lateral Contractor,1
794,12649,Peninsula,5996,high,750956.0,6390,6390 Schedule Gas Meter,1
795,12850,Peninsula,5715,high,750956.0,1580,1580 Form Foundation Walls,2
796,12832,Peninsula,4562,high,1090397.0,1580,1580 Form Foundation Walls,1
797,12832,Peninsula,4562,high,1090397.0,1820,1820 Foundation Wall Inspection,1
798,12832,Peninsula,4562,high,1090397.0,1860,1860 Foundation Wall Pour,1
799,12959,Marsh Island,5529,high,1221345.0,3940,3940 3rd Floor Deck Framing,1
800,12959,Marsh Island,5529,high,1221345.0,3980,3980 3rd Floor Wall Framing,2
801,12451,Peninsula,5195,high,750956.0,6300,6300 Energy Inspection,1
802,12451,Peninsula,5195,high,750956.0,6380,6380 Install Drywall,15
803,12959,Marsh Island,5529,high,1221345.0,100,100 Framing DRAW 1,1
804,12850,Peninsula,5715,high,750956.0,1820,1820 Foundation Wall Inspection,1
805,12850,Peninsula,5715,high,750956.0,1860,1860 Foundation Wall Pour,1
806,12832,Peninsula,4562,high,1090397.0,1900,1900 Strip Foundation Forms,1
807,13099,Arbor-Lyn,2616,medium,381426.0,5177,5177 Electric Meter Connection,17
808,12649,Peninsula,5996,high,750956.0,5860,5860 Frame Stage Tour,1
809,13090,Marsh Island,5603,high,1154185.0,6390,6390 Schedule Gas Meter,1
810,12451,Peninsula,5195,high,750956.0,6620,6620 Receive Vinyl Siding,1
811,12451,Peninsula,5195,high,750956.0,6660,6660 Receive Fiber Cement Siding,1
812,12451,Peninsula,5195,high,750956.0,6700,6700 Receive Composite Ext Trim,1
813,12451,Peninsula,5195,high,750956.0,6720,6720 Receive Siding Accents,1
814,12451,Peninsula,5195,high,750956.0,6721,6721 Receive Brackets,1
815,12451,Peninsula,5195,high,750956.0,6725,6725 Receive Shutters,1
816,12451,Peninsula,5195,high,750956.0,6740,6740 Receive PVC Exterior Trim,1
817,12451,Peninsula,5195,high,750956.0,6781,6781 Receive Column Wrap/Flower Bx/Pediment,1
818,12451,Peninsula,5195,high,750956.0,6820,6820 Receive Deck Skirting,1
819,13099,Arbor-Lyn,2616,medium,381426.0,7220,7220 Install Deck Skirting/Flower Boxes,1
820,12850,Peninsula,5715,high,750956.0,1900,1900 Strip Foundation Forms,1
821,12832,Peninsula,4562,high,1090397.0,2340,2340 Backfill & Compact,1
822,12832,Peninsula,4562,high,1090397.0,2382,2382 Slab Insulation,1
823,12832,Peninsula,4562,high,1090397.0,3020,3020 Termite & Pest PreTreatment,1
824,12959,Marsh Island,5529,high,1221345.0,4020,4020 Set Trusses,2
825,13090,Marsh Island,5603,high,1154185.0,6180,6180 Install Insulation,2
826,12451,Peninsula,5195,high,750956.0,6860,6860 Siding Installation,13
827,13099,Arbor-Lyn,2616,medium,381426.0,6884,6884 Measure Screen Porch Enclosure,1
828,13099,Arbor-Lyn,2616,medium,381426.0,9140,9140 2nd Stage Air Seal,1
829,12451,Peninsula,5195,high,750956.0,0,GrillOrd Order Grill/Firebox,1
830,12850,Peninsula,5715,high,750956.0,2340,2340 Backfill & Compact,1
831,12832,Peninsula,4562,high,1090397.0,2344,2344 Meter Pit Install,1
832,12850,Peninsula,5715,high,750956.0,2382,2382 Slab Insulation,1
833,12850,Peninsula,5715,high,750956.0,3020,3020 Termite & Pest PreTreatment,1
834,12832,Peninsula,4562,high,1090397.0,3100,3100 Foundation Survey,1
835,12959,Marsh Island,5529,high,1221345.0,4380,4380 Roof Sheathing,3
836,12959,Marsh Island,5529,high,1221345.0,5940,5940 Order Cabinets,1
837,12959,Marsh Island,5529,high,1221345.0,5941,5941 Order Cabinet Hardware,1
838,13099,Arbor-Lyn,2616,medium,381426.0,9460,9460 Attic Insulation,3
839,12832,Peninsula,4562,high,1090397.0,2020,2020 Install Underground Plumbing,1
840,12850,Peninsula,5715,high,750956.0,2344,2344 Meter Pit Install,1
841,12850,Peninsula,5715,high,750956.0,3100,3100 Foundation Survey,1
842,13090,Marsh Island,5603,high,1154185.0,6300,6300 Energy Inspection,1
843,13099,Arbor-Lyn,2616,medium,381426.0,6340,6340 Install Overhead Door,47
844,13090,Marsh Island,5603,high,1154185.0,6345,6345 Stock Drywall,1
845,13099,Arbor-Lyn,2616,medium,381426.0,8420,8420 1st Paint,1
846,12673,Peninsula,5996,high,750956.0,3,3 TRADES START,1
847,12832,Peninsula,4562,high,1090397.0,1980,1980 Install Underground Electric,1
848,12850,Peninsula,5715,high,750956.0,2020,2020 Install Underground Plumbing,10
849,13090,Marsh Island,5603,high,1154185.0,6620,6620 Receive Vinyl Siding,1
850,13090,Marsh Island,5603,high,1154185.0,6660,6660 Receive Fiber Cement Siding,1
851,13090,Marsh Island,5603,high,1154185.0,6700,6700 Receive Composite Ext Trim,1
852,13090,Marsh Island,5603,high,1154185.0,6720,6720 Receive Siding Accents,1
853,13090,Marsh Island,5603,high,1154185.0,6740,6740 Receive PVC Exterior Trim,1
854,13090,Marsh Island,5603,high,1154185.0,6781,6781 Receive Column Wrap/Flower Bx/Pediment,1
855,13090,Marsh Island,5603,high,1154185.0,6820,6820 Receive Deck Skirting,1
856,13099,Arbor-Lyn,2616,medium,381426.0,7340,7340 Install Ceramic Tile,2
857,13099,Arbor-Lyn,2616,medium,381426.0,7350,7350 Install Shower Tile,15
858,13099,Arbor-Lyn,2616,medium,381426.0,8020,8020 Receive Interior Railing,4
859,13099,Arbor-Lyn,2616,medium,381426.0,8220,8220 Install Fireplace Surround/Mantel,5
860,12850,Peninsula,5715,high,750956.0,1980,1980 Install Underground Electric,1
861,12959,Marsh Island,5529,high,1221345.0,4100,4100 Exterior Deck Framing,1
862,12959,Marsh Island,5529,high,1221345.0,4260,4260 Receive Windows,2
863,12959,Marsh Island,5529,high,1221345.0,4300,4300 Receive Window/Door Flashings,2
864,12959,Marsh Island,5529,high,1221345.0,4340,4340 Receive Exterior Doors,1
865,12959,Marsh Island,5529,high,1221345.0,4390,4390 Receive Roofing Material,1
866,13099,Arbor-Lyn,2616,medium,381426.0,4981,4981 Deliver Sinks,1
867,13090,Marsh Island,5603,high,1154185.0,6860,6860 Siding Installation,39
868,13099,Arbor-Lyn,2616,medium,381426.0,7300,7300 Receive Interior Trim,1
869,13099,Arbor-Lyn,2616,medium,381426.0,7304,7304 Receive Goodie Box,3
870,13099,Arbor-Lyn,2616,medium,381426.0,7700,7700 Receive Interior Doors,1
871,13099,Arbor-Lyn,2616,medium,381426.0,7862,7862 Receive Cabinet Hardware Allocation,1
872,13099,Arbor-Lyn,2616,medium,381426.0,7865,7865 Receive Door Hardware Allocation,3
873,13099,Arbor-Lyn,2616,medium,381426.0,7866,7866 Receive Door Hardware,3
874,13099,Arbor-Lyn,2616,medium,381426.0,7900,7900 Receive Cabinets Allocation,3
875,13099,Arbor-Lyn,2616,medium,381426.0,7940,7940 Receive Vanity Tops,3
876,13099,Arbor-Lyn,2616,medium,381426.0,8260,8260 Install Interior Railing,4
877,12832,Peninsula,4562,high,1090397.0,2140,2140 Underground Plumbing Inspection,1
878,12959,Marsh Island,5529,high,1221345.0,4071,4071 Receive Exterior Decking,1
879,12673,Peninsula,5996,high,750956.0,4260,4260 Receive Windows,1
880,12959,Marsh Island,5529,high,1221345.0,4580,4580 Install Roofing,4
881,13099,Arbor-Lyn,2616,medium,381426.0,7860,7860 Install Interior Trim,9
882,12832,Peninsula,4562,high,1090397.0,2250,2250 Slab Prep,1
883,12832,Peninsula,4562,high,1090397.0,2420,2420 Slab Inspection,1
884,12959,Marsh Island,5529,high,1221345.0,4540,4540 Install Windows,9
885,12959,Marsh Island,5529,high,1221345.0,4775,4775 Receive Hardwood Stairs,1
886,13099,Arbor-Lyn,2616,medium,381426.0,7901,7901 Cabinet Delivery Charges,1
887,13099,Arbor-Lyn,2616,medium,381426.0,8300,8300 Install Cabinets,2
888,13099,Arbor-Lyn,2616,medium,381426.0,9540,9540 Rec. GE Appliance Pkg1 Allocation,8
889,12832,Peninsula,4562,high,1090397.0,2385,2385 Pour SOG Slab,1
890,12832,Peninsula,4562,high,1090397.0,2700,2700 Pour Garage Slab,1
891,12673,Peninsula,5996,high,750956.0,5120,5120 HVAC Set Furnace,1
892,13090,Marsh Island,5603,high,1154185.0,5177,5177 Electric Meter Connection,12
893,13099,Arbor-Lyn,2616,medium,381426.0,10460,10460 Drywall Touch Up,7
894,12832,Peninsula,4562,high,1090397.0,2,2 FRAMING START,1
895,12832,Peninsula,4562,high,1090397.0,2440,2440 Receive Steel,1
896,12832,Peninsula,4562,high,1090397.0,2540,2540 Receive 1st Floor Joists,1
897,12832,Peninsula,4562,high,1090397.0,3540,3540 Receive Lumber Drop #2,1
898,12832,Peninsula,4562,high,1090397.0,3740,3740 Receive 2nd Floor Joists,1
899,12832,Peninsula,4562,high,1090397.0,3900,3900 Receive Lumber Drop #3,1
900,12832,Peninsula,4562,high,1090397.0,3990,3990 Receive 3nd Floor Joists,1
901,12673,Peninsula,5996,high,750956.0,5100,5100 HVAC Rough,3
902,13099,Arbor-Lyn,2616,medium,381426.0,8380,8380 Template Countertops,1
903,12850,Peninsula,5715,high,750956.0,2440,2440 Receive Steel,1
904,12850,Peninsula,5715,high,750956.0,2460,2460 Receive Lumber Drop #1,1
905,12832,Peninsula,4562,high,1090397.0,2460,2460 Receive Lumber Drop #1,1
906,12832,Peninsula,4562,high,1090397.0,3300,3300 1st Floor Deck Framing,1
907,12850,Peninsula,5715,high,750956.0,3540,3540 Receive Lumber Drop #2,1
908,12850,Peninsula,5715,high,750956.0,3740,3740 Receive 2nd Floor Joists,1
909,12850,Peninsula,5715,high,750956.0,3900,3900 Receive Lumber Drop #3,1
910,12850,Peninsula,5715,high,750956.0,3990,3990 Receive 3nd Floor Joists,1
911,12832,Peninsula,4562,high,1090397.0,4070,4070 Receive Exterior Deck Material,1
912,12959,Marsh Island,5529,high,1221345.0,4591,4591 Install Metal Roof Flashing,12
913,12959,Marsh Island,5529,high,1221345.0,4701,4701 Frame Check,1
914,13099,Arbor-Lyn,2616,medium,381426.0,10500,10500 Paint 2,39
915,12959,Marsh Island,5529,high,1221345.0,140,140 Framing DRAW 2,3
916,12850,Peninsula,5715,high,750956.0,2140,2140 Underground Plumbing Inspection,1
917,12832,Peninsula,4562,high,1090397.0,3380,3380 1st Floor Wall Framing,1
918,12832,Peninsula,4562,high,1090397.0,3700,3700 Receive Trusses,1
919,12850,Peninsula,5715,high,750956.0,3700,3700 Receive Trusses,1
920,12850,Peninsula,5715,high,750956.0,4070,4070 Receive Exterior Deck Material,1
921,12832,Peninsula,4562,high,1090397.0,4460,4460 Schedule Gas Lateral Contractor,1
922,12959,Marsh Island,5529,high,1221345.0,4585,4585 Install Membrane Roofing,6
923,12959,Marsh Island,5529,high,1221345.0,5100,5100 HVAC Rough,3
924,12959,Marsh Island,5529,high,1221345.0,5120,5120 HVAC Set Furnace,3
925,12959,Marsh Island,5529,high,1221345.0,5825,5825 Frame Punch,1
926,13090,Marsh Island,5603,high,1154185.0,6380,6380 Install Drywall,11
927,12451,Peninsula,5195,high,750956.0,9140,9140 2nd Stage Air Seal,1
928,13099,Arbor-Lyn,2616,medium,381426.0,0,vancheck Check Vanity Tops/Windows for Damage,1
929,12959,Marsh Island,5529,high,1221345.0,3,3 TRADES START,1
930,12832,Peninsula,4562,high,1090397.0,3780,3780 2nd Floor Deck Framing,1
931,12671,Peninsula,5870,high,750956.0,4540,4540 Install Windows,1
932,13099,Arbor-Lyn,2616,medium,381426.0,6885,6885 Install Screen Porch Enclosure,8
933,12832,Peninsula,4562,high,1090397.0,100,100 Framing DRAW 1,1
934,12832,Peninsula,4562,high,1090397.0,3820,3820 2nd Floor Wall Framing,5
935,12832,Peninsula,4562,high,1090397.0,4660,4660 Schedule Elevator Rough,1
936,12673,Peninsula,5996,high,750956.0,4940,4940 Install Fireplace,1
937,12673,Peninsula,5996,high,750956.0,4980,4980 Plumbing Rough,3
938,12673,Peninsula,5996,high,750956.0,6900,6900 Schedule Septic Installation,1
939,13099,Arbor-Lyn,2616,medium,381426.0,9020,9020 Electric Trim,36
940,13099,Arbor-Lyn,2616,medium,381426.0,9100,9100 HVAC Trim / Set Unit,28
941,12451,Peninsula,5195,high,750956.0,4590,4590 Install Metal Roofing,1
942,12959,Marsh Island,5529,high,1221345.0,4940,4940 Install Fireplace,1
943,12959,Marsh Island,5529,high,1221345.0,4980,4980 Plumbing Rough,3
944,12959,Marsh Island,5529,high,1221345.0,6900,6900 Schedule Septic Installation,1
945,12451,Peninsula,5195,high,750956.0,7060,7060 Exterior Masonry Installation,2
946,12451,Peninsula,5195,high,750956.0,7140,7140 Exterior Painting,1
947,12451,Peninsula,5195,high,750956.0,7220,7220 Install Deck Skirting/Flower Boxes,1
948,12451,Peninsula,5195,high,750956.0,8420,8420 1st Paint,1
949,13099,Arbor-Lyn,2616,medium,381426.0,8460,8460 Install Countertops,1
950,12959,Marsh Island,5529,high,1221345.0,8820,8820 Schedule Irrigation Well,1
951,12451,Peninsula,5195,high,750956.0,9360,9360 Receive Grill/Firebox,1
952,12673,Peninsula,5996,high,750956.0,9390,9390 Install Water Meter/Sewer Frame,1
953,12451,Peninsula,5195,high,750956.0,9460,9460 Attic Insulation,1
954,12673,Peninsula,5996,high,750956.0,9900,9900 Water Lateral,1
955,12673,Peninsula,5996,high,750956.0,9905,9905 Sewer Lateral,1
956,12671,Peninsula,5870,high,750956.0,3,3 TRADES START,1
957,12850,Peninsula,5715,high,750956.0,2250,2250 Slab Prep,1
958,12850,Peninsula,5715,high,750956.0,2420,2420 Slab Inspection,1
959,12671,Peninsula,5870,high,750956.0,5100,5100 HVAC Rough,3
960,12451,Peninsula,5195,high,750956.0,6340,6340 Install Overhead Door,1
961,12451,Peninsula,5195,high,750956.0,7340,7340 Install Ceramic Tile,5
962,12451,Peninsula,5195,high,750956.0,7350,7350 Install Shower Tile,5
963,12451,Peninsula,5195,high,750956.0,7380,7380 Install Vinyl Floors,1
964,12451,Peninsula,5195,high,750956.0,8220,8220 Install Fireplace Surround/Mantel,1
965,13099,Arbor-Lyn,2616,medium,381426.0,8920,8920 Install Water Heater/1st Trim,30
966,13099,Arbor-Lyn,2616,medium,381426.0,9260,9260 Structured Wiring Trim,2
967,12959,Marsh Island,5529,high,1221345.0,9390,9390 Install Water Meter/Sewer Frame,3
968,13099,Arbor-Lyn,2616,medium,381426.0,9620,9620 Install Appliances,10
969,12451,Peninsula,5195,high,750956.0,9860,9860 Final Utility Connection,1
970,12959,Marsh Island,5529,high,1221345.0,9900,9900 Water Lateral,3
971,12959,Marsh Island,5529,high,1221345.0,9905,9905 Sewer Lateral,3
972,12850,Peninsula,5715,high,750956.0,2385,2385 Pour SOG Slab,1
973,12850,Peninsula,5715,high,750956.0,2700,2700 Pour Garage Slab,1
974,12850,Peninsula,5715,high,750956.0,4230,4230 Receive Housewrap/Flashing,1
975,12832,Peninsula,4562,high,1090397.0,4230,4230 Receive Housewrap/Flashing,1
976,13099,Arbor-Lyn,2616,medium,381426.0,4590,4590 Install Metal Roofing,5
977,12673,Peninsula,5996,high,750956.0,5180,5180 Electric Rough,4
978,12649,Peninsula,5996,high,750956.0,5580,5580 Structured Wiring Rough,2
979,12673,Peninsula,5996,high,750956.0,5740,5740 Install Gas Lines,1
980,12673,Peninsula,5996,high,750956.0,5860,5860 Frame Stage Tour,1
981,12451,Peninsula,5195,high,750956.0,7180,7180 Install Exterior Railings,1
982,13099,Arbor-Lyn,2616,medium,381426.0,10345,10345 Pour Concrete Steps,4
983,12850,Peninsula,5715,high,750956.0,2,2 FRAMING START,1
984,12673,Peninsula,5996,high,750956.0,4461,4461 Install Gas Lateral,1
985,12649,Peninsula,5996,high,750956.0,5260,5260 Mechanical Rough Inspection,1
986,12959,Marsh Island,5529,high,1221345.0,5740,5740 Install Gas Lines,1
987,12959,Marsh Island,5529,high,1221345.0,5860,5860 Frame Stage Tour,1
988,13099,Arbor-Lyn,2616,medium,381426.0,6391,6391 Install Gas Meter,2
989,13099,Arbor-Lyn,2616,medium,381426.0,7140,7140 Exterior Painting,32
990,13099,Arbor-Lyn,2616,medium,381426.0,8465,8465 Install Tiled Backsplash,4
991,13099,Arbor-Lyn,2616,medium,381426.0,8579,8579 Template Shower Enclosure,1
992,13099,Arbor-Lyn,2616,medium,381426.0,10301,10301 Driveway Apron,4
993,13099,Arbor-Lyn,2616,medium,381426.0,10340,10340 Install Leadwalk & Comm. Sidewalk,4
994,12850,Peninsula,5715,high,750956.0,3380,3380 1st Floor Wall Framing,1
995,12832,Peninsula,4562,high,1090397.0,3940,3940 3rd Floor Deck Framing,1
996,12832,Peninsula,4562,high,1090397.0,3980,3980 3rd Floor Wall Framing,2
997,12959,Marsh Island,5529,high,1221345.0,4461,4461 Install Gas Lateral,1
998,12671,Peninsula,5870,high,750956.0,4940,4940 Install Fireplace,1
999,12671,Peninsula,5870,high,750956.0,4980,4980 Plumbing Rough,3
1000,12959,Marsh Island,5529,high,1221345.0,5180,5180 Electric Rough,3
1001,12649,Peninsula,5996,high,750956.0,5300,5300 Municipal Electric Inspection,1
1002,12649,Peninsula,5996,high,750956.0,5900,5900 Air Seal,1
1003,12673,Peninsula,5996,high,750956.0,6390,6390 Schedule Gas Meter,1
1004,12671,Peninsula,5870,high,750956.0,6900,6900 Schedule Septic Installation,1
1005,12850,Peninsula,5715,high,750956.0,3780,3780 2nd Floor Deck Framing,1
1006,12673,Peninsula,5996,high,750956.0,4665,4665 Elevator Rough,2
1007,12649,Peninsula,5996,high,750956.0,4700,4700 Internal Framing Inspection,1
1008,12673,Peninsula,5996,high,750956.0,5260,5260 Mechanical Rough Inspection,1
1009,12673,Peninsula,5996,high,750956.0,5580,5580 Structured Wiring Rough,1
1010,12959,Marsh Island,5529,high,1221345.0,6390,6390 Schedule Gas Meter,1
1011,12649,Peninsula,5996,high,750956.0,6760,6760 Order Courtyard Items,1
1012,13099,Arbor-Lyn,2616,medium,381426.0,7060,7060 Exterior Masonry Installation,23
1013,12451,Peninsula,5195,high,750956.0,7300,7300 Receive Interior Trim,1
1014,12451,Peninsula,5195,high,750956.0,7304,7304 Receive Goodie Box,1
1015,12451,Peninsula,5195,high,750956.0,7700,7700 Receive Interior Doors,1
1016,12451,Peninsula,5195,high,750956.0,7862,7862 Receive Cabinet Hardware Allocation,1
1017,12451,Peninsula,5195,high,750956.0,7865,7865 Receive Door Hardware Allocation,1
1018,12451,Peninsula,5195,high,750956.0,7866,7866 Receive Door Hardware,1
1019,12451,Peninsula,5195,high,750956.0,7900,7900 Receive Cabinets Allocation,1
1020,12451,Peninsula,5195,high,750956.0,7901,7901 Cabinet Delivery Charges,1
1021,12451,Peninsula,5195,high,750956.0,7940,7940 Receive Vanity Tops,1
1022,12451,Peninsula,5195,high,750956.0,7980,7980 Receive Stair Parts,1
1023,12451,Peninsula,5195,high,750956.0,8020,8020 Receive Interior Railing,1
1024,12671,Peninsula,5870,high,750956.0,9390,9390 Install Water Meter/Sewer Frame,1
1025,12671,Peninsula,5870,high,750956.0,9900,9900 Water Lateral,1
1026,12671,Peninsula,5870,high,750956.0,9905,9905 Sewer Lateral,1
1027,12850,Peninsula,5715,high,750956.0,100,100 Framing DRAW 1,1
1028,12850,Peninsula,5715,high,750956.0,3820,3820 2nd Floor Wall Framing,2
1029,12832,Peninsula,4562,high,1090397.0,4020,4020 Set Trusses,8
1030,12959,Marsh Island,5529,high,1221345.0,5220,5220 Solar Rough,1
1031,12673,Peninsula,5996,high,750956.0,5300,5300 Municipal Electric Inspection,1
1032,12649,Peninsula,5996,high,750956.0,5820,5820 Framing Inspection,1
1033,12832,Peninsula,4562,high,1090397.0,5940,5940 Order Cabinets,1
1034,12832,Peninsula,4562,high,1090397.0,5941,5941 Order Cabinet Hardware,1
1035,12451,Peninsula,5195,high,750956.0,8260,8260 Install Interior Railing,1
1036,13099,Arbor-Lyn,2616,medium,381426.0,9790,9790 Basement Blanket Insulation,1
1037,12649,Peninsula,5996,high,750956.0,10940,10940 Framing Retainage,1
1038,12671,Peninsula,5870,high,750956.0,5180,5180 Electric Rough,12
1039,12959,Marsh Island,5529,high,1221345.0,5260,5260 Mechanical Rough Inspection,1
1040,12959,Marsh Island,5529,high,1221345.0,5300,5300 Municipal Electric Inspection,1
1041,12959,Marsh Island,5529,high,1221345.0,5580,5580 Structured Wiring Rough,3
1042,12671,Peninsula,5870,high,750956.0,5740,5740 Install Gas Lines,1
1043,12671,Peninsula,5870,high,750956.0,5860,5860 Frame Stage Tour,1
1044,12649,Peninsula,5996,high,750956.0,6180,6180 Install Insulation,2
1045,13090,Marsh Island,5603,high,1154185.0,8420,8420 1st Paint,2
1046,13099,Arbor-Lyn,2616,medium,381426.0,9101,9101 HVAC Startup,23
1047,12850,Peninsula,5715,high,750956.0,3940,3940 3rd Floor Deck Framing,1
1048,12850,Peninsula,5715,high,750956.0,3980,3980 3rd Floor Wall Framing,2
1049,12671,Peninsula,5870,high,750956.0,4461,4461 Install Gas Lateral,1
1050,12959,Marsh Island,5529,high,1221345.0,5900,5900 Air Seal,1
1051,12451,Peninsula,5195,high,750956.0,7860,7860 Install Interior Trim,4
1052,12451,Peninsula,5195,high,750956.0,8300,8300 Install Cabinets,2
1053,12451,Peninsula,5195,high,750956.0,9540,9540 Rec. GE Appliance Pkg1 Allocation,1
1054,12451,Peninsula,5195,high,750956.0,9541,9541 Receive N/S Appliance Pkg 1,1
1055,12451,Peninsula,5195,high,750956.0,9620,9620 Install Appliances,1
1056,13099,Arbor-Lyn,2616,medium,381426.0,9820,9820 Install Gutters,1
1057,13099,Arbor-Lyn,2616,medium,381426.0,10300,10300 Install Driveway,1
1058,12959,Marsh Island,5529,high,1221345.0,4700,4700 Internal Framing Inspection,1
1059,12959,Marsh Island,5529,high,1221345.0,5820,5820 Framing Inspection,2
1060,12649,Peninsula,5996,high,750956.0,6300,6300 Energy Inspection,1
1061,12649,Peninsula,5996,high,750956.0,6345,6345 Stock Drywall,1
1062,12671,Peninsula,5870,high,750956.0,6390,6390 Schedule Gas Meter,1
1063,13090,Marsh Island,5603,high,1154185.0,7340,7340 Install Ceramic Tile,7
1064,13090,Marsh Island,5603,high,1154185.0,7350,7350 Install Shower Tile,23
1065,13090,Marsh Island,5603,high,1154185.0,7380,7380 Install Vinyl Floors,1
1066,13090,Marsh Island,5603,high,1154185.0,8020,8020 Receive Interior Railing,1
1067,13090,Marsh Island,5603,high,1154185.0,8220,8220 Install Fireplace Surround/Mantel,10
1068,12451,Peninsula,5195,high,750956.0,8380,8380 Template Countertops,1
1069,12451,Peninsula,5195,high,750956.0,8381,8381 Template Laminate Countertops,1
1070,13099,Arbor-Lyn,2616,medium,381426.0,10380,10380 As Built Survey,8
1071,12649,Peninsula,5996,high,750956.0,3140,3140 Pour Porch Slab,1
1072,12850,Peninsula,5715,high,750956.0,4020,4020 Set Trusses,3
1073,13090,Marsh Island,5603,high,1154185.0,4981,4981 Deliver Sinks,1
1074,12649,Peninsula,5996,high,750956.0,6380,6380 Install Drywall,14
1075,12649,Peninsula,5996,high,750956.0,6620,6620 Receive Vinyl Siding,1
1076,12649,Peninsula,5996,high,750956.0,6660,6660 Receive Fiber Cement Siding,1
1077,12649,Peninsula,5996,high,750956.0,6700,6700 Receive Composite Ext Trim,1
1078,12649,Peninsula,5996,high,750956.0,6720,6720 Receive Siding Accents,1
1079,12649,Peninsula,5996,high,750956.0,6740,6740 Receive PVC Exterior Trim,1
1080,12649,Peninsula,5996,high,750956.0,6781,6781 Receive Column Wrap/Flower Bx/Pediment,1
1081,12649,Peninsula,5996,high,750956.0,6820,6820 Receive Deck Skirting,1
1082,13090,Marsh Island,5603,high,1154185.0,7300,7300 Receive Interior Trim,1
1083,13090,Marsh Island,5603,high,1154185.0,7304,7304 Receive Goodie Box,1
1084,13090,Marsh Island,5603,high,1154185.0,7700,7700 Receive Interior Doors,1
1085,13099,Arbor-Lyn,2616,medium,381426.0,7861,7861 Interior Trim Punch,17
1086,13090,Marsh Island,5603,high,1154185.0,7862,7862 Receive Cabinet Hardware Allocation,1
1087,13090,Marsh Island,5603,high,1154185.0,7865,7865 Receive Door Hardware Allocation,1
1088,13090,Marsh Island,5603,high,1154185.0,7866,7866 Receive Door Hardware,1
1089,13090,Marsh Island,5603,high,1154185.0,7900,7900 Receive Cabinets Allocation,1
1090,13090,Marsh Island,5603,high,1154185.0,7901,7901 Cabinet Delivery Charges,1
1091,13090,Marsh Island,5603,high,1154185.0,7940,7940 Receive Vanity Tops,1
1092,13090,Marsh Island,5603,high,1154185.0,8260,8260 Install Interior Railing,1
1093,12959,Marsh Island,5529,high,1221345.0,10940,10940 Framing Retainage,1
1094,13240,Peninsula Lakes,1984,low,616419.0,0,00000 START,1
1095,13240,Peninsula Lakes,1984,low,616419.0,1,1 START  CONSTRUCTION,1
1096,13240,Peninsula Lakes,1984,low,616419.0,252,252 Site Plan,1
1097,13240,Peninsula Lakes,1984,low,616419.0,260,260 Plan Review/Permit Allocation,0
1098,13240,Peninsula Lakes,1984,low,616419.0,900,900 Bldg Stakeout,1
1099,13240,Peninsula Lakes,1984,low,616419.0,901,901 Engineering Allocation,0
1100,13240,Peninsula Lakes,1984,low,616419.0,980,980 Install Silt Fence,1
1101,13240,Peninsula Lakes,1984,low,616419.0,1020,1020 Install Construction Entrance,1
1102,13240,Peninsula Lakes,1984,low,616419.0,1060,1060 Foundation Excavation,1
1103,13240,Peninsula Lakes,1984,low,616419.0,1181,1181 Pump Truck Allowance,1
1104,13240,Peninsula Lakes,1984,low,616419.0,1780,1780 Order Steel,1
1105,13240,Peninsula Lakes,1984,low,616419.0,2230,2230 Receive Dumpster Allocation,1
1106,13240,Peninsula Lakes,1984,low,616419.0,2240,2240 Receive Portable Toilet Allocation,1
1107,12959,Marsh Island,5529,high,1221345.0,6180,6180 Install Insulation,2
1108,12649,Peninsula,5996,high,750956.0,6860,6860 Siding Installation,20
1109,13090,Marsh Island,5603,high,1154185.0,7860,7860 Install Interior Trim,4
1110,13240,Peninsula Lakes,1984,low,616419.0,9860,9860 Final Utility Connection,0
1111,13240,Peninsula Lakes,1984,low,616419.0,1100,1100 Form Footings,1
1112,13240,Peninsula Lakes,1984,low,616419.0,1140,1140 Footing Inspection,1
1113,13240,Peninsula Lakes,1984,low,616419.0,1180,1180 Pour Footings,1
1114,12832,Peninsula,4562,high,1090397.0,4775,4775 Receive Hardwood Stairs,1
1115,13240,Peninsula Lakes,1984,low,616419.0,8500,8500 Order Appliance Pkg 1,1
1116,13240,Peninsula Lakes,1984,low,616419.0,9750,9750 Order Appliance Pkg 2,1
1117,13099,Arbor-Lyn,2616,medium,381426.0,10020,10020 Final Grade,9
1118,13240,Peninsula Lakes,1984,low,616419.0,1190,1190 Capillary Break,1
1119,13240,Peninsula Lakes,1984,low,616419.0,1195,1195 Pin Footings,1
1120,12850,Peninsula,5715,high,750956.0,4380,4380 Roof Sheathing,3
1121,12850,Peninsula,5715,high,750956.0,4460,4460 Schedule Gas Lateral Contractor,1
1122,12959,Marsh Island,5529,high,1221345.0,6300,6300 Energy Inspection,1
1123,12959,Marsh Island,5529,high,1221345.0,6345,6345 Stock Drywall,1
1124,13099,Arbor-Lyn,2616,medium,381426.0,9990,9990 2nd Stage Termite Treatment,1
1125,13240,Peninsula Lakes,1984,low,616419.0,1580,1580 Form Foundation Walls,1
1126,13240,Peninsula Lakes,1984,low,616419.0,1820,1820 Foundation Wall Inspection,1
1127,13240,Peninsula Lakes,1984,low,616419.0,1860,1860 Foundation Wall Pour,1
1128,12832,Peninsula,4562,high,1090397.0,4380,4380 Roof Sheathing,3
1129,12959,Marsh Island,5529,high,1221345.0,6380,6380 Install Drywall,14
1130,12959,Marsh Island,5529,high,1221345.0,6620,6620 Receive Vinyl Siding,2
1131,12959,Marsh Island,5529,high,1221345.0,6721,6721 Receive Brackets,1
1132,12959,Marsh Island,5529,high,1221345.0,6781,6781 Receive Column Wrap/Flower Bx/Pediment,1
1133,13090,Marsh Island,5603,high,1154185.0,8300,8300 Install Cabinets,2
1134,12451,Peninsula,5195,high,750956.0,8460,8460 Install Countertops,1
1135,13090,Marsh Island,5603,high,1154185.0,9540,9540 Rec. GE Appliance Pkg1 Allocation,9
1136,13090,Marsh Island,5603,high,1154185.0,9541,9541 Receive N/S Appliance Pkg 1,30
1137,13090,Marsh Island,5603,high,1154185.0,9620,9620 Install Appliances,1
1138,13240,Peninsula Lakes,1984,low,616419.0,1900,1900 Strip Foundation Forms,1
1139,13090,Marsh Island,5603,high,1154185.0,4542,4542 Measure/Order Window Coverings,4
1140,12671,Peninsula,5870,high,750956.0,4665,4665 Elevator Rough,2
1141,12649,Peninsula,5996,high,750956.0,5177,5177 Electric Meter Connection,16
1142,12673,Peninsula,5996,high,750956.0,5900,5900 Air Seal,1
1143,12959,Marsh Island,5529,high,1221345.0,6660,6660 Receive Fiber Cement Siding,1
1144,12959,Marsh Island,5529,high,1221345.0,6700,6700 Receive Composite Ext Trim,1
1145,12959,Marsh Island,5529,high,1221345.0,6720,6720 Receive Siding Accents,1
1146,12959,Marsh Island,5529,high,1221345.0,6740,6740 Receive PVC Exterior Trim,1
1147,12959,Marsh Island,5529,high,1221345.0,6820,6820 Receive Deck Skirting,1
1148,13090,Marsh Island,5603,high,1154185.0,10460,10460 Drywall Touch Up,2
1149,12451,Peninsula,5195,high,750956.0,10460,10460 Drywall Touch Up,1
1150,12649,Peninsula,5996,high,750956.0,0,GrillOrd Order Grill/Firebox,1
1151,13092,Marlin Chase,2079,medium,433351.0,0,00000 START,1
1152,13092,Marlin Chase,2079,medium,433351.0,252,252 Site Plan,1
1153,13092,Marlin Chase,2079,medium,433351.0,260,260 Plan Review/Permit Allocation,0
1154,13092,Marlin Chase,2079,medium,433351.0,901,901 Engineering Allocation,0
1155,13092,Marlin Chase,2079,medium,433351.0,1181,1181 Pump Truck Allowance,1
1156,13240,Peninsula Lakes,1984,low,616419.0,1940,1940 Install Perimeter Drain/Croc,1
1157,13240,Peninsula Lakes,1984,low,616419.0,2060,2060 Waterproof Foundation Walls,1
1158,13092,Marlin Chase,2079,medium,433351.0,2230,2230 Receive Dumpster Allocation,1
1159,13092,Marlin Chase,2079,medium,433351.0,2240,2240 Receive Portable Toilet Allocation,1
1160,12850,Peninsula,5715,high,750956.0,4100,4100 Exterior Deck Framing,1
1161,12832,Peninsula,4562,high,1090397.0,4300,4300 Receive Window/Door Flashings,1
1162,12832,Peninsula,4562,high,1090397.0,4340,4340 Receive Exterior Doors,1
1163,12832,Peninsula,4562,high,1090397.0,4390,4390 Receive Roofing Material,1
1164,12850,Peninsula,5715,high,750956.0,4390,4390 Receive Roofing Material,1
1165,12673,Peninsula,5996,high,750956.0,4700,4700 Internal Framing Inspection,1
1166,12673,Peninsula,5996,high,750956.0,5820,5820 Framing Inspection,1
1167,12959,Marsh Island,5529,high,1221345.0,6860,6860 Siding Installation,27
1168,13090,Marsh Island,5603,high,1154185.0,8380,8380 Template Countertops,1
1169,13092,Marlin Chase,2079,medium,433351.0,8500,8500 Order Appliance Pkg 1,1
1170,13092,Marlin Chase,2079,medium,433351.0,9750,9750 Order Appliance Pkg 2,1
1171,13092,Marlin Chase,2079,medium,433351.0,9860,9860 Final Utility Connection,0
1172,12451,Peninsula,5195,high,750956.0,10500,10500 Paint 2,2
1173,13240,Peninsula Lakes,1984,low,616419.0,3020,3020 Termite & Pest PreTreatment,1
1174,13240,Peninsula Lakes,1984,low,616419.0,3060,3060 Foundation Insulation-Crawl,1
1175,12850,Peninsula,5715,high,750956.0,4071,4071 Receive Exterior Decking,1
1176,12832,Peninsula,4562,high,1090397.0,4071,4071 Receive Exterior Decking,1
1177,12832,Peninsula,4562,high,1090397.0,4100,4100 Exterior Deck Framing,1
1178,12832,Peninsula,4562,high,1090397.0,4260,4260 Receive Windows,1
1179,12832,Peninsula,4562,high,1090397.0,4580,4580 Install Roofing,2
1180,12850,Peninsula,5715,high,750956.0,4580,4580 Install Roofing,7
1181,12673,Peninsula,5996,high,750956.0,5177,5177 Electric Meter Connection,1
1182,12451,Peninsula,5195,high,750956.0,8465,8465 Install Tiled Backsplash,1
1183,13090,Marsh Island,5603,high,1154185.0,9140,9140 2nd Stage Air Seal,1
1184,13090,Marsh Island,5603,high,1154185.0,9820,9820 Install Gutters,11
1185,13090,Marsh Island,5603,high,1154185.0,10500,10500 Paint 2,55
1186,12673,Peninsula,5996,high,750956.0,10940,10940 Framing Retainage,1
1187,12832,Peninsula,4562,high,1090397.0,4540,4540 Install Windows,1
1188,12832,Peninsula,4562,high,1090397.0,4701,4701 Frame Check,1
1189,12850,Peninsula,5715,high,750956.0,4775,4775 Receive Hardwood Stairs,1
1190,12959,Marsh Island,5529,high,1221345.0,5177,5177 Electric Meter Connection,28
1191,13240,Peninsula Lakes,1984,low,616419.0,5940,5940 Order Cabinets,1
1192,13240,Peninsula Lakes,1984,low,616419.0,5941,5941 Order Cabinet Hardware,1
1193,13090,Marsh Island,5603,high,1154185.0,9460,9460 Attic Insulation,4
1194,12832,Peninsula,4562,high,1090397.0,140,140 Framing DRAW 2,1
1195,13240,Peninsula Lakes,1984,low,616419.0,2260,2260 Crawl Stone/Sand,1
1196,13240,Peninsula Lakes,1984,low,616419.0,2340,2340 Backfill & Compact,1
1197,12850,Peninsula,5715,high,750956.0,4585,4585 Install Membrane Roofing,3
1198,12832,Peninsula,4562,high,1090397.0,4585,4585 Install Membrane Roofing,1
1199,12832,Peninsula,4562,high,1090397.0,4591,4591 Install Metal Roof Flashing,1
1200,12850,Peninsula,5715,high,750956.0,4591,4591 Install Metal Roof Flashing,14
1201,12671,Peninsula,5870,high,750956.0,5580,5580 Structured Wiring Rough,2
1202,12832,Peninsula,4562,high,1090397.0,5825,5825 Frame Punch,1
1203,12673,Peninsula,5996,high,750956.0,6180,6180 Install Insulation,2
1204,12832,Peninsula,4562,high,1090397.0,3,3 TRADES START,1
1205,13240,Peninsula Lakes,1984,low,616419.0,2344,2344 Meter Pit Install,1
1206,13240,Peninsula Lakes,1984,low,616419.0,2440,2440 Receive Steel,1
1207,13240,Peninsula Lakes,1984,low,616419.0,2700,2700 Pour Garage Slab,16
1208,12671,Peninsula,5870,high,750956.0,5260,5260 Mechanical Rough Inspection,1
1209,12671,Peninsula,5870,high,750956.0,5900,5900 Air Seal,1
1210,12649,Peninsula,5996,high,750956.0,9140,9140 2nd Stage Air Seal,2
1211,12993,Peninsula,5996,high,750956.0,0,00000 START,1
1212,13035,Forest Hills,4024,medium,816522.0,0,00000 START,1
1213,13408,NewMarket,3940,medium,889253.0,0,00000 START,1
1214,13035,Forest Hills,4024,medium,816522.0,1,1 START  CONSTRUCTION,1
1215,12993,Peninsula,5996,high,750956.0,1,1 START  CONSTRUCTION,1
1216,13240,Peninsula Lakes,1984,low,616419.0,2,2 FRAMING START,1
1217,12993,Peninsula,5996,high,750956.0,252,252 Site Plan,1
1218,13035,Forest Hills,4024,medium,816522.0,252,252 Site Plan,1
1219,13408,NewMarket,3940,medium,889253.0,252,252 Site Plan,1
1220,13408,NewMarket,3940,medium,889253.0,260,260 Plan Review/Permit Allocation,0
1221,13035,Forest Hills,4024,medium,816522.0,260,260 Plan Review/Permit Allocation,0
1222,12993,Peninsula,5996,high,750956.0,260,260 Plan Review/Permit Allocation,0
1223,13035,Forest Hills,4024,medium,816522.0,860,860 Clear Lot,2
1224,12993,Peninsula,5996,high,750956.0,900,900 Bldg Stakeout,1
1225,12993,Peninsula,5996,high,750956.0,901,901 Engineering Allocation,0
1226,13035,Forest Hills,4024,medium,816522.0,901,901 Engineering Allocation,0
1227,13408,NewMarket,3940,medium,889253.0,901,901 Engineering Allocation,0
1228,12993,Peninsula,5996,high,750956.0,980,980 Install Silt Fence,1
1229,12993,Peninsula,5996,high,750956.0,1020,1020 Install Construction Entrance,1
1230,13035,Forest Hills,4024,medium,816522.0,1020,1020 Install Construction Entrance,1
1231,13035,Forest Hills,4024,medium,816522.0,1181,1181 Pump Truck Allowance,1
1232,12993,Peninsula,5996,high,750956.0,1181,1181 Pump Truck Allowance,1
1233,13408,NewMarket,3940,medium,889253.0,1181,1181 Pump Truck Allowance,1
1234,12993,Peninsula,5996,high,750956.0,1780,1780 Order Steel,1
1235,13408,NewMarket,3940,medium,889253.0,2040,2040 Foundation Inspection,1
1236,13408,NewMarket,3940,medium,889253.0,2230,2230 Receive Dumpster Allocation,1
1237,12993,Peninsula,5996,high,750956.0,2230,2230 Receive Dumpster Allocation,1
1238,13035,Forest Hills,4024,medium,816522.0,2230,2230 Receive Dumpster Allocation,1
1239,13035,Forest Hills,4024,medium,816522.0,2240,2240 Receive Portable Toilet Allocation,1
1240,12993,Peninsula,5996,high,750956.0,2240,2240 Receive Portable Toilet Allocation,1
1241,13408,NewMarket,3940,medium,889253.0,2240,2240 Receive Portable Toilet Allocation,1
1242,13240,Peninsula Lakes,1984,low,616419.0,2460,2460 Receive Lumber Drop #1,1
1243,13240,Peninsula Lakes,1984,low,616419.0,2540,2540 Receive 1st Floor Joists,1
1244,13240,Peninsula Lakes,1984,low,616419.0,3540,3540 Receive Lumber Drop #2,1
1245,13240,Peninsula Lakes,1984,low,616419.0,3900,3900 Receive Lumber Drop #3,1
1246,12649,Peninsula,5996,high,750956.0,4590,4590 Install Metal Roofing,15
1247,12671,Peninsula,5870,high,750956.0,4700,4700 Internal Framing Inspection,1
1248,12671,Peninsula,5870,high,750956.0,5300,5300 Municipal Electric Inspection,1
1249,12649,Peninsula,5996,high,750956.0,6391,6391 Install Gas Meter,4
1250,12649,Peninsula,5996,high,750956.0,7060,7060 Exterior Masonry Installation,36
1251,13408,NewMarket,3940,medium,889253.0,7185,7185 Install Exterior Metal Railings,0
1252,12649,Peninsula,5996,high,750956.0,7220,7220 Install Deck Skirting/Flower Boxes,1
1253,13090,Marsh Island,5603,high,1154185.0,8460,8460 Install Countertops,1
1254,12993,Peninsula,5996,high,750956.0,8500,8500 Order Appliance Pkg 1,1
1255,13408,NewMarket,3940,medium,889253.0,8500,8500 Order Appliance Pkg 1,1
1256,13035,Forest Hills,4024,medium,816522.0,8500,8500 Order Appliance Pkg 1,1
1257,12451,Peninsula,5195,high,750956.0,8920,8920 Install Water Heater,1
1258,12451,Peninsula,5195,high,750956.0,8940,8940 Plumbing Trim,1
1259,12451,Peninsula,5195,high,750956.0,9100,9100 HVAC Trim / Set Unit,1
1260,12993,Peninsula,5996,high,750956.0,9750,9750 Order Appliance Pkg 2,1
1261,13035,Forest Hills,4024,medium,816522.0,9750,9750 Order Appliance Pkg 2,1
1262,13408,NewMarket,3940,medium,889253.0,9750,9750 Order Appliance Pkg 2,1
1263,13035,Forest Hills,4024,medium,816522.0,9860,9860 Final Utility Connection,0
1264,12993,Peninsula,5996,high,750956.0,9860,9860 Final Utility Connection,0
1265,13099,Arbor-Lyn,2616,medium,381426.0,10100,10100 Irrigation Installation,8
1266,12649,Peninsula,5996,high,750956.0,10110,10110 Hardscape Installation,5
1267,12993,Peninsula,5996,high,750956.0,1100,1100 Form Footings,1
1268,12993,Peninsula,5996,high,750956.0,1140,1140 Footing Inspection,1
1269,12993,Peninsula,5996,high,750956.0,1180,1180 Pour Footings,1
1270,13240,Peninsula Lakes,1984,low,616419.0,3100,3100 Foundation Survey,1
1271,13240,Peninsula Lakes,1984,low,616419.0,3300,3300 1st Floor Deck Framing,1
1272,13240,Peninsula Lakes,1984,low,616419.0,3380,3380 1st Floor Wall Framing,1
1273,13240,Peninsula Lakes,1984,low,616419.0,4070,4070 Receive Exterior Deck Material,1
1274,12832,Peninsula,4562,high,1090397.0,5100,5100 HVAC Rough,3
1275,12832,Peninsula,4562,high,1090397.0,5120,5120 HVAC Set Furnace,1
1276,12850,Peninsula,5715,high,750956.0,5940,5940 Order Cabinets,1
1277,12850,Peninsula,5715,high,750956.0,5941,5941 Order Cabinet Hardware,1
1278,12451,Peninsula,5195,high,750956.0,6940,6940 Install Elevator,1
1279,12649,Peninsula,5996,high,750956.0,7140,7140 Exterior Painting,46
1280,13099,Arbor-Lyn,2616,medium,381426.0,8580,8580 Install Shower Enclosures,15
1281,13090,Marsh Island,5603,high,1154185.0,8920,8920 Install Water Heater/1st Trim,10
1282,12451,Peninsula,5195,high,750956.0,9020,9020 Electric Trim,3
1283,12451,Peninsula,5195,high,750956.0,9110,9110 Gas Trim,1
1284,12959,Marsh Island,5529,high,1221345.0,9140,9140 2nd Stage Air Seal,1
1285,13090,Marsh Island,5603,high,1154185.0,10301,10301 Driveway Apron,23
1286,13090,Marsh Island,5603,high,1154185.0,10340,10340 Install Leadwalk & Comm. Sidewalk,21
1287,12671,Peninsula,5870,high,750956.0,10940,10940 Framing Retainage,1
1288,13099,Arbor-Lyn,2616,medium,381426.0,0,cabcheck Check Cabinets for Damage,1
1289,13240,Peninsula Lakes,1984,low,616419.0,100,100 Framing DRAW 1,3
1290,13035,Forest Hills,4024,medium,816522.0,980,980 Install Silt Fence,1
1291,12993,Peninsula,5996,high,750956.0,1190,1190 Capillary Break,1
1292,13240,Peninsula Lakes,1984,low,616419.0,3700,3700 Receive Trusses,1
1293,13240,Peninsula Lakes,1984,low,616419.0,4020,4020 Set Trusses,3
1294,13240,Peninsula Lakes,1984,low,616419.0,4230,4230 Receive Housewrap/Flashing,1
1295,13240,Peninsula Lakes,1984,low,616419.0,4460,4460 Schedule Gas Lateral Contractor,1
1296,12671,Peninsula,5870,high,750956.0,5820,5820 Framing Inspection,1
1297,12649,Peninsula,5996,high,750956.0,9260,9260 Structured Wiring Trim,1
1298,12451,Peninsula,5195,high,750956.0,9260,9260 Structured Wiring Trim,1
1299,13090,Marsh Island,5603,high,1154185.0,9380,9380 Install Irrigation Well,1
1300,12649,Peninsula,5996,high,750956.0,9460,9460 Attic Insulation,1
1301,13099,Arbor-Lyn,2616,medium,381426.0,9700,9700 Install Hardwood Flooring,1
1302,12451,Peninsula,5195,high,750956.0,9740,9740 Fireplace Start Up,1
1303,13408,NewMarket,3940,medium,889253.0,857,857 Rough Stake for Clearing,1
1304,12993,Peninsula,5996,high,750956.0,1580,1580 Form Foundation Walls,1
1305,12993,Peninsula,5996,high,750956.0,1820,1820 Foundation Wall Inspection,1
1306,12993,Peninsula,5996,high,750956.0,1860,1860 Foundation Wall Pour,1
1307,12671,Peninsula,5870,high,750956.0,6180,6180 Install Insulation,2
1308,12649,Peninsula,5996,high,750956.0,6340,6340 Install Overhead Door,38
1309,12649,Peninsula,5996,high,750956.0,8420,8420 1st Paint,1
1310,13090,Marsh Island,5603,high,1154185.0,8465,8465 Install Tiled Backsplash,2
1311,12451,Peninsula,5195,high,750956.0,9101,9101 HVAC Startup,24
1312,12649,Peninsula,5996,high,750956.0,9540,9540 Rec. GE Appliance Pkg1 Allocation,1
1313,12649,Peninsula,5996,high,750956.0,9541,9541 Receive N/S Appliance Pkg 1,14
1314,13099,Arbor-Lyn,2616,medium,381426.0,9660,9660 Install Carpet Flooring,1
1315,13090,Marsh Island,5603,high,1154185.0,0,vancheck Check Vanity Tops/Windows for Damage,1
1316,12993,Peninsula,5996,high,750956.0,1900,1900 Strip Foundation Forms,1
1317,12649,Peninsula,5996,high,750956.0,5120,5120 HVAC Set Furnace,12
1318,12649,Peninsula,5996,high,750956.0,7340,7340 Install Ceramic Tile,12
1319,12649,Peninsula,5996,high,750956.0,7350,7350 Install Shower Tile,12
1320,12649,Peninsula,5996,high,750956.0,7380,7380 Install Vinyl Floors,1
1321,12649,Peninsula,5996,high,750956.0,8020,8020 Receive Interior Railing,1
1322,12649,Peninsula,5996,high,750956.0,8220,8220 Install Fireplace Surround/Mantel,1
1323,13099,Arbor-Lyn,2616,medium,381426.0,8940,8940 Plumbing Trim,6
1324,12649,Peninsula,5996,high,750956.0,9360,9360 Receive Grill/Firebox,1
1325,13092,Marlin Chase,2079,medium,433351.0,1,1 START  CONSTRUCTION,1
1326,13092,Marlin Chase,2079,medium,433351.0,900,900 Bldg Stakeout,1
1327,13092,Marlin Chase,2079,medium,433351.0,980,980 Install Silt Fence,12
1328,13092,Marlin Chase,2079,medium,433351.0,1020,1020 Install Construction Entrance,2
1329,13092,Marlin Chase,2079,medium,433351.0,1780,1780 Order Steel,1
1330,12993,Peninsula,5996,high,750956.0,2340,2340 Backfill & Compact,1
1331,12993,Peninsula,5996,high,750956.0,2382,2382 Slab Insulation,1
1332,12993,Peninsula,5996,high,750956.0,3020,3020 Termite & Pest PreTreatment,1
1333,12850,Peninsula,5715,high,750956.0,4260,4260 Receive Windows,1
1334,12850,Peninsula,5715,high,750956.0,4300,4300 Receive Window/Door Flashings,1
1335,12850,Peninsula,5715,high,750956.0,4340,4340 Receive Exterior Doors,1
1336,13240,Peninsula Lakes,1984,low,616419.0,4380,4380 Roof Sheathing,1
1337,12832,Peninsula,4562,high,1090397.0,4940,4940 Install Fireplace,1
1338,12832,Peninsula,4562,high,1090397.0,4980,4980 Plumbing Rough,3
1339,12649,Peninsula,5996,high,750956.0,4981,4981 Deliver Sinks,1
1340,12671,Peninsula,5870,high,750956.0,6300,6300 Energy Inspection,1
1341,12673,Peninsula,5996,high,750956.0,6300,6300 Energy Inspection,1
1342,12671,Peninsula,5870,high,750956.0,6345,6345 Stock Drywall,1
1343,12673,Peninsula,5996,high,750956.0,6345,6345 Stock Drywall,1
1344,13099,Arbor-Lyn,2616,medium,381426.0,6381,6381 Drywall Punch,7
1345,12649,Peninsula,5996,high,750956.0,6884,6884 Measure Screen Porch Enclosure,1
1346,12832,Peninsula,4562,high,1090397.0,6900,6900 Schedule Septic Installation,1
1347,12649,Peninsula,5996,high,750956.0,7300,7300 Receive Interior Trim,1
1348,12649,Peninsula,5996,high,750956.0,7304,7304 Receive Goodie Box,1
1349,12649,Peninsula,5996,high,750956.0,7700,7700 Receive Interior Doors,1
1350,12649,Peninsula,5996,high,750956.0,7862,7862 Receive Cabinet Hardware Allocation,1
1351,12649,Peninsula,5996,high,750956.0,7865,7865 Receive Door Hardware Allocation,1
1352,12649,Peninsula,5996,high,750956.0,7866,7866 Receive Door Hardware,1
1353,12649,Peninsula,5996,high,750956.0,7900,7900 Receive Cabinets Allocation,1
1354,12649,Peninsula,5996,high,750956.0,7901,7901 Cabinet Delivery Charges,1
1355,12649,Peninsula,5996,high,750956.0,7940,7940 Receive Vanity Tops,1
1356,12649,Peninsula,5996,high,750956.0,8260,8260 Install Interior Railing,12
1357,13099,Arbor-Lyn,2616,medium,381426.0,8540,8540 Install Bath Accessories,1
1358,13099,Arbor-Lyn,2616,medium,381426.0,8545,8545 Install Mirrors,1
1359,13099,Arbor-Lyn,2616,medium,381426.0,8900,8900 Install Closet Shelving,1
1360,13099,Arbor-Lyn,2616,medium,381426.0,10260,10260 Install House Numbers,1
1361,13092,Marlin Chase,2079,medium,433351.0,1060,1060 Foundation Excavation,1
1362,12993,Peninsula,5996,high,750956.0,2344,2344 Meter Pit Install,1
1363,12993,Peninsula,5996,high,750956.0,3100,3100 Foundation Survey,1
1364,12671,Peninsula,5870,high,750956.0,3140,3140 Pour Porch Slab,1
1365,12673,Peninsula,5996,high,750956.0,3140,3140 Pour Porch Slab,1
1366,13240,Peninsula Lakes,1984,low,616419.0,4100,4100 Exterior Deck Framing,1
1367,12850,Peninsula,5715,high,750956.0,4540,4540 Install Windows,1
1368,12850,Peninsula,5715,high,750956.0,4701,4701 Frame Check,1
1369,12671,Peninsula,5870,high,750956.0,6380,6380 Install Drywall,12
1370,12673,Peninsula,5996,high,750956.0,6380,6380 Install Drywall,13
1371,12671,Peninsula,5870,high,750956.0,6620,6620 Receive Vinyl Siding,1
1372,12673,Peninsula,5996,high,750956.0,6620,6620 Receive Vinyl Siding,1
1373,12671,Peninsula,5870,high,750956.0,6660,6660 Receive Fiber Cement Siding,1
1374,12673,Peninsula,5996,high,750956.0,6660,6660 Receive Fiber Cement Siding,1
1375,12671,Peninsula,5870,high,750956.0,6700,6700 Receive Composite Ext Trim,1
1376,12673,Peninsula,5996,high,750956.0,6700,6700 Receive Composite Ext Trim,1
1377,12671,Peninsula,5870,high,750956.0,6720,6720 Receive Siding Accents,1
1378,12673,Peninsula,5996,high,750956.0,6720,6720 Receive Siding Accents,1
1379,12671,Peninsula,5870,high,750956.0,6725,6725 Receive Shutters,1
1380,12671,Peninsula,5870,high,750956.0,6740,6740 Receive PVC Exterior Trim,1
1381,12673,Peninsula,5996,high,750956.0,6740,6740 Receive PVC Exterior Trim,1
1382,12671,Peninsula,5870,high,750956.0,6781,6781 Receive Column Wrap/Flower Bx/Pediment,1
1383,12673,Peninsula,5996,high,750956.0,6781,6781 Receive Column Wrap/Flower Bx/Pediment,1
1384,12671,Peninsula,5870,high,750956.0,6820,6820 Receive Deck Skirting,1
1385,12673,Peninsula,5996,high,750956.0,6820,6820 Receive Deck Skirting,1
1386,12832,Peninsula,4562,high,1090397.0,9390,9390 Install Water Meter/Sewer Frame,1
1387,12832,Peninsula,4562,high,1090397.0,9900,9900 Water Lateral,1
1388,12832,Peninsula,4562,high,1090397.0,9905,9905 Sewer Lateral,1
1389,13408,NewMarket,3940,medium,889253.0,1,1 START  CONSTRUCTION,12
1390,12850,Peninsula,5715,high,750956.0,140,140 Framing DRAW 2,1
1391,13408,NewMarket,3940,medium,889253.0,860,860 Clear Lot,8
1392,13408,NewMarket,3940,medium,889253.0,1020,1020 Install Construction Entrance,6
1393,13092,Marlin Chase,2079,medium,433351.0,1100,1100 Form Footings,1
1394,13092,Marlin Chase,2079,medium,433351.0,1140,1140 Footing Inspection,1
1395,13092,Marlin Chase,2079,medium,433351.0,1180,1180 Pour Footings,1
1396,13408,NewMarket,3940,medium,889253.0,1780,1780 Order Steel,1
1397,12993,Peninsula,5996,high,750956.0,2020,2020 Install Underground Plumbing,4
1398,12850,Peninsula,5715,high,750956.0,5825,5825 Frame Punch,1
1399,12671,Peninsula,5870,high,750956.0,6860,6860 Siding Installation,27
1400,12673,Peninsula,5996,high,750956.0,6860,6860 Siding Installation,10
1401,12649,Peninsula,5996,high,750956.0,7180,7180 Install Exterior Railings,20
1402,13099,Arbor-Lyn,2616,medium,381426.0,7180,7180 Install Exterior Railings,9
1403,12649,Peninsula,5996,high,750956.0,8300,8300 Install Cabinets,3
1404,13090,Marsh Island,5603,high,1154185.0,9101,9101 HVAC Startup,60
1405,12649,Peninsula,5996,high,750956.0,9620,9620 Install Appliances,1
1406,12649,Peninsula,5996,high,750956.0,0,vancheck Check Vanity Tops/Windows for Damage,1
1407,12850,Peninsula,5715,high,750956.0,3,3 TRADES START,1
1408,13092,Marlin Chase,2079,medium,433351.0,1190,1190 Capillary Break,2
1409,12993,Peninsula,5996,high,750956.0,1980,1980 Install Underground Electric,1
1410,13240,Peninsula Lakes,1984,low,616419.0,4260,4260 Receive Windows,1
1411,13240,Peninsula Lakes,1984,low,616419.0,4300,4300 Receive Window/Door Flashings,1
1412,13240,Peninsula Lakes,1984,low,616419.0,4340,4340 Receive Exterior Doors,1
1413,13240,Peninsula Lakes,1984,low,616419.0,4390,4390 Receive Roofing Material,1
1414,12850,Peninsula,5715,high,750956.0,5100,5100 HVAC Rough,3
1415,12832,Peninsula,4562,high,1090397.0,5180,5180 Electric Rough,31
1416,12832,Peninsula,4562,high,1090397.0,5740,5740 Install Gas Lines,1
1417,12832,Peninsula,4562,high,1090397.0,5860,5860 Frame Stage Tour,1
1418,12649,Peninsula,5996,high,750956.0,7860,7860 Install Interior Trim,5
1419,13099,Arbor-Lyn,2616,medium,381426.0,10140,10140 Sod Installation,1
1420,13099,Arbor-Lyn,2616,medium,381426.0,10180,10180 Shrub Installation,1
1421,13035,Forest Hills,4024,medium,816522.0,900,900 Bldg Stakeout,1
1422,13092,Marlin Chase,2079,medium,433351.0,1195,1195 Pin Footings,1
1423,13092,Marlin Chase,2079,medium,433351.0,1580,1580 Form Foundation Walls,1
1424,13092,Marlin Chase,2079,medium,433351.0,1820,1820 Foundation Wall Inspection,1
1425,13092,Marlin Chase,2079,medium,433351.0,1860,1860 Foundation Wall Pour,1
1426,13240,Peninsula Lakes,1984,low,616419.0,4071,4071 Receive Exterior Decking,1
1427,12832,Peninsula,4562,high,1090397.0,4461,4461 Install Gas Lateral,1
1428,13240,Peninsula Lakes,1984,low,616419.0,4540,4540 Install Windows,1
1429,13240,Peninsula Lakes,1984,low,616419.0,4580,4580 Install Roofing,2
1430,13090,Marsh Island,5603,high,1154185.0,4590,4590 Install Metal Roofing,1
1431,13240,Peninsula Lakes,1984,low,616419.0,4701,4701 Frame Check,1
1432,13090,Marsh Island,5603,high,1154185.0,6391,6391 Install Gas Meter,3
1433,13090,Marsh Island,5603,high,1154185.0,6884,6884 Measure Screen Porch Enclosure,1
1434,13090,Marsh Island,5603,high,1154185.0,7180,7180 Install Exterior Railings,13
1435,13090,Marsh Island,5603,high,1154185.0,7220,7220 Install Deck Skirting/Flower Boxes,15
1436,12959,Marsh Island,5529,high,1221345.0,7350,7350 Install Shower Tile,5
1437,12959,Marsh Island,5529,high,1221345.0,7380,7380 Install Vinyl Floors,2
1438,12649,Peninsula,5996,high,750956.0,8380,8380 Template Countertops,4
1439,12649,Peninsula,5996,high,750956.0,8382,8382 Template Exterior Countertops,4
1440,13099,Arbor-Lyn,2616,medium,381426.0,9110,9110 Gas Trim,5
1441,12649,Peninsula,5996,high,750956.0,9820,9820 Install Gutters,11
1442,13101,Marlin Chase,2461,medium,682900.0,0,00000 START,1
1443,13101,Marlin Chase,2461,medium,682900.0,1,1 START  CONSTRUCTION,1
1444,13240,Peninsula Lakes,1984,low,616419.0,140,140 Framing DRAW 2,1
1445,13101,Marlin Chase,2461,medium,682900.0,252,252 Site Plan,1
1446,13101,Marlin Chase,2461,medium,682900.0,260,260 Plan Review/Permit Allocation,0
1447,13101,Marlin Chase,2461,medium,682900.0,900,900 Bldg Stakeout,1
1448,13101,Marlin Chase,2461,medium,682900.0,901,901 Engineering Allocation,0
1449,13101,Marlin Chase,2461,medium,682900.0,980,980 Install Silt Fence,7
1450,13101,Marlin Chase,2461,medium,682900.0,1020,1020 Install Construction Entrance,1
1451,13101,Marlin Chase,2461,medium,682900.0,1060,1060 Foundation Excavation,1
1452,13101,Marlin Chase,2461,medium,682900.0,1181,1181 Pump Truck Allowance,1
1453,13101,Marlin Chase,2461,medium,682900.0,1780,1780 Order Steel,1
1454,13092,Marlin Chase,2079,medium,433351.0,1900,1900 Strip Foundation Forms,1
1455,12993,Peninsula,5996,high,750956.0,2140,2140 Underground Plumbing Inspection,2
1456,13101,Marlin Chase,2461,medium,682900.0,2230,2230 Receive Dumpster Allocation,1
1457,13101,Marlin Chase,2461,medium,682900.0,2240,2240 Receive Portable Toilet Allocation,1
1458,13240,Peninsula Lakes,1984,low,616419.0,4582,4582 Install Temp Poly,1
1459,12959,Marsh Island,5529,high,1221345.0,4981,4981 Deliver Sinks,1
1460,13240,Peninsula Lakes,1984,low,616419.0,5825,5825 Frame Punch,1
1461,12959,Marsh Island,5529,high,1221345.0,6340,6340 Install Overhead Door,34
1462,12832,Peninsula,4562,high,1090397.0,6390,6390 Schedule Gas Meter,1
1463,13090,Marsh Island,5603,high,1154185.0,7140,7140 Exterior Painting,35
1464,12959,Marsh Island,5529,high,1221345.0,8420,8420 1st Paint,1
1465,13101,Marlin Chase,2461,medium,682900.0,8500,8500 Order Appliance Pkg 1,1
1466,13099,Arbor-Lyn,2616,medium,381426.0,8980,8980 Final Plumbing Inspection,5
1467,12959,Marsh Island,5529,high,1221345.0,9380,9380 Install Irrigation Well,1
1468,13101,Marlin Chase,2461,medium,682900.0,9750,9750 Order Appliance Pkg 2,1
1469,13101,Marlin Chase,2461,medium,682900.0,9860,9860 Final Utility Connection,0
1470,13099,Arbor-Lyn,2616,medium,381426.0,9980,9980 Final Cleaning,5
1471,13240,Peninsula Lakes,1984,low,616419.0,3,3 TRADES START,1
1472,13101,Marlin Chase,2461,medium,682900.0,1100,1100 Form Footings,2
1473,13092,Marlin Chase,2079,medium,433351.0,1940,1940 Install Perimeter Drain/Croc,2
1474,13092,Marlin Chase,2079,medium,433351.0,2060,2060 Waterproof Foundation Walls,2
1475,12993,Peninsula,5996,high,750956.0,2250,2250 Slab Prep,3
1476,12993,Peninsula,5996,high,750956.0,2420,2420 Slab Inspection,3
1477,12850,Peninsula,5715,high,750956.0,4940,4940 Install Fireplace,1
1478,12850,Peninsula,5715,high,750956.0,4980,4980 Plumbing Rough,3
1479,13240,Peninsula Lakes,1984,low,616419.0,5100,5100 HVAC Rough,2
1480,13240,Peninsula Lakes,1984,low,616419.0,5120,5120 HVAC Set Furnace,1
1481,12671,Peninsula,5870,high,750956.0,5177,5177 Electric Meter Connection,1
1482,12850,Peninsula,5715,high,750956.0,6900,6900 Schedule Septic Installation,1
1483,12959,Marsh Island,5529,high,1221345.0,7340,7340 Install Ceramic Tile,3
1484,12959,Marsh Island,5529,high,1221345.0,8020,8020 Receive Interior Railing,2
1485,12959,Marsh Island,5529,high,1221345.0,8220,8220 Install Fireplace Surround/Mantel,1
1486,13090,Marsh Island,5603,high,1154185.0,8579,8579 Template Shower Enclosure,1
1487,13099,Arbor-Lyn,2616,medium,381426.0,9060,9060 Final Electric Inspection,4
1488,12671,Peninsula,5870,high,750956.0,0,GrillOrd Order Grill/Firebox,1
1489,13101,Marlin Chase,2461,medium,682900.0,1140,1140 Footing Inspection,1
1490,13035,Forest Hills,4024,medium,816522.0,1140,1140 Footing Inspection,1
1491,13101,Marlin Chase,2461,medium,682900.0,1180,1180 Pour Footings,1
1492,13035,Forest Hills,4024,medium,816522.0,1180,1180 Pour Footings,1
1493,12993,Peninsula,5996,high,750956.0,2385,2385 Pour SOG Slab,3
1494,12993,Peninsula,5996,high,750956.0,2700,2700 Pour Garage Slab,3
1495,13092,Marlin Chase,2079,medium,433351.0,3020,3020 Termite & Pest PreTreatment,1
1496,13092,Marlin Chase,2079,medium,433351.0,3060,3060 Foundation Insulation-Crawl,2
1497,12959,Marsh Island,5529,high,1221345.0,7300,7300 Receive Interior Trim,1
1498,12959,Marsh Island,5529,high,1221345.0,7304,7304 Receive Goodie Box,1
1499,12959,Marsh Island,5529,high,1221345.0,7700,7700 Receive Interior Doors,1
1500,12959,Marsh Island,5529,high,1221345.0,7862,7862 Receive Cabinet Hardware Allocation,1
1501,12959,Marsh Island,5529,high,1221345.0,7866,7866 Receive Door Hardware,1
1502,12959,Marsh Island,5529,high,1221345.0,7900,7900 Receive Cabinets Allocation,1
1503,12959,Marsh Island,5529,high,1221345.0,7901,7901 Cabinet Delivery Charges,1
1504,12959,Marsh Island,5529,high,1221345.0,7940,7940 Receive Vanity Tops,1
1505,12959,Marsh Island,5529,high,1221345.0,8260,8260 Install Interior Railing,1
1506,12649,Peninsula,5996,high,750956.0,10460,10460 Drywall Touch Up,3
1507,13101,Marlin Chase,2461,medium,682900.0,1190,1190 Capillary Break,1
1508,13035,Forest Hills,4024,medium,816522.0,1190,1190 Capillary Break,1
1509,13101,Marlin Chase,2461,medium,682900.0,1195,1195 Pin Footings,1
1510,13035,Forest Hills,4024,medium,816522.0,1195,1195 Pin Footings,1
1511,13092,Marlin Chase,2079,medium,433351.0,2260,2260 Crawl Stone/Sand,4
1512,13092,Marlin Chase,2079,medium,433351.0,2340,2340 Backfill & Compact,1
1513,13240,Peninsula Lakes,1984,low,616419.0,4940,4940 Install Fireplace,1
1514,13240,Peninsula Lakes,1984,low,616419.0,4980,4980 Plumbing Rough,1
1515,13240,Peninsula Lakes,1984,low,616419.0,8820,8820 Schedule Irrigation Well,1
1516,12959,Marsh Island,5529,high,1221345.0,9460,9460 Attic Insulation,1
1517,12451,Peninsula,5195,high,750956.0,10300,10300 Install Driveway,1
1518,12451,Peninsula,5195,high,750956.0,10340,10340 Install Leadwalk & Comm. Sidewalk,1
1519,13099,Arbor-Lyn,2616,medium,381426.0,0,appcheck Check Appliances for Damage,1
1520,12993,Peninsula,5996,high,750956.0,2,2 FRAMING START,1
1521,13101,Marlin Chase,2461,medium,682900.0,1580,1580 Form Foundation Walls,1
1522,13101,Marlin Chase,2461,medium,682900.0,1820,1820 Foundation Wall Inspection,1
1523,13101,Marlin Chase,2461,medium,682900.0,1860,1860 Foundation Wall Pour,1
1524,13092,Marlin Chase,2079,medium,433351.0,2344,2344 Meter Pit Install,1
1525,12993,Peninsula,5996,high,750956.0,2440,2440 Receive Steel,1
1526,12993,Peninsula,5996,high,750956.0,2460,2460 Receive Lumber Drop #1,1
1527,13092,Marlin Chase,2079,medium,433351.0,2700,2700 Pour Garage Slab,4
1528,13092,Marlin Chase,2079,medium,433351.0,3100,3100 Foundation Survey,1
1529,12993,Peninsula,5996,high,750956.0,3140,3140 Pour Porch Slab,1
1530,12993,Peninsula,5996,high,750956.0,3540,3540 Receive Lumber Drop #2,1
1531,12993,Peninsula,5996,high,750956.0,3740,3740 Receive 2nd Floor Joists,1
1532,12993,Peninsula,5996,high,750956.0,3900,3900 Receive Lumber Drop #3,1
1533,12993,Peninsula,5996,high,750956.0,3990,3990 Receive 3nd Floor Joists,1
1534,13240,Peninsula Lakes,1984,low,616419.0,5180,5180 Electric Rough,9
1535,12850,Peninsula,5715,high,750956.0,5180,5180 Electric Rough,15
1536,13240,Peninsula Lakes,1984,low,616419.0,5740,5740 Install Gas Lines,4
1537,12850,Peninsula,5715,high,750956.0,5740,5740 Install Gas Lines,1
1538,12959,Marsh Island,5529,high,1221345.0,6391,6391 Install Gas Meter,1
1539,12959,Marsh Island,5529,high,1221345.0,6884,6884 Measure Screen Porch Enclosure,5
1540,12649,Peninsula,5996,high,750956.0,6940,6940 Install Elevator,29
1541,12959,Marsh Island,5529,high,1221345.0,7860,7860 Install Interior Trim,3
1542,12959,Marsh Island,5529,high,1221345.0,8579,8579 Template Shower Enclosure,1
1543,13240,Peninsula Lakes,1984,low,616419.0,9390,9390 Install Water Meter/Sewer Frame,32
1544,12850,Peninsula,5715,high,750956.0,9390,9390 Install Water Meter/Sewer Frame,7
1545,13099,Arbor-Lyn,2616,medium,381426.0,9740,9740 Fireplace Start Up,1
1546,13240,Peninsula Lakes,1984,low,616419.0,9900,9900 Water Lateral,32
1547,12850,Peninsula,5715,high,750956.0,9900,9900 Water Lateral,7
1548,13240,Peninsula Lakes,1984,low,616419.0,9905,9905 Sewer Lateral,32
1549,12850,Peninsula,5715,high,750956.0,9905,9905 Sewer Lateral,7
1550,12451,Peninsula,5195,high,750956.0,10020,10020 Final Grade,1
1551,12671,Peninsula,5870,high,750956.0,10110,10110 Hardscape Installation,5
1552,12451,Peninsula,5195,high,750956.0,10380,10380 As Built Survey,1
1553,12649,Peninsula,5996,high,750956.0,10500,10500 Paint 2,10
1554,13440,Marlin Chase,3067,medium,714189.0,0,00000 START,1
1555,13440,Marlin Chase,3067,medium,714189.0,1,1 START  CONSTRUCTION,1
1556,13092,Marlin Chase,2079,medium,433351.0,2,2 FRAMING START,1
1557,13440,Marlin Chase,3067,medium,714189.0,252,252 Site Plan,1
1558,13440,Marlin Chase,3067,medium,714189.0,260,260 Plan Review/Permit Allocation,0
1559,13440,Marlin Chase,3067,medium,714189.0,900,900 Bldg Stakeout,1
1560,13408,NewMarket,3940,medium,889253.0,900,900 Bldg Stakeout,1
1561,13440,Marlin Chase,3067,medium,714189.0,901,901 Engineering Allocation,0
1562,13440,Marlin Chase,3067,medium,714189.0,980,980 Install Silt Fence,1
1563,13408,NewMarket,3940,medium,889253.0,980,980 Install Silt Fence,1
1564,13440,Marlin Chase,3067,medium,714189.0,1020,1020 Install Construction Entrance,1
1565,13440,Marlin Chase,3067,medium,714189.0,1060,1060 Foundation Excavation,1
1566,13440,Marlin Chase,3067,medium,714189.0,1181,1181 Pump Truck Allowance,1
1567,13440,Marlin Chase,3067,medium,714189.0,1780,1780 Order Steel,1
1568,13035,Forest Hills,4024,medium,816522.0,1860,1860 Foundation Wall Pour,1
1569,13101,Marlin Chase,2461,medium,682900.0,1900,1900 Strip Foundation Forms,1
1570,13440,Marlin Chase,3067,medium,714189.0,2230,2230 Receive Dumpster Allocation,1
1571,13440,Marlin Chase,3067,medium,714189.0,2240,2240 Receive Portable Toilet Allocation,1
1572,13092,Marlin Chase,2079,medium,433351.0,2460,2460 Receive Lumber Drop #1,1
1573,13092,Marlin Chase,2079,medium,433351.0,2540,2540 Receive 1st Floor Joists,1
1574,12993,Peninsula,5996,high,750956.0,3380,3380 1st Floor Wall Framing,1
1575,13092,Marlin Chase,2079,medium,433351.0,3540,3540 Receive Lumber Drop #2,1
1576,12993,Peninsula,5996,high,750956.0,3700,3700 Receive Trusses,1
1577,13092,Marlin Chase,2079,medium,433351.0,3740,3740 Receive 2nd Floor Joists,1
1578,13092,Marlin Chase,2079,medium,433351.0,3900,3900 Receive Lumber Drop #3,1
1579,12993,Peninsula,5996,high,750956.0,4070,4070 Receive Exterior Deck Material,1
1580,12993,Peninsula,5996,high,750956.0,4460,4460 Schedule Gas Lateral Contractor,1
1581,12850,Peninsula,5715,high,750956.0,4461,4461 Install Gas Lateral,1
1582,12959,Marsh Island,5529,high,1221345.0,8300,8300 Install Cabinets,2
1583,13440,Marlin Chase,3067,medium,714189.0,8500,8500 Order Appliance Pkg 1,1
1584,12671,Peninsula,5870,high,750956.0,9140,9140 2nd Stage Air Seal,1
1585,13440,Marlin Chase,3067,medium,714189.0,9750,9750 Order Appliance Pkg 2,1
1586,13099,Arbor-Lyn,2616,medium,381426.0,9755,9755 Rec. GE Appliance Pkg2 Allocation,1
1587,12451,Peninsula,5195,high,750956.0,9820,9820 Install Gutters,1
1588,13440,Marlin Chase,3067,medium,714189.0,9860,9860 Final Utility Connection,14
1589,12451,Peninsula,5195,high,750956.0,10100,10100 Irrigation Installation,1
1590,13099,Arbor-Lyn,2616,medium,381426.0,10501,10501 Paint Retouch,1
1591,13099,Arbor-Lyn,2616,medium,381426.0,10620,10620 Punch Out Allocation,1
1592,13408,NewMarket,3940,medium,889253.0,1060,1060 Foundation Excavation,1
1593,13440,Marlin Chase,3067,medium,714189.0,1100,1100 Form Footings,1
1594,13440,Marlin Chase,3067,medium,714189.0,1140,1140 Footing Inspection,1
1595,13440,Marlin Chase,3067,medium,714189.0,1180,1180 Pour Footings,1
1596,13101,Marlin Chase,2461,medium,682900.0,1940,1940 Install Perimeter Drain/Croc,1
1597,13101,Marlin Chase,2461,medium,682900.0,2060,2060 Waterproof Foundation Walls,1
1598,12993,Peninsula,5996,high,750956.0,3780,3780 2nd Floor Deck Framing,1
1599,13092,Marlin Chase,2079,medium,433351.0,4070,4070 Receive Exterior Deck Material,1
1600,12850,Peninsula,5715,high,750956.0,6390,6390 Schedule Gas Meter,1
1601,12649,Peninsula,5996,high,750956.0,6885,6885 Install Screen Porch Enclosure,20
1602,12649,Peninsula,5996,high,750956.0,8579,8579 Template Shower Enclosure,5
1603,12673,Peninsula,5996,high,750956.0,9140,9140 2nd Stage Air Seal,1
1604,12671,Peninsula,5870,high,750956.0,9460,9460 Attic Insulation,28
1605,13099,Arbor-Lyn,2616,medium,381426.0,9500,9500 Blower Door/Ductblaster,20
1606,12959,Marsh Island,5529,high,1221345.0,9540,9540 Rec. GE Appliance Pkg1 Allocation,13
1607,12451,Peninsula,5195,high,750956.0,10140,10140 Sod Installation,1
1608,12451,Peninsula,5195,high,750956.0,10180,10180 Shrub Installation,1
1609,12649,Peninsula,5996,high,750956.0,0,cabcheck Check Cabinets for Damage,1
1610,12993,Peninsula,5996,high,750956.0,100,100 Framing DRAW 1,1
1611,13408,NewMarket,3940,medium,889253.0,1100,1100 Form Footings,4
1612,13440,Marlin Chase,3067,medium,714189.0,1190,1190 Capillary Break,1
1613,13440,Marlin Chase,3067,medium,714189.0,1195,1195 Pin Footings,1
1614,13035,Forest Hills,4024,medium,816522.0,1940,1940 Install Perimeter Drain/Croc,1
1615,13035,Forest Hills,4024,medium,816522.0,2060,2060 Waterproof Foundation Walls,1
1616,13035,Forest Hills,4024,medium,816522.0,2120,2120 Install Brick Foundation,2
1617,13101,Marlin Chase,2461,medium,682900.0,3020,3020 Termite & Pest PreTreatment,1
1618,13101,Marlin Chase,2461,medium,682900.0,3060,3060 Foundation Insulation-Crawl,1
1619,13092,Marlin Chase,2079,medium,433351.0,3300,3300 1st Floor Deck Framing,3
1620,12993,Peninsula,5996,high,750956.0,3820,3820 2nd Floor Wall Framing,2
1621,12673,Peninsula,5996,high,750956.0,4590,4590 Install Metal Roofing,1
1622,12993,Peninsula,5996,high,750956.0,4660,4660 Schedule Elevator Rough,1
1623,12673,Peninsula,5996,high,750956.0,6391,6391 Install Gas Meter,1
1624,12673,Peninsula,5996,high,750956.0,7060,7060 Exterior Masonry Installation,2
1625,12673,Peninsula,5996,high,750956.0,7220,7220 Install Deck Skirting/Flower Boxes,1
1626,12959,Marsh Island,5529,high,1221345.0,8380,8380 Template Countertops,1
1627,12649,Peninsula,5996,high,750956.0,8460,8460 Install Countertops,3
1628,12649,Peninsula,5996,high,750956.0,8462,8462 Install Exterior Countertops,2
1629,12649,Peninsula,5996,high,750956.0,9020,9020 Electric Trim,19
1630,12649,Peninsula,5996,high,750956.0,9100,9100 HVAC Trim / Set Unit,12
1631,12673,Peninsula,5996,high,750956.0,9460,9460 Attic Insulation,1
1632,12959,Marsh Island,5529,high,1221345.0,9820,9820 Install Gutters,17
1633,12673,Peninsula,5996,high,750956.0,9820,9820 Install Gutters,1
1634,13099,Arbor-Lyn,2616,medium,381426.0,9985,9985 Final Clean 2,1
1635,12451,Peninsula,5195,high,750956.0,9990,9990 2nd Stage Termite Treatment,1
1636,12673,Peninsula,5996,high,750956.0,10110,10110 Hardscape Installation,5
1637,12649,Peninsula,5996,high,750956.0,10300,10300 Install Driveway,2
1638,12649,Peninsula,5996,high,750956.0,10340,10340 Install Leadwalk & Comm. Sidewalk,2
1639,13099,Arbor-Lyn,2616,medium,381426.0,10420,10420 Powerwash,1
1640,12959,Marsh Island,5529,high,1221345.0,10460,10460 Drywall Touch Up,2
1641,13090,Marsh Island,5603,high,1154185.0,0,cabcheck Check Cabinets for Damage,1
1642,13440,Marlin Chase,3067,medium,714189.0,1580,1580 Form Foundation Walls,1
1643,13440,Marlin Chase,3067,medium,714189.0,1820,1820 Foundation Wall Inspection,1
1644,13440,Marlin Chase,3067,medium,714189.0,1860,1860 Foundation Wall Pour,1
1645,13035,Forest Hills,4024,medium,816522.0,3060,3060 Foundation Insulation-Crawl,2
1646,13092,Marlin Chase,2079,medium,433351.0,3700,3700 Receive Trusses,1
1647,13240,Peninsula Lakes,1984,low,616419.0,4461,4461 Install Gas Lateral,4
1648,12850,Peninsula,5715,high,750956.0,5860,5860 Frame Stage Tour,1
1649,12671,Peninsula,5870,high,750956.0,6340,6340 Install Overhead Door,34
1650,12673,Peninsula,5996,high,750956.0,7140,7140 Exterior Painting,1
1651,12671,Peninsula,5870,high,750956.0,8420,8420 1st Paint,1
1652,13099,Arbor-Lyn,2616,medium,381426.0,10660,10660 Quality Inspection,1
1653,12920,Peninsula,4116,high,1454538.0,0,00000 START,1
1654,12920,Peninsula,4116,high,1454538.0,1,1 START  CONSTRUCTION,1
1655,12920,Peninsula,4116,high,1454538.0,252,252 Site Plan,1
1656,12920,Peninsula,4116,high,1454538.0,260,260 Plan Review/Permit Allocation,0
1657,12920,Peninsula,4116,high,1454538.0,900,900 Bldg Stakeout,1
1658,12920,Peninsula,4116,high,1454538.0,901,901 Engineering Allocation,0
1659,12920,Peninsula,4116,high,1454538.0,980,980 Install Silt Fence,1
1660,12920,Peninsula,4116,high,1454538.0,1020,1020 Install Construction Entrance,1
1661,12920,Peninsula,4116,high,1454538.0,1181,1181 Pump Truck Allowance,1
1662,12920,Peninsula,4116,high,1454538.0,1780,1780 Order Steel,1
1663,13440,Marlin Chase,3067,medium,714189.0,1900,1900 Strip Foundation Forms,1
1664,12920,Peninsula,4116,high,1454538.0,2230,2230 Receive Dumpster Allocation,1
1665,12920,Peninsula,4116,high,1454538.0,2240,2240 Receive Portable Toilet Allocation,1
1666,13101,Marlin Chase,2461,medium,682900.0,2260,2260 Crawl Stone/Sand,1
1667,13101,Marlin Chase,2461,medium,682900.0,2340,2340 Backfill & Compact,1
1668,12993,Peninsula,5996,high,750956.0,3940,3940 3rd Floor Deck Framing,1
1669,12993,Peninsula,5996,high,750956.0,3980,3980 3rd Floor Wall Framing,2
1670,13092,Marlin Chase,2079,medium,433351.0,5940,5940 Order Cabinets,1
1671,13092,Marlin Chase,2079,medium,433351.0,5941,5941 Order Cabinet Hardware,1
1672,12673,Peninsula,5996,high,750956.0,6340,6340 Install Overhead Door,1
1673,12671,Peninsula,5870,high,750956.0,6391,6391 Install Gas Meter,1
1674,12959,Marsh Island,5529,high,1221345.0,7180,7180 Install Exterior Railings,2
1675,12673,Peninsula,5996,high,750956.0,7180,7180 Install Exterior Railings,1
1676,12671,Peninsula,5870,high,750956.0,7340,7340 Install Ceramic Tile,17
1677,12671,Peninsula,5870,high,750956.0,7350,7350 Install Shower Tile,28
1678,12671,Peninsula,5870,high,750956.0,7380,7380 Install Vinyl Floors,1
1679,12671,Peninsula,5870,high,750956.0,8020,8020 Receive Interior Railing,1
1680,12671,Peninsula,5870,high,750956.0,8220,8220 Install Fireplace Surround/Mantel,1
1681,12673,Peninsula,5996,high,750956.0,8420,8420 1st Paint,1
1682,12920,Peninsula,4116,high,1454538.0,8500,8500 Order Appliance Pkg 1,1
1683,12649,Peninsula,5996,high,750956.0,8920,8920 Install Water Heater/1st Trim,3
1684,12920,Peninsula,4116,high,1454538.0,9750,9750 Order Appliance Pkg 2,1
1685,12920,Peninsula,4116,high,1454538.0,9860,9860 Final Utility Connection,0
1686,12959,Marsh Island,5529,high,1221345.0,10500,10500 Paint 2,7
1687,12920,Peninsula,4116,high,1454538.0,1060,1060 Foundation Excavation,1
1688,12920,Peninsula,4116,high,1454538.0,1100,1100 Form Footings,6
1689,13035,Forest Hills,4024,medium,816522.0,1820,1820 Foundation Wall Inspection,1
1690,13440,Marlin Chase,3067,medium,714189.0,1940,1940 Install Perimeter Drain/Croc,1
1691,13440,Marlin Chase,3067,medium,714189.0,2060,2060 Waterproof Foundation Walls,1
1692,13101,Marlin Chase,2461,medium,682900.0,2344,2344 Meter Pit Install,1
1693,13101,Marlin Chase,2461,medium,682900.0,2700,2700 Pour Garage Slab,1
1694,13101,Marlin Chase,2461,medium,682900.0,3100,3100 Foundation Survey,1
1695,13092,Marlin Chase,2079,medium,433351.0,3380,3380 1st Floor Wall Framing,1
1696,12993,Peninsula,5996,high,750956.0,4230,4230 Receive Housewrap/Flashing,1
1697,13092,Marlin Chase,2079,medium,433351.0,4230,4230 Receive Housewrap/Flashing,1
1698,12671,Peninsula,5870,high,750956.0,4981,4981 Deliver Sinks,1
1699,13240,Peninsula Lakes,1984,low,616419.0,5860,5860 Frame Stage Tour,1
1700,13090,Marsh Island,5603,high,1154185.0,6885,6885 Install Screen Porch Enclosure,4
1701,12671,Peninsula,5870,high,750956.0,7300,7300 Receive Interior Trim,1
1702,12671,Peninsula,5870,high,750956.0,7304,7304 Receive Goodie Box,1
1703,12673,Peninsula,5996,high,750956.0,7340,7340 Install Ceramic Tile,3
1704,12673,Peninsula,5996,high,750956.0,7350,7350 Install Shower Tile,4
1705,12673,Peninsula,5996,high,750956.0,7380,7380 Install Vinyl Floors,1
1706,12671,Peninsula,5870,high,750956.0,7700,7700 Receive Interior Doors,1
1707,12671,Peninsula,5870,high,750956.0,7862,7862 Receive Cabinet Hardware Allocation,1
1708,12671,Peninsula,5870,high,750956.0,7865,7865 Receive Door Hardware Allocation,1
1709,12671,Peninsula,5870,high,750956.0,7866,7866 Receive Door Hardware,1
1710,12671,Peninsula,5870,high,750956.0,7900,7900 Receive Cabinets Allocation,1
1711,12671,Peninsula,5870,high,750956.0,7901,7901 Cabinet Delivery Charges,1
1712,12671,Peninsula,5870,high,750956.0,7940,7940 Receive Vanity Tops,1
1713,12673,Peninsula,5996,high,750956.0,8020,8020 Receive Interior Railing,1
1714,12673,Peninsula,5996,high,750956.0,8220,8220 Install Fireplace Surround/Mantel,1
1715,12671,Peninsula,5870,high,750956.0,8260,8260 Install Interior Railing,2
1716,12649,Peninsula,5996,high,750956.0,8540,8540 Install Bath Accessories,1
1717,12649,Peninsula,5996,high,750956.0,8545,8545 Install Mirrors,1
1718,12649,Peninsula,5996,high,750956.0,8580,8580 Install Shower Enclosures,9
1719,12649,Peninsula,5996,high,750956.0,8900,8900 Install Closet Shelving,1
1720,13099,Arbor-Lyn,2616,medium,381426.0,9940,9940 Final Inspection,5
1721,12649,Peninsula,5996,high,750956.0,10260,10260 Install House Numbers,1
1722,12649,Peninsula,5996,high,750956.0,10380,10380 As Built Survey,1
1723,12959,Marsh Island,5529,high,1221345.0,0,vancheck Check Vanity Tops/Windows for Damage,1
1724,13101,Marlin Chase,2461,medium,682900.0,2,2 FRAMING START,1
1725,13035,Forest Hills,4024,medium,816522.0,1060,1060 Foundation Excavation,1
1726,13408,NewMarket,3940,medium,889253.0,1140,1140 Footing Inspection,1
1727,13408,NewMarket,3940,medium,889253.0,1180,1180 Pour Footings,1
1728,13035,Forest Hills,4024,medium,816522.0,2260,2260 Crawl Stone/Sand,1
1729,13035,Forest Hills,4024,medium,816522.0,2340,2340 Backfill & Compact,1
1730,13101,Marlin Chase,2461,medium,682900.0,2440,2440 Receive Steel,1
1731,13092,Marlin Chase,2079,medium,433351.0,2440,2440 Receive Steel,1
1732,13101,Marlin Chase,2461,medium,682900.0,2460,2460 Receive Lumber Drop #1,1
1733,13101,Marlin Chase,2461,medium,682900.0,2540,2540 Receive 1st Floor Joists,2
1734,13440,Marlin Chase,3067,medium,714189.0,3020,3020 Termite & Pest PreTreatment,1
1735,13440,Marlin Chase,3067,medium,714189.0,3060,3060 Foundation Insulation-Crawl,1
1736,13101,Marlin Chase,2461,medium,682900.0,3540,3540 Receive Lumber Drop #2,1
1737,13101,Marlin Chase,2461,medium,682900.0,3740,3740 Receive 2nd Floor Joists,3
1738,13092,Marlin Chase,2079,medium,433351.0,3780,3780 2nd Floor Deck Framing,3
1739,13101,Marlin Chase,2461,medium,682900.0,3900,3900 Receive Lumber Drop #3,1
1740,12993,Peninsula,5996,high,750956.0,4020,4020 Set Trusses,3
1741,12671,Peninsula,5870,high,750956.0,5120,5120 HVAC Set Furnace,1
1742,12671,Peninsula,5870,high,750956.0,7860,7860 Install Interior Trim,6
1743,12673,Peninsula,5996,high,750956.0,8260,8260 Install Interior Railing,1
1744,12671,Peninsula,5870,high,750956.0,8300,8300 Install Cabinets,2
1745,12649,Peninsula,5996,high,750956.0,8465,8465 Install Tiled Backsplash,2
1746,13136,Marlin Chase,3170,medium,806102.0,900,900 Bldg Stakeout,1
1747,13408,NewMarket,3940,medium,889253.0,1190,1190 Capillary Break,1
1748,13408,NewMarket,3940,medium,889253.0,1195,1195 Pin Footings,1
1749,13440,Marlin Chase,3067,medium,714189.0,2260,2260 Crawl Stone/Sand,1
1750,13440,Marlin Chase,3067,medium,714189.0,2340,2340 Backfill & Compact,1
1751,13035,Forest Hills,4024,medium,816522.0,2344,2344 Meter Pit Install,1
1752,13101,Marlin Chase,2461,medium,682900.0,3300,3300 1st Floor Deck Framing,3
1753,13101,Marlin Chase,2461,medium,682900.0,4070,4070 Receive Exterior Deck Material,1
1754,12959,Marsh Island,5529,high,1221345.0,4590,4590 Install Metal Roofing,12
1755,12671,Peninsula,5870,high,750956.0,4590,4590 Install Metal Roofing,14
1756,12673,Peninsula,5996,high,750956.0,4981,4981 Deliver Sinks,1
1757,13240,Peninsula Lakes,1984,low,616419.0,5260,5260 Mechanical Rough Inspection,1
1758,13240,Peninsula Lakes,1984,low,616419.0,5580,5580 Structured Wiring Rough,1
1759,13240,Peninsula Lakes,1984,low,616419.0,6390,6390 Schedule Gas Meter,1
1760,12673,Peninsula,5996,high,750956.0,6884,6884 Measure Screen Porch Enclosure,1
1761,12671,Peninsula,5870,high,750956.0,7060,7060 Exterior Masonry Installation,37
1762,12959,Marsh Island,5529,high,1221345.0,7220,7220 Install Deck Skirting/Flower Boxes,1
1763,12671,Peninsula,5870,high,750956.0,7220,7220 Install Deck Skirting/Flower Boxes,1
1764,12673,Peninsula,5996,high,750956.0,7300,7300 Receive Interior Trim,1
1765,12673,Peninsula,5996,high,750956.0,7304,7304 Receive Goodie Box,1
1766,12673,Peninsula,5996,high,750956.0,7700,7700 Receive Interior Doors,1
1767,12673,Peninsula,5996,high,750956.0,7862,7862 Receive Cabinet Hardware Allocation,1
1768,12673,Peninsula,5996,high,750956.0,7865,7865 Receive Door Hardware Allocation,1
1769,12673,Peninsula,5996,high,750956.0,7866,7866 Receive Door Hardware,1
1770,12673,Peninsula,5996,high,750956.0,7900,7900 Receive Cabinets Allocation,1
1771,12673,Peninsula,5996,high,750956.0,7901,7901 Cabinet Delivery Charges,1
1772,12673,Peninsula,5996,high,750956.0,7940,7940 Receive Vanity Tops,1
1773,12959,Marsh Island,5529,high,1221345.0,8460,8460 Install Countertops,12
1774,12959,Marsh Island,5529,high,1221345.0,9020,9020 Electric Trim,22
1775,12959,Marsh Island,5529,high,1221345.0,9100,9100 HVAC Trim / Set Unit,17
1776,12959,Marsh Island,5529,high,1221345.0,9420,9420 Install Solar Panels,9
1777,13408,NewMarket,3940,medium,889253.0,1580,1580 Form Foundation Walls,2
1778,13035,Forest Hills,4024,medium,816522.0,1780,1780 Order Steel,1
1779,13440,Marlin Chase,3067,medium,714189.0,2700,2700 Pour Garage Slab,4
1780,13101,Marlin Chase,2461,medium,682900.0,3700,3700 Receive Trusses,3
1781,13240,Peninsula Lakes,1984,low,616419.0,5300,5300 Municipal Electric Inspection,1
1782,12993,Peninsula,5996,high,750956.0,5940,5940 Order Cabinets,1
1783,12993,Peninsula,5996,high,750956.0,5941,5941 Order Cabinet Hardware,1
1784,12959,Marsh Island,5529,high,1221345.0,7140,7140 Exterior Painting,26
1785,12671,Peninsula,5870,high,750956.0,8380,8380 Template Countertops,1
1786,12671,Peninsula,5870,high,750956.0,9540,9540 Rec. GE Appliance Pkg1 Allocation,1
1787,12671,Peninsula,5870,high,750956.0,0,vancheck Check Vanity Tops/Windows for Damage,1
1788,13020,Peninsula Lakes,2100,low,578095.0,0,00000 START,1
1789,13088,Forest Hills,3580,medium,222544.0,0,00000 START,1
1790,13088,Forest Hills,3580,medium,222544.0,1,1 START  CONSTRUCTION,1
1791,13020,Peninsula Lakes,2100,low,578095.0,1,1 START  CONSTRUCTION,11
1792,13440,Marlin Chase,3067,medium,714189.0,2,2 FRAMING START,7
1793,13092,Marlin Chase,2079,medium,433351.0,100,100 Framing DRAW 1,1
1794,13020,Peninsula Lakes,2100,low,578095.0,252,252 Site Plan,1
1795,13088,Forest Hills,3580,medium,222544.0,252,252 Site Plan,1
1796,13088,Forest Hills,3580,medium,222544.0,260,260 Plan Review/Permit Allocation,0
1797,13020,Peninsula Lakes,2100,low,578095.0,260,260 Plan Review/Permit Allocation,0
1798,13088,Forest Hills,3580,medium,222544.0,860,860 Clear Lot,2
1799,13020,Peninsula Lakes,2100,low,578095.0,900,900 Bldg Stakeout,1
1800,13020,Peninsula Lakes,2100,low,578095.0,901,901 Engineering Allocation,0
1801,13088,Forest Hills,3580,medium,222544.0,901,901 Engineering Allocation,0
1802,13088,Forest Hills,3580,medium,222544.0,1020,1020 Install Construction Entrance,1
1803,13088,Forest Hills,3580,medium,222544.0,1181,1181 Pump Truck Allowance,1
1804,13020,Peninsula Lakes,2100,low,578095.0,1181,1181 Pump Truck Allowance,1
1805,13020,Peninsula Lakes,2100,low,578095.0,1780,1780 Order Steel,1
1806,13088,Forest Hills,3580,medium,222544.0,1780,1780 Order Steel,1
1807,13088,Forest Hills,3580,medium,222544.0,2040,2040 Foundation Inspection,1
1808,13088,Forest Hills,3580,medium,222544.0,2230,2230 Receive Dumpster Allocation,1
1809,13020,Peninsula Lakes,2100,low,578095.0,2230,2230 Receive Dumpster Allocation,1
1810,13020,Peninsula Lakes,2100,low,578095.0,2240,2240 Receive Portable Toilet Allocation,1
1811,13088,Forest Hills,3580,medium,222544.0,2240,2240 Receive Portable Toilet Allocation,1
1812,13440,Marlin Chase,3067,medium,714189.0,2440,2440 Receive Steel,1
1813,13440,Marlin Chase,3067,medium,714189.0,2460,2460 Receive Lumber Drop #1,1
1814,13440,Marlin Chase,3067,medium,714189.0,2540,2540 Receive 1st Floor Joists,1
1815,13035,Forest Hills,4024,medium,816522.0,2700,2700 Pour Garage Slab,3
1816,13440,Marlin Chase,3067,medium,714189.0,3540,3540 Receive Lumber Drop #2,1
1817,13440,Marlin Chase,3067,medium,714189.0,3740,3740 Receive 2nd Floor Joists,1
1818,13092,Marlin Chase,2079,medium,433351.0,3820,3820 2nd Floor Wall Framing,1
1819,13440,Marlin Chase,3067,medium,714189.0,3900,3900 Receive Lumber Drop #3,1
1820,12993,Peninsula,5996,high,750956.0,4380,4380 Roof Sheathing,3
1821,12959,Marsh Island,5529,high,1221345.0,4542,4542 Measure/Order Window Coverings,1
1822,13240,Peninsula Lakes,1984,low,616419.0,5900,5900 Air Seal,1
1823,12673,Peninsula,5996,high,750956.0,7860,7860 Install Interior Trim,4
1824,13020,Peninsula Lakes,2100,low,578095.0,8500,8500 Order Appliance Pkg 1,1
1825,13088,Forest Hills,3580,medium,222544.0,8500,8500 Order Appliance Pkg 1,1
1826,13090,Marsh Island,5603,high,1154185.0,8545,8545 Install Mirrors,1
1827,12673,Peninsula,5996,high,750956.0,8579,8579 Template Shower Enclosure,1
1828,13090,Marsh Island,5603,high,1154185.0,9100,9100 HVAC Trim / Set Unit,1
1829,12649,Peninsula,5996,high,750956.0,9101,9101 HVAC Startup,2
1830,12671,Peninsula,5870,high,750956.0,9620,9620 Install Appliances,1
1831,13020,Peninsula Lakes,2100,low,578095.0,9750,9750 Order Appliance Pkg 2,1
1832,13088,Forest Hills,3580,medium,222544.0,9750,9750 Order Appliance Pkg 2,1
1833,13088,Forest Hills,3580,medium,222544.0,9860,9860 Final Utility Connection,0
1834,12649,Peninsula,5996,high,750956.0,10020,10020 Final Grade,14
1835,13090,Marsh Island,5603,high,1154185.0,10260,10260 Install House Numbers,1
1836,13090,Marsh Island,5603,high,1154185.0,10300,10300 Install Driveway,9
1837,13136,Marlin Chase,3170,medium,806102.0,0,00000 START,1
1838,13139,Marlin Chase,2554,medium,704067.0,0,00000 START,1
1839,13136,Marlin Chase,3170,medium,806102.0,1,1 START  CONSTRUCTION,1
1840,13139,Marlin Chase,2554,medium,704067.0,1,1 START  CONSTRUCTION,1
1841,13136,Marlin Chase,3170,medium,806102.0,252,252 Site Plan,1
1842,13139,Marlin Chase,2554,medium,704067.0,252,252 Site Plan,1
1843,13136,Marlin Chase,3170,medium,806102.0,260,260 Plan Review/Permit Allocation,0
1844,13139,Marlin Chase,2554,medium,704067.0,260,260 Plan Review/Permit Allocation,0
1845,13139,Marlin Chase,2554,medium,704067.0,900,900 Bldg Stakeout,1
1846,13136,Marlin Chase,3170,medium,806102.0,901,901 Engineering Allocation,0
1847,13139,Marlin Chase,2554,medium,704067.0,901,901 Engineering Allocation,0
1848,13136,Marlin Chase,3170,medium,806102.0,980,980 Install Silt Fence,1
1849,13139,Marlin Chase,2554,medium,704067.0,980,980 Install Silt Fence,13
1850,13136,Marlin Chase,3170,medium,806102.0,1020,1020 Install Construction Entrance,1
1851,13139,Marlin Chase,2554,medium,704067.0,1020,1020 Install Construction Entrance,1
1852,13136,Marlin Chase,3170,medium,806102.0,1060,1060 Foundation Excavation,1
1853,13139,Marlin Chase,2554,medium,704067.0,1060,1060 Foundation Excavation,1
1854,12920,Peninsula,4116,high,1454538.0,1140,1140 Footing Inspection,1
1855,12920,Peninsula,4116,high,1454538.0,1180,1180 Pour Footings,1
1856,13136,Marlin Chase,3170,medium,806102.0,1181,1181 Pump Truck Allowance,1
1857,13139,Marlin Chase,2554,medium,704067.0,1181,1181 Pump Truck Allowance,1
1858,13136,Marlin Chase,3170,medium,806102.0,1780,1780 Order Steel,1
1859,13139,Marlin Chase,2554,medium,704067.0,1780,1780 Order Steel,1
1860,13408,NewMarket,3940,medium,889253.0,1820,1820 Foundation Wall Inspection,3
1861,13035,Forest Hills,4024,medium,816522.0,2040,2040 Foundation Inspection,1
1862,13136,Marlin Chase,3170,medium,806102.0,2230,2230 Receive Dumpster Allocation,1
1863,13139,Marlin Chase,2554,medium,704067.0,2230,2230 Receive Dumpster Allocation,1
1864,13136,Marlin Chase,3170,medium,806102.0,2240,2240 Receive Portable Toilet Allocation,1
1865,13139,Marlin Chase,2554,medium,704067.0,2240,2240 Receive Portable Toilet Allocation,1
1866,13101,Marlin Chase,2461,medium,682900.0,3380,3380 1st Floor Wall Framing,1
1867,13092,Marlin Chase,2079,medium,433351.0,4020,4020 Set Trusses,3
1868,13440,Marlin Chase,3067,medium,714189.0,4070,4070 Receive Exterior Deck Material,1
1869,13101,Marlin Chase,2461,medium,682900.0,4460,4460 Schedule Gas Lateral Contractor,58
1870,13240,Peninsula Lakes,1984,low,616419.0,4700,4700 Internal Framing Inspection,1
1871,13101,Marlin Chase,2461,medium,682900.0,5940,5940 Order Cabinets,1
1872,13101,Marlin Chase,2461,medium,682900.0,5941,5941 Order Cabinet Hardware,1
1873,13136,Marlin Chase,3170,medium,806102.0,8500,8500 Order Appliance Pkg 1,1
1874,13139,Marlin Chase,2554,medium,704067.0,8500,8500 Order Appliance Pkg 1,1
1875,13136,Marlin Chase,3170,medium,806102.0,9750,9750 Order Appliance Pkg 2,1
1876,13139,Marlin Chase,2554,medium,704067.0,9750,9750 Order Appliance Pkg 2,1
1877,13139,Marlin Chase,2554,medium,704067.0,9860,9860 Final Utility Connection,0
1878,13088,Forest Hills,3580,medium,222544.0,900,900 Bldg Stakeout,1
1879,13088,Forest Hills,3580,medium,222544.0,980,980 Install Silt Fence,1
1880,13136,Marlin Chase,3170,medium,806102.0,1100,1100 Form Footings,1
1881,13139,Marlin Chase,2554,medium,704067.0,1100,1100 Form Footings,1
1882,13136,Marlin Chase,3170,medium,806102.0,1140,1140 Footing Inspection,1
1883,13139,Marlin Chase,2554,medium,704067.0,1140,1140 Footing Inspection,1
1884,13136,Marlin Chase,3170,medium,806102.0,1180,1180 Pour Footings,1
1885,13139,Marlin Chase,2554,medium,704067.0,1180,1180 Pour Footings,1
1886,13136,Marlin Chase,3170,medium,806102.0,1190,1190 Capillary Break,1
1887,12920,Peninsula,4116,high,1454538.0,1190,1190 Capillary Break,1
1888,13136,Marlin Chase,3170,medium,806102.0,1195,1195 Pin Footings,1
1889,13101,Marlin Chase,2461,medium,682900.0,3780,3780 2nd Floor Deck Framing,1
1890,13101,Marlin Chase,2461,medium,682900.0,4230,4230 Receive Housewrap/Flashing,1
1891,12850,Peninsula,5715,high,750956.0,5260,5260 Mechanical Rough Inspection,1
1892,13240,Peninsula Lakes,1984,low,616419.0,5820,5820 Framing Inspection,1
1893,13440,Marlin Chase,3067,medium,714189.0,5940,5940 Order Cabinets,1
1894,13440,Marlin Chase,3067,medium,714189.0,5941,5941 Order Cabinet Hardware,1
1895,12649,Peninsula,5996,high,750956.0,9110,9110 Gas Trim,1
1896,12671,Peninsula,5870,high,750956.0,9360,9360 Receive Grill/Firebox,0
1897,13240,Peninsula Lakes,1984,low,616419.0,10940,10940 Framing Retainage,1
1898,13101,Marlin Chase,2461,medium,682900.0,100,100 Framing DRAW 1,1
1899,13139,Marlin Chase,2554,medium,704067.0,1190,1190 Capillary Break,1
1900,13139,Marlin Chase,2554,medium,704067.0,1195,1195 Pin Footings,1
1901,13136,Marlin Chase,3170,medium,806102.0,1580,1580 Form Foundation Walls,9
1902,12920,Peninsula,4116,high,1454538.0,1580,1580 Form Foundation Walls,9
1903,13408,NewMarket,3940,medium,889253.0,1860,1860 Foundation Wall Pour,1
1904,13101,Marlin Chase,2461,medium,682900.0,3820,3820 2nd Floor Wall Framing,5
1905,12993,Peninsula,5996,high,750956.0,4100,4100 Exterior Deck Framing,1
1906,12993,Peninsula,5996,high,750956.0,4260,4260 Receive Windows,19
1907,12993,Peninsula,5996,high,750956.0,4300,4300 Receive Window/Door Flashings,19
1908,12993,Peninsula,5996,high,750956.0,4340,4340 Receive Exterior Doors,19
1909,12850,Peninsula,5715,high,750956.0,4700,4700 Internal Framing Inspection,1
1910,13240,Peninsula Lakes,1984,low,616419.0,6180,6180 Install Insulation,2
1911,12671,Peninsula,5870,high,750956.0,6884,6884 Measure Screen Porch Enclosure,1
1912,12673,Peninsula,5996,high,750956.0,8300,8300 Install Cabinets,2
1913,12671,Peninsula,5870,high,750956.0,8579,8579 Template Shower Enclosure,1
1914,12959,Marsh Island,5529,high,1221345.0,8920,8920 Install Water Heater/1st Trim,1
1915,12959,Marsh Island,5529,high,1221345.0,9101,9101 HVAC Startup,10
1916,12673,Peninsula,5996,high,750956.0,9540,9540 Rec. GE Appliance Pkg1 Allocation,1
1917,12673,Peninsula,5996,high,750956.0,9541,9541 Receive N/S Appliance Pkg 1,1
1918,12959,Marsh Island,5529,high,1221345.0,9620,9620 Install Appliances,7
1919,12673,Peninsula,5996,high,750956.0,9620,9620 Install Appliances,1
1920,12649,Peninsula,5996,high,750956.0,9700,9700 Install Hardwood Flooring,2
1921,12671,Peninsula,5870,high,750956.0,10460,10460 Drywall Touch Up,2
1922,13139,Marlin Chase,2554,medium,704067.0,1580,1580 Form Foundation Walls,8
1923,13408,NewMarket,3940,medium,889253.0,1900,1900 Strip Foundation Forms,5
1924,12993,Peninsula,5996,high,750956.0,4071,4071 Receive Exterior Decking,1
1925,13092,Marlin Chase,2079,medium,433351.0,4380,4380 Roof Sheathing,3
1926,12850,Peninsula,5715,high,750956.0,5300,5300 Municipal Electric Inspection,1
1927,12850,Peninsula,5715,high,750956.0,5580,5580 Structured Wiring Rough,1
1928,12850,Peninsula,5715,high,750956.0,5900,5900 Air Seal,1
1929,13090,Marsh Island,5603,high,1154185.0,8900,8900 Install Closet Shelving,1
1930,12959,Marsh Island,5529,high,1221345.0,9060,9060 Final Electric Inspection,1
1931,12850,Peninsula,5715,high,750956.0,10940,10940 Framing Retainage,1
1932,13035,Forest Hills,4024,medium,816522.0,2,2 FRAMING START,1
1933,13035,Forest Hills,4024,medium,816522.0,2440,2440 Receive Steel,1
1934,13035,Forest Hills,4024,medium,816522.0,2460,2460 Receive Lumber Drop #1,1
1935,13035,Forest Hills,4024,medium,816522.0,2540,2540 Receive 1st Floor Joists,1
1936,13035,Forest Hills,4024,medium,816522.0,3540,3540 Receive Lumber Drop #2,1
1937,13035,Forest Hills,4024,medium,816522.0,3740,3740 Receive 2nd Floor Joists,1
1938,13035,Forest Hills,4024,medium,816522.0,3900,3900 Receive Lumber Drop #3,1
1939,13440,Marlin Chase,3067,medium,714189.0,4230,4230 Receive Housewrap/Flashing,1
1940,12993,Peninsula,5996,high,750956.0,4775,4775 Receive Hardwood Stairs,1
1941,12959,Marsh Island,5529,high,1221345.0,6885,6885 Install Screen Porch Enclosure,1
1942,12671,Peninsula,5870,high,750956.0,7140,7140 Exterior Painting,40
1943,12671,Peninsula,5870,high,750956.0,7180,7180 Install Exterior Railings,15
1944,12673,Peninsula,5996,high,750956.0,8380,8380 Template Countertops,1
1945,12649,Peninsula,5996,high,750956.0,9990,9990 2nd Stage Termite Treatment,1
1946,12959,Marsh Island,5529,high,1221345.0,10300,10300 Install Driveway,10
1947,12671,Peninsula,5870,high,750956.0,10500,10500 Paint 2,23
1948,13092,Marlin Chase,2079,medium,433351.0,4260,4260 Receive Windows,1
1949,13092,Marlin Chase,2079,medium,433351.0,4300,4300 Receive Window/Door Flashings,1
1950,13092,Marlin Chase,2079,medium,433351.0,4340,4340 Receive Exterior Doors,1
1951,13092,Marlin Chase,2079,medium,433351.0,4390,4390 Receive Roofing Material,3
1952,13092,Marlin Chase,2079,medium,433351.0,4460,4460 Schedule Gas Lateral Contractor,1
1953,12993,Peninsula,5996,high,750956.0,4585,4585 Install Membrane Roofing,6
1954,12993,Peninsula,5996,high,750956.0,4591,4591 Install Metal Roof Flashing,23
1955,13440,Marlin Chase,3067,medium,714189.0,4777,4777 Receive Box Stairs,8
1956,13240,Peninsula Lakes,1984,low,616419.0,6620,6620 Receive Vinyl Siding,1
1957,13240,Peninsula Lakes,1984,low,616419.0,6700,6700 Receive Composite Ext Trim,1
1958,13240,Peninsula Lakes,1984,low,616419.0,6720,6720 Receive Siding Accents,1
1959,13240,Peninsula Lakes,1984,low,616419.0,6725,6725 Receive Shutters,1
1960,13240,Peninsula Lakes,1984,low,616419.0,6740,6740 Receive PVC Exterior Trim,1
1961,13240,Peninsula Lakes,1984,low,616419.0,6781,6781 Receive Column Wrap/Flower Bx/Pediment,1
1962,13240,Peninsula Lakes,1984,low,616419.0,6820,6820 Receive Deck Skirting,1
1963,12649,Peninsula,5996,high,750956.0,7861,7861 Interior Trim Punch,1
1964,12959,Marsh Island,5529,high,1221345.0,8465,8465 Install Tiled Backsplash,2
1965,12959,Marsh Island,5529,high,1221345.0,8545,8545 Install Mirrors,7
1966,12959,Marsh Island,5529,high,1221345.0,8580,8580 Install Shower Enclosures,14
1967,12649,Peninsula,5996,high,750956.0,8940,8940 Plumbing Trim,10
1968,12671,Peninsula,5870,high,750956.0,9100,9100 HVAC Trim / Set Unit,8
1969,12959,Marsh Island,5529,high,1221345.0,9990,9990 2nd Stage Termite Treatment,1
1970,13440,Marlin Chase,3067,medium,714189.0,3300,3300 1st Floor Deck Framing,1
1971,13092,Marlin Chase,2079,medium,433351.0,4071,4071 Receive Exterior Decking,1
1972,13092,Marlin Chase,2079,medium,433351.0,4100,4100 Exterior Deck Framing,1
1973,12993,Peninsula,5996,high,750956.0,4390,4390 Receive Roofing Material,1
1974,13092,Marlin Chase,2079,medium,433351.0,4540,4540 Install Windows,3
1975,13092,Marlin Chase,2079,medium,433351.0,4701,4701 Frame Check,1
1976,12850,Peninsula,5715,high,750956.0,5820,5820 Framing Inspection,1
1977,12649,Peninsula,5996,high,750956.0,6381,6381 Drywall Punch,1
1978,13240,Peninsula Lakes,1984,low,616419.0,6860,6860 Siding Installation,15
1979,12671,Peninsula,5870,high,750956.0,8460,8460 Install Countertops,1
1980,12959,Marsh Island,5529,high,1221345.0,8540,8540 Install Bath Accessories,1
1981,12959,Marsh Island,5529,high,1221345.0,8900,8900 Install Closet Shelving,1
1982,12649,Peninsula,5996,high,750956.0,9060,9060 Final Electric Inspection,10
1983,12959,Marsh Island,5529,high,1221345.0,9700,9700 Install Hardwood Flooring,9
1984,12649,Peninsula,5996,high,750956.0,9740,9740 Fireplace Start Up,1
1985,12959,Marsh Island,5529,high,1221345.0,10260,10260 Install House Numbers,1
1986,12959,Marsh Island,5529,high,1221345.0,0,cabcheck Check Cabinets for Damage,1
1987,13440,Marlin Chase,3067,medium,714189.0,3380,3380 1st Floor Wall Framing,1
1988,13440,Marlin Chase,3067,medium,714189.0,3700,3700 Receive Trusses,1
1989,13101,Marlin Chase,2461,medium,682900.0,4020,4020 Set Trusses,2
1990,13440,Marlin Chase,3067,medium,714189.0,4460,4460 Schedule Gas Lateral Contractor,10
1991,12993,Peninsula,5996,high,750956.0,4580,4580 Install Roofing,4
1992,13092,Marlin Chase,2079,medium,433351.0,4775,4775 Receive Hardwood Stairs,1
1993,13092,Marlin Chase,2079,medium,433351.0,5825,5825 Frame Punch,1
1994,12850,Peninsula,5715,high,750956.0,6180,6180 Install Insulation,2
1995,13240,Peninsula Lakes,1984,low,616419.0,6300,6300 Energy Inspection,1
1996,13240,Peninsula Lakes,1984,low,616419.0,6345,6345 Stock Drywall,1
1997,13240,Peninsula Lakes,1984,low,616419.0,6380,6380 Install Drywall,10
1998,12671,Peninsula,5870,high,750956.0,8920,8920 Install Water Heater/1st Trim,1
1999,12671,Peninsula,5870,high,750956.0,9020,9020 Electric Trim,19
2000,12671,Peninsula,5870,high,750956.0,10300,10300 Install Driveway,11
2001,12959,Marsh Island,5529,high,1221345.0,10301,10301 Driveway Apron,7
2002,12959,Marsh Island,5529,high,1221345.0,10340,10340 Install Leadwalk & Comm. Sidewalk,9
2003,12671,Peninsula,5870,high,750956.0,10340,10340 Install Leadwalk & Comm. Sidewalk,11
2004,12649,Peninsula,5996,high,750956.0,0,appcheck Check Appliances for Damage,1
2005,13408,NewMarket,3940,medium,889253.0,1940,1940 Install Perimeter Drain/Croc,1
2006,13408,NewMarket,3940,medium,889253.0,2060,2060 Waterproof Foundation Walls,3
2007,13035,Forest Hills,4024,medium,816522.0,3300,3300 1st Floor Deck Framing,3
2008,13440,Marlin Chase,3067,medium,714189.0,3780,3780 2nd Floor Deck Framing,1
2009,13092,Marlin Chase,2079,medium,433351.0,4580,4580 Install Roofing,4
2010,12673,Peninsula,5996,high,750956.0,6885,6885 Install Screen Porch Enclosure,1
2011,12649,Peninsula,5996,high,750956.0,9755,9755 Rec. GE Appliance Pkg2 Allocation,1
2012,12649,Peninsula,5996,high,750956.0,10501,10501 Paint Retouch,9
2013,12649,Peninsula,5996,high,750956.0,10620,10620 Punch Out Allocation,1
2014,13278,Mosaic,2320,medium,818814.0,0,00000 START,1
2015,13092,Marlin Chase,2079,medium,433351.0,3,3 TRADES START,1
2016,13440,Marlin Chase,3067,medium,714189.0,100,100 Framing DRAW 1,1
2017,13092,Marlin Chase,2079,medium,433351.0,140,140 Framing DRAW 2,1
2018,13278,Mosaic,2320,medium,818814.0,252,252 Site Plan,1
2019,13278,Mosaic,2320,medium,818814.0,260,260 Plan Review/Permit Allocation,0
2020,13278,Mosaic,2320,medium,818814.0,900,900 Bldg Stakeout,1
2021,13278,Mosaic,2320,medium,818814.0,901,901 Engineering Allocation,0
2022,13278,Mosaic,2320,medium,818814.0,980,980 Install Silt Fence,1
2023,13278,Mosaic,2320,medium,818814.0,1020,1020 Install Construction Entrance,1
2024,13020,Peninsula Lakes,2100,low,578095.0,1020,1020 Install Construction Entrance,1
2025,13020,Peninsula Lakes,2100,low,578095.0,1060,1060 Foundation Excavation,1
2026,13278,Mosaic,2320,medium,818814.0,1181,1181 Pump Truck Allowance,1
2027,13278,Mosaic,2320,medium,818814.0,2230,2230 Receive Dumpster Allocation,1
2028,13278,Mosaic,2320,medium,818814.0,2240,2240 Receive Portable Toilet Allocation,1
2029,13408,NewMarket,3940,medium,889253.0,3060,3060 Foundation Insulation-Crawl,3
2030,13440,Marlin Chase,3067,medium,714189.0,3820,3820 2nd Floor Wall Framing,1
2031,13101,Marlin Chase,2461,medium,682900.0,4380,4380 Roof Sheathing,3
2032,13092,Marlin Chase,2079,medium,433351.0,4582,4582 Install Temp Poly,3
2033,12673,Peninsula,5996,high,750956.0,8460,8460 Install Countertops,1
2034,12671,Peninsula,5870,high,750956.0,8465,8465 Install Tiled Backsplash,3
2035,12959,Marsh Island,5529,high,1221345.0,9260,9260 Structured Wiring Trim,2
2036,12671,Peninsula,5870,high,750956.0,9820,9820 Install Gutters,6
2037,13145,Marlin Chase,3204,medium,841553.0,0,00000 START,1
2038,13138,Marlin Chase,3171,medium,859133.0,0,00000 START,1
2039,13138,Marlin Chase,3171,medium,859133.0,1,1 START  CONSTRUCTION,1
2040,13145,Marlin Chase,3204,medium,841553.0,1,1 START  CONSTRUCTION,1
2041,13145,Marlin Chase,3204,medium,841553.0,252,252 Site Plan,1
2042,13138,Marlin Chase,3171,medium,859133.0,252,252 Site Plan,1
2043,13138,Marlin Chase,3171,medium,859133.0,260,260 Plan Review/Permit Allocation,0
2044,13145,Marlin Chase,3204,medium,841553.0,260,260 Plan Review/Permit Allocation,0
2045,13145,Marlin Chase,3204,medium,841553.0,900,900 Bldg Stakeout,1
2046,13138,Marlin Chase,3171,medium,859133.0,900,900 Bldg Stakeout,1
2047,13138,Marlin Chase,3171,medium,859133.0,901,901 Engineering Allocation,0
2048,13145,Marlin Chase,3204,medium,841553.0,901,901 Engineering Allocation,0
2049,13145,Marlin Chase,3204,medium,841553.0,980,980 Install Silt Fence,1
2050,13138,Marlin Chase,3171,medium,859133.0,980,980 Install Silt Fence,3
2051,13145,Marlin Chase,3204,medium,841553.0,1020,1020 Install Construction Entrance,1
2052,13145,Marlin Chase,3204,medium,841553.0,1060,1060 Foundation Excavation,1
2053,13138,Marlin Chase,3171,medium,859133.0,1060,1060 Foundation Excavation,1
2054,13020,Peninsula Lakes,2100,low,578095.0,1100,1100 Form Footings,1
2055,13020,Peninsula Lakes,2100,low,578095.0,1140,1140 Footing Inspection,1
2056,13020,Peninsula Lakes,2100,low,578095.0,1180,1180 Pour Footings,1
2057,13138,Marlin Chase,3171,medium,859133.0,1181,1181 Pump Truck Allowance,1
2058,13145,Marlin Chase,3204,medium,841553.0,1181,1181 Pump Truck Allowance,1
2059,13145,Marlin Chase,3204,medium,841553.0,1780,1780 Order Steel,1
2060,13138,Marlin Chase,3171,medium,859133.0,1780,1780 Order Steel,1
2061,12920,Peninsula,4116,high,1454538.0,1820,1820 Foundation Wall Inspection,1
2062,13136,Marlin Chase,3170,medium,806102.0,1820,1820 Foundation Wall Inspection,1
2063,13139,Marlin Chase,2554,medium,704067.0,1820,1820 Foundation Wall Inspection,1
2064,13136,Marlin Chase,3170,medium,806102.0,1860,1860 Foundation Wall Pour,1
2065,13139,Marlin Chase,2554,medium,704067.0,1860,1860 Foundation Wall Pour,1
2066,12920,Peninsula,4116,high,1454538.0,1860,1860 Foundation Wall Pour,1
2067,13138,Marlin Chase,3171,medium,859133.0,2230,2230 Receive Dumpster Allocation,1
2068,13145,Marlin Chase,3204,medium,841553.0,2230,2230 Receive Dumpster Allocation,1
2069,13145,Marlin Chase,3204,medium,841553.0,2240,2240 Receive Portable Toilet Allocation,1
2070,13138,Marlin Chase,3171,medium,859133.0,2240,2240 Receive Portable Toilet Allocation,1
2071,13408,NewMarket,3940,medium,889253.0,2340,2340 Backfill & Compact,6
2072,13139,Marlin Chase,2554,medium,704067.0,2440,2440 Receive Steel,1
2073,13440,Marlin Chase,3067,medium,714189.0,4020,4020 Set Trusses,1
2074,13035,Forest Hills,4024,medium,816522.0,4230,4230 Receive Housewrap/Flashing,1
2075,12850,Peninsula,5715,high,750956.0,6300,6300 Energy Inspection,1
2076,12850,Peninsula,5715,high,750956.0,6345,6345 Stock Drywall,1
2077,13145,Marlin Chase,3204,medium,841553.0,8500,8500 Order Appliance Pkg 1,1
2078,13138,Marlin Chase,3171,medium,859133.0,8500,8500 Order Appliance Pkg 1,1
2079,12671,Peninsula,5870,high,750956.0,8540,8540 Install Bath Accessories,29
2080,12671,Peninsula,5870,high,750956.0,8545,8545 Install Mirrors,1
2081,12671,Peninsula,5870,high,750956.0,8580,8580 Install Shower Enclosures,24
2082,12671,Peninsula,5870,high,750956.0,8900,8900 Install Closet Shelving,1
2083,12673,Peninsula,5996,high,750956.0,8920,8920 Install Water Heater/1st Trim,1
2084,12649,Peninsula,5996,high,750956.0,8980,8980 Final Plumbing Inspection,9
2085,12649,Peninsula,5996,high,750956.0,9660,9660 Install Carpet Flooring,1
2086,12959,Marsh Island,5529,high,1221345.0,9660,9660 Install Carpet Flooring,1
2087,13138,Marlin Chase,3171,medium,859133.0,9750,9750 Order Appliance Pkg 2,1
2088,13145,Marlin Chase,3204,medium,841553.0,9750,9750 Order Appliance Pkg 2,1
2089,12671,Peninsula,5870,high,750956.0,10260,10260 Install House Numbers,1
2090,12673,Peninsula,5996,high,750956.0,10300,10300 Install Driveway,1
2091,12673,Peninsula,5996,high,750956.0,10340,10340 Install Leadwalk & Comm. Sidewalk,1
2092,12649,Peninsula,5996,high,750956.0,10420,10420 Powerwash,1
2093,12673,Peninsula,5996,high,750956.0,10460,10460 Drywall Touch Up,2
2094,13138,Marlin Chase,3171,medium,859133.0,1020,1020 Install Construction Entrance,1
2095,13020,Peninsula Lakes,2100,low,578095.0,1190,1190 Capillary Break,1
2096,12920,Peninsula,4116,high,1454538.0,1900,1900 Strip Foundation Forms,1
2097,13136,Marlin Chase,3170,medium,806102.0,1900,1900 Strip Foundation Forms,1
2098,13139,Marlin Chase,2554,medium,704067.0,1900,1900 Strip Foundation Forms,1
2099,13035,Forest Hills,4024,medium,816522.0,3380,3380 1st Floor Wall Framing,3
2100,13035,Forest Hills,4024,medium,816522.0,3700,3700 Receive Trusses,1
2101,13440,Marlin Chase,3067,medium,714189.0,4380,4380 Roof Sheathing,1
2102,13092,Marlin Chase,2079,medium,433351.0,5100,5100 HVAC Rough,2
2103,13092,Marlin Chase,2079,medium,433351.0,5120,5120 HVAC Set Furnace,3
2104,12850,Peninsula,5715,high,750956.0,6380,6380 Install Drywall,12
2105,12850,Peninsula,5715,high,750956.0,6620,6620 Receive Vinyl Siding,1
2106,12850,Peninsula,5715,high,750956.0,6660,6660 Receive Fiber Cement Siding,1
2107,12850,Peninsula,5715,high,750956.0,6700,6700 Receive Composite Ext Trim,1
2108,12850,Peninsula,5715,high,750956.0,6720,6720 Receive Siding Accents,1
2109,12850,Peninsula,5715,high,750956.0,6725,6725 Receive Shutters,1
2110,12850,Peninsula,5715,high,750956.0,6740,6740 Receive PVC Exterior Trim,1
2111,12850,Peninsula,5715,high,750956.0,6781,6781 Receive Column Wrap/Flower Bx/Pediment,1
2112,12850,Peninsula,5715,high,750956.0,6820,6820 Receive Deck Skirting,1
2113,13090,Marsh Island,5603,high,1154185.0,8940,8940 Plumbing Trim,13
2114,12673,Peninsula,5996,high,750956.0,10020,10020 Final Grade,1
2115,12649,Peninsula,5996,high,750956.0,10100,10100 Irrigation Installation,1
2116,12649,Peninsula,5996,high,750956.0,10140,10140 Sod Installation,5
2117,12649,Peninsula,5996,high,750956.0,10180,10180 Shrub Installation,3
2118,12673,Peninsula,5996,high,750956.0,10380,10380 As Built Survey,1
2119,13145,Marlin Chase,3204,medium,841553.0,1100,1100 Form Footings,1
2120,13138,Marlin Chase,3171,medium,859133.0,1100,1100 Form Footings,1
2121,13138,Marlin Chase,3171,medium,859133.0,1140,1140 Footing Inspection,1
2122,13145,Marlin Chase,3204,medium,841553.0,1140,1140 Footing Inspection,1
2123,13145,Marlin Chase,3204,medium,841553.0,1180,1180 Pour Footings,1
2124,13138,Marlin Chase,3171,medium,859133.0,1180,1180 Pour Footings,1
2125,13020,Peninsula Lakes,2100,low,578095.0,1580,1580 Form Foundation Walls,1
2126,13020,Peninsula Lakes,2100,low,578095.0,1820,1820 Foundation Wall Inspection,1
2127,13020,Peninsula Lakes,2100,low,578095.0,1860,1860 Foundation Wall Pour,1
2128,12920,Peninsula,4116,high,1454538.0,1940,1940 Install Perimeter Drain/Croc,1
2129,13136,Marlin Chase,3170,medium,806102.0,1940,1940 Install Perimeter Drain/Croc,1
2130,13139,Marlin Chase,2554,medium,704067.0,1940,1940 Install Perimeter Drain/Croc,1
2131,13136,Marlin Chase,3170,medium,806102.0,2060,2060 Waterproof Foundation Walls,1
2132,13139,Marlin Chase,2554,medium,704067.0,2060,2060 Waterproof Foundation Walls,1
2133,12920,Peninsula,4116,high,1454538.0,2060,2060 Waterproof Foundation Walls,1
2134,13101,Marlin Chase,2461,medium,682900.0,4100,4100 Exterior Deck Framing,1
2135,13440,Marlin Chase,3067,medium,714189.0,4100,4100 Exterior Deck Framing,1
2136,13101,Marlin Chase,2461,medium,682900.0,4260,4260 Receive Windows,1
2137,13440,Marlin Chase,3067,medium,714189.0,4260,4260 Receive Windows,1
2138,13101,Marlin Chase,2461,medium,682900.0,4300,4300 Receive Window/Door Flashings,1
2139,13440,Marlin Chase,3067,medium,714189.0,4300,4300 Receive Window/Door Flashings,1
2140,13101,Marlin Chase,2461,medium,682900.0,4340,4340 Receive Exterior Doors,1
2141,13440,Marlin Chase,3067,medium,714189.0,4340,4340 Receive Exterior Doors,1
2142,13440,Marlin Chase,3067,medium,714189.0,4390,4390 Receive Roofing Material,2
2143,12959,Marsh Island,5529,high,1221345.0,6381,6381 Drywall Punch,1
2144,12850,Peninsula,5715,high,750956.0,6860,6860 Siding Installation,14
2145,12671,Peninsula,5870,high,750956.0,6940,6940 Install Elevator,25
2146,12673,Peninsula,5996,high,750956.0,8465,8465 Install Tiled Backsplash,1
2147,13090,Marsh Island,5603,high,1154185.0,8580,8580 Install Shower Enclosures,11
2148,12673,Peninsula,5996,high,750956.0,9990,9990 2nd Stage Termite Treatment,1
2149,12673,Peninsula,5996,high,750956.0,10100,10100 Irrigation Installation,1
2150,12959,Marsh Island,5529,high,1221345.0,10380,10380 As Built Survey,5
2151,12673,Peninsula,5996,high,750956.0,10500,10500 Paint 2,3
2152,13088,Forest Hills,3580,medium,222544.0,1100,1100 Form Footings,4
2153,13145,Marlin Chase,3204,medium,841553.0,1190,1190 Capillary Break,1
2154,13138,Marlin Chase,3171,medium,859133.0,1190,1190 Capillary Break,1
2155,13145,Marlin Chase,3204,medium,841553.0,1195,1195 Pin Footings,2
2156,13020,Peninsula Lakes,2100,low,578095.0,1900,1900 Strip Foundation Forms,1
2157,13408,NewMarket,3940,medium,889253.0,2344,2344 Meter Pit Install,1
2158,12920,Peninsula,4116,high,1454538.0,3020,3020 Termite & Pest PreTreatment,1
2159,13136,Marlin Chase,3170,medium,806102.0,3020,3020 Termite & Pest PreTreatment,1
2160,13139,Marlin Chase,2554,medium,704067.0,3020,3020 Termite & Pest PreTreatment,1
2161,13136,Marlin Chase,3170,medium,806102.0,3060,3060 Foundation Insulation-Crawl,1
2162,13139,Marlin Chase,2554,medium,704067.0,3060,3060 Foundation Insulation-Crawl,1
2163,13440,Marlin Chase,3067,medium,714189.0,4071,4071 Receive Exterior Decking,1
2164,13101,Marlin Chase,2461,medium,682900.0,4390,4390 Receive Roofing Material,1
2165,13101,Marlin Chase,2461,medium,682900.0,4540,4540 Install Windows,1
2166,13440,Marlin Chase,3067,medium,714189.0,4540,4540 Install Windows,1
2167,12832,Peninsula,4562,high,1090397.0,4665,4665 Elevator Rough,2
2168,13101,Marlin Chase,2461,medium,682900.0,4701,4701 Frame Check,1
2169,13440,Marlin Chase,3067,medium,714189.0,4701,4701 Frame Check,1
2170,13092,Marlin Chase,2079,medium,433351.0,4980,4980 Plumbing Rough,2
2171,12832,Peninsula,4562,high,1090397.0,5260,5260 Mechanical Rough Inspection,1
2172,12832,Peninsula,4562,high,1090397.0,5580,5580 Structured Wiring Rough,1
2173,13136,Marlin Chase,3170,medium,806102.0,5940,5940 Order Cabinets,1
2174,13136,Marlin Chase,3170,medium,806102.0,5941,5941 Order Cabinet Hardware,1
2175,12671,Peninsula,5870,high,750956.0,6885,6885 Install Screen Porch Enclosure,6
2176,12673,Peninsula,5996,high,750956.0,10140,10140 Sod Installation,1
2177,12673,Peninsula,5996,high,750956.0,10180,10180 Shrub Installation,1
2178,13253,River Mill,2912,medium,692624.0,0,00000 START,1
2179,13253,River Mill,2912,medium,692624.0,1,1 START  CONSTRUCTION,1
2180,13101,Marlin Chase,2461,medium,682900.0,140,140 Framing DRAW 2,1
2181,13440,Marlin Chase,3067,medium,714189.0,140,140 Framing DRAW 2,1
2182,13253,River Mill,2912,medium,692624.0,252,252 Site Plan,1
2183,13253,River Mill,2912,medium,692624.0,260,260 Plan Review/Permit Allocation,0
2184,13253,River Mill,2912,medium,692624.0,857,857 Rough Stake for Clearing,1
2185,13253,River Mill,2912,medium,692624.0,860,860 Clear Lot,2
2186,13253,River Mill,2912,medium,692624.0,901,901 Engineering Allocation,0
2187,13253,River Mill,2912,medium,692624.0,1020,1020 Install Construction Entrance,1
2188,13138,Marlin Chase,3171,medium,859133.0,1195,1195 Pin Footings,1
2189,13138,Marlin Chase,3171,medium,859133.0,1580,1580 Form Foundation Walls,1
2190,13145,Marlin Chase,3204,medium,841553.0,1580,1580 Form Foundation Walls,1
2191,13145,Marlin Chase,3204,medium,841553.0,1820,1820 Foundation Wall Inspection,1
2192,13138,Marlin Chase,3171,medium,859133.0,1820,1820 Foundation Wall Inspection,1
2193,13138,Marlin Chase,3171,medium,859133.0,1860,1860 Foundation Wall Pour,1
2194,13145,Marlin Chase,3204,medium,841553.0,1860,1860 Foundation Wall Pour,1
2195,13020,Peninsula Lakes,2100,low,578095.0,1940,1940 Install Perimeter Drain/Croc,1
2196,13020,Peninsula Lakes,2100,low,578095.0,2060,2060 Waterproof Foundation Walls,1
2197,13253,River Mill,2912,medium,692624.0,2230,2230 Receive Dumpster Allocation,1
2198,13253,River Mill,2912,medium,692624.0,2240,2240 Receive Portable Toilet Allocation,1
2199,13136,Marlin Chase,3170,medium,806102.0,2260,2260 Crawl Stone/Sand,1
2200,13139,Marlin Chase,2554,medium,704067.0,2260,2260 Crawl Stone/Sand,2
2201,13136,Marlin Chase,3170,medium,806102.0,2340,2340 Backfill & Compact,1
2202,13139,Marlin Chase,2554,medium,704067.0,2340,2340 Backfill & Compact,1
2203,13035,Forest Hills,4024,medium,816522.0,3780,3780 2nd Floor Deck Framing,1
2204,13101,Marlin Chase,2461,medium,682900.0,4071,4071 Receive Exterior Decking,1
2205,13101,Marlin Chase,2461,medium,682900.0,4580,4580 Install Roofing,2
2206,13440,Marlin Chase,3067,medium,714189.0,4580,4580 Install Roofing,2
2207,12832,Peninsula,4562,high,1090397.0,5300,5300 Municipal Electric Inspection,1
2208,13101,Marlin Chase,2461,medium,682900.0,5825,5825 Frame Punch,1
2209,13440,Marlin Chase,3067,medium,714189.0,5825,5825 Frame Punch,1
2210,13253,River Mill,2912,medium,692624.0,8500,8500 Order Appliance Pkg 1,1
2211,13240,Peninsula Lakes,1984,low,616419.0,9140,9140 2nd Stage Air Seal,1
2212,13092,Marlin Chase,2079,medium,433351.0,9390,9390 Install Water Meter/Sewer Frame,1
2213,12451,Peninsula,5195,high,750956.0,9700,9700 Install Hardwood Flooring,1
2214,13253,River Mill,2912,medium,692624.0,9750,9750 Order Appliance Pkg 2,1
2215,12959,Marsh Island,5529,high,1221345.0,9755,9755 Rec. GE Appliance Pkg2 Allocation,1
2216,12959,Marsh Island,5529,high,1221345.0,10501,10501 Paint Retouch,1
2217,12959,Marsh Island,5529,high,1221345.0,10620,10620 Punch Out Allocation,1
2218,12959,Marsh Island,5529,high,1221345.0,0,appcheck Check Appliances for Damage,1
2219,13113,Marlin Chase,2814,medium,750956.0,0,00000 START,1
2220,13137,Marlin Chase,2330,medium,637264.0,0,00000 START,1
2221,13137,Marlin Chase,2330,medium,637264.0,1,1 START  CONSTRUCTION,1
2222,13113,Marlin Chase,2814,medium,750956.0,1,1 START  CONSTRUCTION,1
2223,13136,Marlin Chase,3170,medium,806102.0,2,2 FRAMING START,1
2224,13440,Marlin Chase,3067,medium,714189.0,3,3 TRADES START,1
2225,13035,Forest Hills,4024,medium,816522.0,100,100 Framing DRAW 1,1
2226,13137,Marlin Chase,2330,medium,637264.0,252,252 Site Plan,1
2227,13113,Marlin Chase,2814,medium,750956.0,252,252 Site Plan,1
2228,13113,Marlin Chase,2814,medium,750956.0,260,260 Plan Review/Permit Allocation,0
2229,13137,Marlin Chase,2330,medium,637264.0,260,260 Plan Review/Permit Allocation,0
2230,13137,Marlin Chase,2330,medium,637264.0,900,900 Bldg Stakeout,1
2231,13113,Marlin Chase,2814,medium,750956.0,900,900 Bldg Stakeout,1
2232,13137,Marlin Chase,2330,medium,637264.0,901,901 Engineering Allocation,0
2233,13113,Marlin Chase,2814,medium,750956.0,901,901 Engineering Allocation,0
2234,13113,Marlin Chase,2814,medium,750956.0,980,980 Install Silt Fence,1
2235,13113,Marlin Chase,2814,medium,750956.0,1020,1020 Install Construction Entrance,1
2236,13137,Marlin Chase,2330,medium,637264.0,1020,1020 Install Construction Entrance,1
2237,13137,Marlin Chase,2330,medium,637264.0,1060,1060 Foundation Excavation,1
2238,13113,Marlin Chase,2814,medium,750956.0,1060,1060 Foundation Excavation,1
2239,13137,Marlin Chase,2330,medium,637264.0,1100,1100 Form Footings,1
2240,13137,Marlin Chase,2330,medium,637264.0,1140,1140 Footing Inspection,1
2241,13137,Marlin Chase,2330,medium,637264.0,1181,1181 Pump Truck Allowance,1
2242,13113,Marlin Chase,2814,medium,750956.0,1181,1181 Pump Truck Allowance,1
2243,13113,Marlin Chase,2814,medium,750956.0,1780,1780 Order Steel,1
2244,13137,Marlin Chase,2330,medium,637264.0,1780,1780 Order Steel,1
2245,13145,Marlin Chase,3204,medium,841553.0,1900,1900 Strip Foundation Forms,1
2246,13138,Marlin Chase,3171,medium,859133.0,1900,1900 Strip Foundation Forms,1
2247,13113,Marlin Chase,2814,medium,750956.0,2230,2230 Receive Dumpster Allocation,1
2248,13137,Marlin Chase,2330,medium,637264.0,2230,2230 Receive Dumpster Allocation,1
2249,13137,Marlin Chase,2330,medium,637264.0,2240,2240 Receive Portable Toilet Allocation,1
2250,13113,Marlin Chase,2814,medium,750956.0,2240,2240 Receive Portable Toilet Allocation,1
2251,13408,NewMarket,3940,medium,889253.0,2260,2260 Crawl Stone/Sand,1
2252,13136,Marlin Chase,3170,medium,806102.0,2440,2440 Receive Steel,1
2253,13136,Marlin Chase,3170,medium,806102.0,2460,2460 Receive Lumber Drop #1,1
2254,13136,Marlin Chase,3170,medium,806102.0,2540,2540 Receive 1st Floor Joists,1
2255,13136,Marlin Chase,3170,medium,806102.0,2700,2700 Pour Garage Slab,1
2256,13139,Marlin Chase,2554,medium,704067.0,2700,2700 Pour Garage Slab,1
2257,13020,Peninsula Lakes,2100,low,578095.0,3020,3020 Termite & Pest PreTreatment,1
2258,13020,Peninsula Lakes,2100,low,578095.0,3060,3060 Foundation Insulation-Crawl,1
2259,13139,Marlin Chase,2554,medium,704067.0,3100,3100 Foundation Survey,1
2260,13136,Marlin Chase,3170,medium,806102.0,3540,3540 Receive Lumber Drop #2,1
2261,13136,Marlin Chase,3170,medium,806102.0,3740,3740 Receive 2nd Floor Joists,1
2262,13035,Forest Hills,4024,medium,816522.0,3820,3820 2nd Floor Wall Framing,4
2263,13136,Marlin Chase,3170,medium,806102.0,3900,3900 Receive Lumber Drop #3,1
2264,13101,Marlin Chase,2461,medium,682900.0,4582,4582 Install Temp Poly,1
2265,13440,Marlin Chase,3067,medium,714189.0,4582,4582 Install Temp Poly,1
2266,13101,Marlin Chase,2461,medium,682900.0,4775,4775 Receive Hardwood Stairs,2
2267,13440,Marlin Chase,3067,medium,714189.0,5100,5100 HVAC Rough,3
2268,13440,Marlin Chase,3067,medium,714189.0,5120,5120 HVAC Set Furnace,1
2269,13092,Marlin Chase,2079,medium,433351.0,5740,5740 Install Gas Lines,1
2270,12451,Peninsula,5195,high,750956.0,7861,7861 Interior Trim Punch,1
2271,13137,Marlin Chase,2330,medium,637264.0,8500,8500 Order Appliance Pkg 1,1
2272,13113,Marlin Chase,2814,medium,750956.0,8500,8500 Order Appliance Pkg 1,1
2273,12451,Peninsula,5195,high,750956.0,8540,8540 Install Bath Accessories,1
2274,12451,Peninsula,5195,high,750956.0,8545,8545 Install Mirrors,1
2275,12451,Peninsula,5195,high,750956.0,8580,8580 Install Shower Enclosures,1
2276,12673,Peninsula,5996,high,750956.0,9020,9020 Electric Trim,3
2277,12673,Peninsula,5996,high,750956.0,9100,9100 HVAC Trim / Set Unit,1
2278,12671,Peninsula,5870,high,750956.0,9101,9101 HVAC Startup,2
2279,13240,Peninsula Lakes,1984,low,616419.0,9460,9460 Attic Insulation,1
2280,12451,Peninsula,5195,high,750956.0,9660,9660 Install Carpet Flooring,1
2281,13137,Marlin Chase,2330,medium,637264.0,9750,9750 Order Appliance Pkg 2,1
2282,13113,Marlin Chase,2814,medium,750956.0,9750,9750 Order Appliance Pkg 2,1
2283,12451,Peninsula,5195,high,750956.0,10260,10260 Install House Numbers,1
2284,12671,Peninsula,5870,high,750956.0,10380,10380 As Built Survey,1
2285,12451,Peninsula,5195,high,750956.0,0,vancheck Check Vanity Tops/Windows for Damage,1
2286,13139,Marlin Chase,2554,medium,704067.0,2,2 FRAMING START,1
2287,13408,NewMarket,3940,medium,889253.0,2,2 FRAMING START,1
2288,13101,Marlin Chase,2461,medium,682900.0,3,3 TRADES START,1
2289,13253,River Mill,2912,medium,692624.0,900,900 Bldg Stakeout,1
2290,13253,River Mill,2912,medium,692624.0,980,980 Install Silt Fence,1
2291,13113,Marlin Chase,2814,medium,750956.0,1100,1100 Form Footings,1
2292,13113,Marlin Chase,2814,medium,750956.0,1140,1140 Footing Inspection,1
2293,13113,Marlin Chase,2814,medium,750956.0,1180,1180 Pour Footings,1
2294,13137,Marlin Chase,2330,medium,637264.0,1180,1180 Pour Footings,1
2295,13145,Marlin Chase,3204,medium,841553.0,1940,1940 Install Perimeter Drain/Croc,1
2296,13138,Marlin Chase,3171,medium,859133.0,1940,1940 Install Perimeter Drain/Croc,1
2297,13138,Marlin Chase,3171,medium,859133.0,2060,2060 Waterproof Foundation Walls,1
2298,13145,Marlin Chase,3204,medium,841553.0,2060,2060 Waterproof Foundation Walls,1
2299,13020,Peninsula Lakes,2100,low,578095.0,2260,2260 Crawl Stone/Sand,1
2300,13020,Peninsula Lakes,2100,low,578095.0,2340,2340 Backfill & Compact,1
2301,12920,Peninsula,4116,high,1454538.0,2340,2340 Backfill & Compact,1
2302,13408,NewMarket,3940,medium,889253.0,2440,2440 Receive Steel,1
2303,13408,NewMarket,3940,medium,889253.0,2460,2460 Receive Lumber Drop #1,1
2304,13139,Marlin Chase,2554,medium,704067.0,2460,2460 Receive Lumber Drop #1,1
2305,13139,Marlin Chase,2554,medium,704067.0,2540,2540 Receive 1st Floor Joists,1
2306,13408,NewMarket,3940,medium,889253.0,2540,2540 Receive 1st Floor Joists,1
2307,13408,NewMarket,3940,medium,889253.0,2700,2700 Pour Garage Slab,1
2308,13136,Marlin Chase,3170,medium,806102.0,3300,3300 1st Floor Deck Framing,1
2309,13139,Marlin Chase,2554,medium,704067.0,3540,3540 Receive Lumber Drop #2,1
2310,13408,NewMarket,3940,medium,889253.0,3540,3540 Receive Lumber Drop #2,1
2311,13408,NewMarket,3940,medium,889253.0,3740,3740 Receive 2nd Floor Joists,1
2312,13139,Marlin Chase,2554,medium,704067.0,3740,3740 Receive 2nd Floor Joists,1
2313,13139,Marlin Chase,2554,medium,704067.0,3900,3900 Receive Lumber Drop #3,1
2314,13408,NewMarket,3940,medium,889253.0,3900,3900 Receive Lumber Drop #3,1
2315,13136,Marlin Chase,3170,medium,806102.0,4070,4070 Receive Exterior Deck Material,1
2316,13440,Marlin Chase,3067,medium,714189.0,4591,4591 Install Metal Roof Flashing,8
2317,13092,Marlin Chase,2079,medium,433351.0,4940,4940 Install Fireplace,1
2318,13101,Marlin Chase,2461,medium,682900.0,5100,5100 HVAC Rough,2
2319,13101,Marlin Chase,2461,medium,682900.0,5120,5120 HVAC Set Furnace,1
2320,12451,Peninsula,5195,high,750956.0,6381,6381 Drywall Punch,1
2321,12673,Peninsula,5996,high,750956.0,6940,6940 Install Elevator,1
2322,12451,Peninsula,5195,high,750956.0,8900,8900 Install Closet Shelving,1
2323,12451,Peninsula,5195,high,750956.0,8980,8980 Final Plumbing Inspection,1
2324,13090,Marsh Island,5603,high,1154185.0,9020,9020 Electric Trim,3
2325,12451,Peninsula,5195,high,750956.0,9060,9060 Final Electric Inspection,1
2326,12673,Peninsula,5996,high,750956.0,9260,9260 Structured Wiring Trim,1
2327,13240,Peninsula Lakes,1984,low,616419.0,9380,9380 Install Irrigation Well,1
2328,12649,Peninsula,5996,high,750956.0,9500,9500 Blower Door/Ductblaster,1
2329,13090,Marsh Island,5603,high,1154185.0,9700,9700 Install Hardwood Flooring,4
2330,12671,Peninsula,5870,high,750956.0,10020,10020 Final Grade,9
2331,13090,Marsh Island,5603,high,1154185.0,10380,10380 As Built Survey,8
2332,13253,River Mill,2912,medium,692624.0,1060,1060 Foundation Excavation,9
2333,13088,Forest Hills,3580,medium,222544.0,1140,1140 Footing Inspection,1
2334,13088,Forest Hills,3580,medium,222544.0,1180,1180 Pour Footings,1
2335,13113,Marlin Chase,2814,medium,750956.0,1190,1190 Capillary Break,1
2336,13137,Marlin Chase,2330,medium,637264.0,1190,1190 Capillary Break,1
2337,13113,Marlin Chase,2814,medium,750956.0,1195,1195 Pin Footings,1
2338,12920,Peninsula,4116,high,1454538.0,2020,2020 Install Underground Plumbing,1
2339,12920,Peninsula,4116,high,1454538.0,2344,2344 Meter Pit Install,1
2340,13020,Peninsula Lakes,2100,low,578095.0,2700,2700 Pour Garage Slab,1
2341,13138,Marlin Chase,3171,medium,859133.0,3020,3020 Termite & Pest PreTreatment,1
2342,13145,Marlin Chase,3204,medium,841553.0,3020,3020 Termite & Pest PreTreatment,1
2343,13145,Marlin Chase,3204,medium,841553.0,3060,3060 Foundation Insulation-Crawl,1
2344,13138,Marlin Chase,3171,medium,859133.0,3060,3060 Foundation Insulation-Crawl,1
2345,13020,Peninsula Lakes,2100,low,578095.0,3100,3100 Foundation Survey,1
2346,12920,Peninsula,4116,high,1454538.0,3100,3100 Foundation Survey,1
2347,13139,Marlin Chase,2554,medium,704067.0,3300,3300 1st Floor Deck Framing,1
2348,13408,NewMarket,3940,medium,889253.0,3300,3300 1st Floor Deck Framing,2
2349,13136,Marlin Chase,3170,medium,806102.0,3380,3380 1st Floor Wall Framing,1
2350,13136,Marlin Chase,3170,medium,806102.0,3700,3700 Receive Trusses,1
2351,13139,Marlin Chase,2554,medium,704067.0,4070,4070 Receive Exterior Deck Material,1
2352,13136,Marlin Chase,3170,medium,806102.0,4460,4460 Schedule Gas Lateral Contractor,1
2353,13092,Marlin Chase,2079,medium,433351.0,4591,4591 Install Metal Roof Flashing,4
2354,13092,Marlin Chase,2079,medium,433351.0,5860,5860 Frame Stage Tour,1
2355,13240,Peninsula Lakes,1984,low,616419.0,6340,6340 Install Overhead Door,26
2356,13090,Marsh Island,5603,high,1154185.0,6940,6940 Install Elevator,21
2357,12959,Marsh Island,5529,high,1221345.0,7861,7861 Interior Trim Punch,2
2358,13240,Peninsula Lakes,1984,low,616419.0,8420,8420 1st Paint,1
2359,12959,Marsh Island,5529,high,1221345.0,8940,8940 Plumbing Trim,4
2360,13090,Marsh Island,5603,high,1154185.0,9260,9260 Structured Wiring Trim,151
2361,12451,Peninsula,5195,high,750956.0,9980,9980 Final Cleaning,1
2362,12671,Peninsula,5870,high,750956.0,9990,9990 2nd Stage Termite Treatment,1
2363,12451,Peninsula,5195,high,750956.0,10420,10420 Powerwash,1
2364,13088,Forest Hills,3580,medium,222544.0,1190,1190 Capillary Break,1
2365,13088,Forest Hills,3580,medium,222544.0,1195,1195 Pin Footings,1
2366,13113,Marlin Chase,2814,medium,750956.0,1580,1580 Form Foundation Walls,1
2367,13137,Marlin Chase,2330,medium,637264.0,1580,1580 Form Foundation Walls,1
2368,13137,Marlin Chase,2330,medium,637264.0,1820,1820 Foundation Wall Inspection,1
2369,13113,Marlin Chase,2814,medium,750956.0,1820,1820 Foundation Wall Inspection,1
2370,13113,Marlin Chase,2814,medium,750956.0,1860,1860 Foundation Wall Pour,1
2371,13137,Marlin Chase,2330,medium,637264.0,1860,1860 Foundation Wall Pour,1
2372,13145,Marlin Chase,3204,medium,841553.0,2260,2260 Crawl Stone/Sand,1
2373,13138,Marlin Chase,3171,medium,859133.0,2260,2260 Crawl Stone/Sand,3
2374,13138,Marlin Chase,3171,medium,859133.0,2340,2340 Backfill & Compact,2
2375,13145,Marlin Chase,3204,medium,841553.0,2340,2340 Backfill & Compact,1
2376,13020,Peninsula Lakes,2100,low,578095.0,2440,2440 Receive Steel,1
2377,13139,Marlin Chase,2554,medium,704067.0,3380,3380 1st Floor Wall Framing,1
2378,13139,Marlin Chase,2554,medium,704067.0,3700,3700 Receive Trusses,1
2379,13136,Marlin Chase,3170,medium,806102.0,3780,3780 2nd Floor Deck Framing,1
2380,13408,NewMarket,3940,medium,889253.0,4230,4230 Receive Housewrap/Flashing,1
2381,13440,Marlin Chase,3067,medium,714189.0,4940,4940 Install Fireplace,1
2382,13101,Marlin Chase,2461,medium,682900.0,4980,4980 Plumbing Rough,2
2383,13440,Marlin Chase,3067,medium,714189.0,4980,4980 Plumbing Rough,1
2384,13240,Peninsula Lakes,1984,low,616419.0,5177,5177 Electric Meter Connection,1
2385,13240,Peninsula Lakes,1984,low,616419.0,6391,6391 Install Gas Meter,1
2386,13240,Peninsula Lakes,1984,low,616419.0,7340,7340 Install Ceramic Tile,2
2387,13240,Peninsula Lakes,1984,low,616419.0,8220,8220 Install Fireplace Surround/Mantel,1
2388,13240,Peninsula Lakes,1984,low,616419.0,8579,8579 Template Shower Enclosure,1
2389,12673,Peninsula,5996,high,750956.0,9060,9060 Final Electric Inspection,1
2390,12671,Peninsula,5870,high,750956.0,9700,9700 Install Hardwood Flooring,1
2391,12959,Marsh Island,5529,high,1221345.0,9980,9980 Final Cleaning,2
2392,12959,Marsh Island,5529,high,1221345.0,10020,10020 Final Grade,1
2393,12451,Peninsula,5195,high,750956.0,10501,10501 Paint Retouch,1
2394,12451,Peninsula,5195,high,750956.0,10620,10620 Punch Out Allocation,1
2395,13175,Peninsula Lakes,2245,low,567645.0,0,00000 START,1
2396,13175,Peninsula Lakes,2245,low,567645.0,1,1 START  CONSTRUCTION,1
2397,13278,Mosaic,2320,medium,818814.0,1,1 START  CONSTRUCTION,1
2398,13136,Marlin Chase,3170,medium,806102.0,100,100 Framing DRAW 1,1
2399,13175,Peninsula Lakes,2245,low,567645.0,252,252 Site Plan,1
2400,13175,Peninsula Lakes,2245,low,567645.0,260,260 Plan Review/Permit Allocation,0
2401,13175,Peninsula Lakes,2245,low,567645.0,900,900 Bldg Stakeout,1
2402,13175,Peninsula Lakes,2245,low,567645.0,901,901 Engineering Allocation,0
2403,13175,Peninsula Lakes,2245,low,567645.0,1020,1020 Install Construction Entrance,1
2404,13175,Peninsula Lakes,2245,low,567645.0,1060,1060 Foundation Excavation,1
2405,13175,Peninsula Lakes,2245,low,567645.0,1780,1780 Order Steel,1
2406,13137,Marlin Chase,2330,medium,637264.0,1900,1900 Strip Foundation Forms,1
2407,13113,Marlin Chase,2814,medium,750956.0,1900,1900 Strip Foundation Forms,1
2408,13175,Peninsula Lakes,2245,low,567645.0,2230,2230 Receive Dumpster Allocation,1
2409,13175,Peninsula Lakes,2245,low,567645.0,2240,2240 Receive Portable Toilet Allocation,1
2410,13020,Peninsula Lakes,2100,low,578095.0,2540,2540 Receive 1st Floor Joists,1
2411,13145,Marlin Chase,3204,medium,841553.0,2700,2700 Pour Garage Slab,2
2412,13145,Marlin Chase,3204,medium,841553.0,3100,3100 Foundation Survey,1
2413,13138,Marlin Chase,3171,medium,859133.0,3100,3100 Foundation Survey,1
2414,13408,NewMarket,3940,medium,889253.0,3380,3380 1st Floor Wall Framing,3
2415,13139,Marlin Chase,2554,medium,704067.0,3780,3780 2nd Floor Deck Framing,1
2416,13136,Marlin Chase,3170,medium,806102.0,3820,3820 2nd Floor Wall Framing,1
2417,13136,Marlin Chase,3170,medium,806102.0,4020,4020 Set Trusses,1
2418,13035,Forest Hills,4024,medium,816522.0,4020,4020 Set Trusses,9
2419,13240,Peninsula Lakes,1984,low,616419.0,4981,4981 Deliver Sinks,1
2420,13092,Marlin Chase,2079,medium,433351.0,5180,5180 Electric Rough,3
2421,13440,Marlin Chase,3067,medium,714189.0,5740,5740 Install Gas Lines,1
2422,13440,Marlin Chase,3067,medium,714189.0,5860,5860 Frame Stage Tour,1
2423,13020,Peninsula Lakes,2100,low,578095.0,5940,5940 Order Cabinets,1
2424,13020,Peninsula Lakes,2100,low,578095.0,5941,5941 Order Cabinet Hardware,1
2425,13240,Peninsula Lakes,1984,low,616419.0,7300,7300 Receive Interior Trim,1
2426,13240,Peninsula Lakes,1984,low,616419.0,7304,7304 Receive Goodie Box,1
2427,13240,Peninsula Lakes,1984,low,616419.0,7700,7700 Receive Interior Doors,1
2428,13240,Peninsula Lakes,1984,low,616419.0,7862,7862 Receive Cabinet Hardware Allocation,1
2429,13240,Peninsula Lakes,1984,low,616419.0,7866,7866 Receive Door Hardware,1
2430,13240,Peninsula Lakes,1984,low,616419.0,7900,7900 Receive Cabinets Allocation,1
2431,13240,Peninsula Lakes,1984,low,616419.0,7901,7901 Cabinet Delivery Charges,1
2432,13240,Peninsula Lakes,1984,low,616419.0,7940,7940 Receive Vanity Tops,1
2433,13240,Peninsula Lakes,1984,low,616419.0,8020,8020 Receive Interior Railing,1
2434,13175,Peninsula Lakes,2245,low,567645.0,8500,8500 Order Appliance Pkg 1,1
2435,13090,Marsh Island,5603,high,1154185.0,9060,9060 Final Electric Inspection,5
2436,12959,Marsh Island,5529,high,1221345.0,9110,9110 Gas Trim,1
2437,13175,Peninsula Lakes,2245,low,567645.0,9750,9750 Order Appliance Pkg 2,1
2438,12451,Peninsula,5195,high,750956.0,9755,9755 Rec. GE Appliance Pkg2 Allocation,1
2439,12451,Peninsula,5195,high,750956.0,9756,9756 Receive N/S Appliance Pkg 2,1
2440,13090,Marsh Island,5603,high,1154185.0,9990,9990 2nd Stage Termite Treatment,1
2441,12959,Marsh Island,5529,high,1221345.0,10100,10100 Irrigation Installation,1
2442,12959,Marsh Island,5529,high,1221345.0,10660,10660 Quality Inspection,1
2443,13145,Marlin Chase,3204,medium,841553.0,2,2 FRAMING START,1
2444,13138,Marlin Chase,3171,medium,859133.0,2,2 FRAMING START,1
2445,13139,Marlin Chase,2554,medium,704067.0,100,100 Framing DRAW 1,1
2446,13175,Peninsula Lakes,2245,low,567645.0,1100,1100 Form Footings,1
2447,13175,Peninsula Lakes,2245,low,567645.0,1140,1140 Footing Inspection,1
2448,13175,Peninsula Lakes,2245,low,567645.0,1180,1180 Pour Footings,1
2449,13175,Peninsula Lakes,2245,low,567645.0,1190,1190 Capillary Break,1
2450,13137,Marlin Chase,2330,medium,637264.0,1940,1940 Install Perimeter Drain/Croc,1
2451,13113,Marlin Chase,2814,medium,750956.0,1940,1940 Install Perimeter Drain/Croc,1
2452,13113,Marlin Chase,2814,medium,750956.0,2060,2060 Waterproof Foundation Walls,1
2453,13137,Marlin Chase,2330,medium,637264.0,2060,2060 Waterproof Foundation Walls,1
2454,12920,Peninsula,4116,high,1454538.0,2140,2140 Underground Plumbing Inspection,1
2455,13145,Marlin Chase,3204,medium,841553.0,2440,2440 Receive Steel,1
2456,13138,Marlin Chase,3171,medium,859133.0,2440,2440 Receive Steel,1
2457,13138,Marlin Chase,3171,medium,859133.0,2460,2460 Receive Lumber Drop #1,1
2458,13145,Marlin Chase,3204,medium,841553.0,2460,2460 Receive Lumber Drop #1,1
2459,13020,Peninsula Lakes,2100,low,578095.0,2460,2460 Receive Lumber Drop #1,1
2460,13145,Marlin Chase,3204,medium,841553.0,2540,2540 Receive 1st Floor Joists,1
2461,13138,Marlin Chase,3171,medium,859133.0,2540,2540 Receive 1st Floor Joists,1
2462,13138,Marlin Chase,3171,medium,859133.0,3540,3540 Receive Lumber Drop #2,1
2463,13145,Marlin Chase,3204,medium,841553.0,3540,3540 Receive Lumber Drop #2,1
2464,13020,Peninsula Lakes,2100,low,578095.0,3540,3540 Receive Lumber Drop #2,1
2465,13145,Marlin Chase,3204,medium,841553.0,3740,3740 Receive 2nd Floor Joists,1
2466,13138,Marlin Chase,3171,medium,859133.0,3740,3740 Receive 2nd Floor Joists,1
2467,13139,Marlin Chase,2554,medium,704067.0,3820,3820 2nd Floor Wall Framing,1
2468,13138,Marlin Chase,3171,medium,859133.0,3900,3900 Receive Lumber Drop #3,1
2469,13020,Peninsula Lakes,2100,low,578095.0,3900,3900 Receive Lumber Drop #3,1
2470,13136,Marlin Chase,3170,medium,806102.0,4230,4230 Receive Housewrap/Flashing,1
2471,13136,Marlin Chase,3170,medium,806102.0,4380,4380 Roof Sheathing,2
2472,13035,Forest Hills,4024,medium,816522.0,4380,4380 Roof Sheathing,8
2473,13101,Marlin Chase,2461,medium,682900.0,5740,5740 Install Gas Lines,1
2474,13240,Peninsula Lakes,1984,low,616419.0,7860,7860 Install Interior Trim,2
2475,12850,Peninsula,5715,high,750956.0,9140,9140 2nd Stage Air Seal,1
2476,13090,Marsh Island,5603,high,1154185.0,9660,9660 Install Carpet Flooring,1
2477,12959,Marsh Island,5529,high,1221345.0,9740,9740 Fireplace Start Up,1
2478,12649,Peninsula,5996,high,750956.0,10660,10660 Quality Inspection,1
2479,12451,Peninsula,5195,high,750956.0,0,cabcheck Check Cabinets for Damage,1
2480,13388,Marsh Island,5848,high,750956.0,0,00000 START,1
2481,13388,Marsh Island,5848,high,750956.0,1,1 START  CONSTRUCTION,1
2482,13020,Peninsula Lakes,2100,low,578095.0,2,2 FRAMING START,1
2483,13388,Marsh Island,5848,high,750956.0,252,252 Site Plan,1
2484,13388,Marsh Island,5848,high,750956.0,260,260 Plan Review/Permit Allocation,0
2485,13388,Marsh Island,5848,high,750956.0,900,900 Bldg Stakeout,1
2486,13032,Welches Pond,2812,medium,643995.0,900,900 Bldg Stakeout,1
2487,13388,Marsh Island,5848,high,750956.0,901,901 Engineering Allocation,0
2488,13388,Marsh Island,5848,high,750956.0,980,980 Install Silt Fence,1
2489,13388,Marsh Island,5848,high,750956.0,1020,1020 Install Construction Entrance,1
2490,13388,Marsh Island,5848,high,750956.0,1780,1780 Order Steel,1
2491,13388,Marsh Island,5848,high,750956.0,2230,2230 Receive Dumpster Allocation,1
2492,13388,Marsh Island,5848,high,750956.0,2240,2240 Receive Portable Toilet Allocation,1
2493,12920,Peninsula,4116,high,1454538.0,2380,2380 Pour Basement Slab,4
2494,13138,Marlin Chase,3171,medium,859133.0,2700,2700 Pour Garage Slab,1
2495,13113,Marlin Chase,2814,medium,750956.0,3020,3020 Termite & Pest PreTreatment,1
2496,13137,Marlin Chase,2330,medium,637264.0,3020,3020 Termite & Pest PreTreatment,1
2497,13137,Marlin Chase,2330,medium,637264.0,3060,3060 Foundation Insulation-Crawl,1
2498,13113,Marlin Chase,2814,medium,750956.0,3060,3060 Foundation Insulation-Crawl,1
2499,13138,Marlin Chase,3171,medium,859133.0,3300,3300 1st Floor Deck Framing,1
2500,13145,Marlin Chase,3204,medium,841553.0,3300,3300 1st Floor Deck Framing,1
2501,13020,Peninsula Lakes,2100,low,578095.0,3300,3300 1st Floor Deck Framing,1
2502,13139,Marlin Chase,2554,medium,704067.0,4020,4020 Set Trusses,2
2503,13145,Marlin Chase,3204,medium,841553.0,4070,4070 Receive Exterior Deck Material,1
2504,13138,Marlin Chase,3171,medium,859133.0,4070,4070 Receive Exterior Deck Material,1
2505,13139,Marlin Chase,2554,medium,704067.0,4230,4230 Receive Housewrap/Flashing,1
2506,12993,Peninsula,5996,high,750956.0,4540,4540 Install Windows,3
2507,12993,Peninsula,5996,high,750956.0,4701,4701 Frame Check,1
2508,13139,Marlin Chase,2554,medium,704067.0,5940,5940 Order Cabinets,1
2509,13139,Marlin Chase,2554,medium,704067.0,5941,5941 Order Cabinet Hardware,1
2510,13240,Peninsula Lakes,1984,low,616419.0,7180,7180 Install Exterior Railings,1
2511,13240,Peninsula Lakes,1984,low,616419.0,7220,7220 Install Deck Skirting/Flower Boxes,1
2512,13240,Peninsula Lakes,1984,low,616419.0,8300,8300 Install Cabinets,2
2513,13388,Marsh Island,5848,high,750956.0,8500,8500 Order Appliance Pkg 1,1
2514,12671,Peninsula,5870,high,750956.0,9260,9260 Structured Wiring Trim,5
2515,13240,Peninsula Lakes,1984,low,616419.0,9540,9540 Rec. GE Appliance Pkg1 Allocation,1
2516,12671,Peninsula,5870,high,750956.0,9660,9660 Install Carpet Flooring,1
2517,13388,Marsh Island,5848,high,750956.0,9750,9750 Order Appliance Pkg 2,1
2518,13240,Peninsula Lakes,1984,low,616419.0,9820,9820 Install Gutters,8
2519,12649,Peninsula,5996,high,750956.0,9980,9980 Final Cleaning,1
2520,12451,Peninsula,5195,high,750956.0,9985,9985 Final Clean 2,1
2521,12993,Peninsula,5996,high,750956.0,140,140 Framing DRAW 2,1
2522,13388,Marsh Island,5848,high,750956.0,940,940 Install Pilings,2
2523,13088,Forest Hills,3580,medium,222544.0,1060,1060 Foundation Excavation,1
2524,13175,Peninsula Lakes,2245,low,567645.0,1580,1580 Form Foundation Walls,1
2525,13175,Peninsula Lakes,2245,low,567645.0,1820,1820 Foundation Wall Inspection,1
2526,13175,Peninsula Lakes,2245,low,567645.0,1860,1860 Foundation Wall Pour,1
2527,13113,Marlin Chase,2814,medium,750956.0,2260,2260 Crawl Stone/Sand,1
2528,13113,Marlin Chase,2814,medium,750956.0,2340,2340 Backfill & Compact,1
2529,12920,Peninsula,4116,high,1454538.0,2700,2700 Pour Garage Slab,6
2530,13020,Peninsula Lakes,2100,low,578095.0,3380,3380 1st Floor Wall Framing,1
2531,13138,Marlin Chase,3171,medium,859133.0,3380,3380 1st Floor Wall Framing,1
2532,13145,Marlin Chase,3204,medium,841553.0,3380,3380 1st Floor Wall Framing,1
2533,13145,Marlin Chase,3204,medium,841553.0,3700,3700 Receive Trusses,1
2534,13138,Marlin Chase,3171,medium,859133.0,3700,3700 Receive Trusses,1
2535,13408,NewMarket,3940,medium,889253.0,3780,3780 2nd Floor Deck Framing,6
2536,13020,Peninsula Lakes,2100,low,578095.0,4070,4070 Receive Exterior Deck Material,1
2537,13136,Marlin Chase,3170,medium,806102.0,4100,4100 Exterior Deck Framing,1
2538,13136,Marlin Chase,3170,medium,806102.0,4260,4260 Receive Windows,1
2539,13136,Marlin Chase,3170,medium,806102.0,4300,4300 Receive Window/Door Flashings,1
2540,13136,Marlin Chase,3170,medium,806102.0,4390,4390 Receive Roofing Material,1
2541,13145,Marlin Chase,3204,medium,841553.0,4460,4460 Schedule Gas Lateral Contractor,1
2542,13136,Marlin Chase,3170,medium,806102.0,4775,4775 Receive Hardwood Stairs,1
2543,13101,Marlin Chase,2461,medium,682900.0,5180,5180 Electric Rough,6
2544,13092,Marlin Chase,2079,medium,433351.0,5260,5260 Mechanical Rough Inspection,1
2545,13092,Marlin Chase,2079,medium,433351.0,5300,5300 Municipal Electric Inspection,1
2546,13092,Marlin Chase,2079,medium,433351.0,5580,5580 Structured Wiring Rough,1
2547,12993,Peninsula,5996,high,750956.0,5825,5825 Frame Punch,1
2548,12850,Peninsula,5715,high,750956.0,6391,6391 Install Gas Meter,1
2549,13240,Peninsula Lakes,1984,low,616419.0,7140,7140 Exterior Painting,23
2550,12850,Peninsula,5715,high,750956.0,7220,7220 Install Deck Skirting/Flower Boxes,4
2551,12671,Peninsula,5870,high,750956.0,7861,7861 Interior Trim Punch,1
2552,12671,Peninsula,5870,high,750956.0,8940,8940 Plumbing Trim,4
2553,12959,Marsh Island,5529,high,1221345.0,8980,8980 Final Plumbing Inspection,1
2554,12649,Peninsula,5996,high,750956.0,9940,9940 Final Inspection,1
2555,13240,Peninsula Lakes,1984,low,616419.0,10460,10460 Drywall Touch Up,2
2556,13113,Marlin Chase,2814,medium,750956.0,2,2 FRAMING START,1
2557,13020,Peninsula Lakes,2100,low,578095.0,100,100 Framing DRAW 1,1
2558,13140,Marlin Chase,2824,medium,766881.0,900,900 Bldg Stakeout,1
2559,13278,Mosaic,2320,medium,818814.0,1100,1100 Form Footings,0
2560,13088,Forest Hills,3580,medium,222544.0,1580,1580 Form Foundation Walls,2
2561,13175,Peninsula Lakes,2245,low,567645.0,1900,1900 Strip Foundation Forms,1
2562,13137,Marlin Chase,2330,medium,637264.0,2260,2260 Crawl Stone/Sand,1
2563,13137,Marlin Chase,2330,medium,637264.0,2340,2340 Backfill & Compact,1
2564,12920,Peninsula,4116,high,1454538.0,2440,2440 Receive Steel,1
2565,13113,Marlin Chase,2814,medium,750956.0,2440,2440 Receive Steel,1
2566,13113,Marlin Chase,2814,medium,750956.0,2460,2460 Receive Lumber Drop #1,1
2567,12920,Peninsula,4116,high,1454538.0,2460,2460 Receive Lumber Drop #1,1
2568,12920,Peninsula,4116,high,1454538.0,2540,2540 Receive 1st Floor Joists,1
2569,12920,Peninsula,4116,high,1454538.0,3540,3540 Receive Lumber Drop #2,1
2570,13113,Marlin Chase,2814,medium,750956.0,3540,3540 Receive Lumber Drop #2,1
2571,13408,NewMarket,3940,medium,889253.0,3700,3700 Receive Trusses,1
2572,12920,Peninsula,4116,high,1454538.0,3740,3740 Receive 2nd Floor Joists,1
2573,13145,Marlin Chase,3204,medium,841553.0,3780,3780 2nd Floor Deck Framing,1
2574,13138,Marlin Chase,3171,medium,859133.0,3780,3780 2nd Floor Deck Framing,1
2575,13113,Marlin Chase,2814,medium,750956.0,3900,3900 Receive Lumber Drop #3,1
2576,12920,Peninsula,4116,high,1454538.0,3900,3900 Receive Lumber Drop #3,1
2577,12920,Peninsula,4116,high,1454538.0,3990,3990 Receive 3nd Floor Joists,1
2578,13020,Peninsula Lakes,2100,low,578095.0,4020,4020 Set Trusses,2
2579,13136,Marlin Chase,3170,medium,806102.0,4071,4071 Receive Exterior Decking,1
2580,13020,Peninsula Lakes,2100,low,578095.0,4230,4230 Receive Housewrap/Flashing,1
2581,13139,Marlin Chase,2554,medium,704067.0,4380,4380 Roof Sheathing,1
2582,13136,Marlin Chase,3170,medium,806102.0,4540,4540 Install Windows,1
2583,13136,Marlin Chase,3170,medium,806102.0,4580,4580 Install Roofing,2
2584,13101,Marlin Chase,2461,medium,682900.0,4591,4591 Install Metal Roof Flashing,1
2585,13136,Marlin Chase,3170,medium,806102.0,4701,4701 Frame Check,1
2586,13101,Marlin Chase,2461,medium,682900.0,5860,5860 Frame Stage Tour,1
2587,13092,Marlin Chase,2079,medium,433351.0,5900,5900 Air Seal,1
2588,12671,Peninsula,5870,high,750956.0,6381,6381 Drywall Punch,1
2589,13090,Marsh Island,5603,high,1154185.0,7861,7861 Interior Trim Punch,1
2590,13240,Peninsula Lakes,1984,low,616419.0,8380,8380 Template Countertops,1
2591,12850,Peninsula,5715,high,750956.0,8420,8420 1st Paint,1
2592,12673,Peninsula,5996,high,750956.0,9101,9101 HVAC Startup,1
2593,12959,Marsh Island,5529,high,1221345.0,9940,9940 Final Inspection,1
2594,12959,Marsh Island,5529,high,1221345.0,9985,9985 Final Clean 2,1
2595,12671,Peninsula,5870,high,750956.0,0,appcheck Check Appliances for Damage,1
2596,12671,Peninsula,5870,high,750956.0,0,cabcheck Check Cabinets for Damage,1
2597,13258,River Mill,3064,medium,670416.0,0,00000 START,1
2598,13277,Mosaic,1704,medium,561869.0,0,00000 START,1
2599,13277,Mosaic,1704,medium,561869.0,1,1 START  CONSTRUCTION,1
2600,13258,River Mill,3064,medium,670416.0,1,1 START  CONSTRUCTION,1
2601,12993,Peninsula,5996,high,750956.0,3,3 TRADES START,1
2602,13138,Marlin Chase,3171,medium,859133.0,100,100 Framing DRAW 1,1
2603,13145,Marlin Chase,3204,medium,841553.0,100,100 Framing DRAW 1,1
2604,13136,Marlin Chase,3170,medium,806102.0,140,140 Framing DRAW 2,1
2605,13258,River Mill,3064,medium,670416.0,252,252 Site Plan,1
2606,13277,Mosaic,1704,medium,561869.0,252,252 Site Plan,1
2607,13277,Mosaic,1704,medium,561869.0,260,260 Plan Review/Permit Allocation,0
2608,13258,River Mill,3064,medium,670416.0,260,260 Plan Review/Permit Allocation,0
2609,13258,River Mill,3064,medium,670416.0,857,857 Rough Stake for Clearing,1
2610,13277,Mosaic,1704,medium,561869.0,900,900 Bldg Stakeout,1
2611,13277,Mosaic,1704,medium,561869.0,901,901 Engineering Allocation,0
2612,13258,River Mill,3064,medium,670416.0,901,901 Engineering Allocation,0
2613,13277,Mosaic,1704,medium,561869.0,980,980 Install Silt Fence,1
2614,13277,Mosaic,1704,medium,561869.0,1020,1020 Install Construction Entrance,1
2615,13032,Welches Pond,2812,medium,643995.0,1060,1060 Foundation Excavation,1
2616,13388,Marsh Island,5848,high,750956.0,1100,1100 Form Footings,1
2617,13388,Marsh Island,5848,high,750956.0,1140,1140 Footing Inspection,1
2618,13278,Mosaic,2320,medium,818814.0,1140,1140 Footing Inspection,1
2619,13278,Mosaic,2320,medium,818814.0,1180,1180 Pour Footings,3
2620,13388,Marsh Island,5848,high,750956.0,1180,1180 Pour Footings,1
2621,13277,Mosaic,1704,medium,561869.0,1780,1780 Order Steel,1
2622,13088,Forest Hills,3580,medium,222544.0,1820,1820 Foundation Wall Inspection,1
2623,13088,Forest Hills,3580,medium,222544.0,1860,1860 Foundation Wall Pour,1
2624,13175,Peninsula Lakes,2245,low,567645.0,1940,1940 Install Perimeter Drain/Croc,1
2625,13175,Peninsula Lakes,2245,low,567645.0,2060,2060 Waterproof Foundation Walls,1
2626,13258,River Mill,3064,medium,670416.0,2230,2230 Receive Dumpster Allocation,1
2627,13277,Mosaic,1704,medium,561869.0,2230,2230 Receive Dumpster Allocation,1
2628,13277,Mosaic,1704,medium,561869.0,2240,2240 Receive Portable Toilet Allocation,1
2629,13258,River Mill,3064,medium,670416.0,2240,2240 Receive Portable Toilet Allocation,1
2630,13145,Marlin Chase,3204,medium,841553.0,3820,3820 2nd Floor Wall Framing,1
2631,13138,Marlin Chase,3171,medium,859133.0,3820,3820 2nd Floor Wall Framing,1
2632,13113,Marlin Chase,2814,medium,750956.0,4070,4070 Receive Exterior Deck Material,1
2633,13408,NewMarket,3940,medium,889253.0,4070,4070 Receive Exterior Deck Material,1
2634,12920,Peninsula,4116,high,1454538.0,4070,4070 Receive Exterior Deck Material,1
2635,13139,Marlin Chase,2554,medium,704067.0,4100,4100 Exterior Deck Framing,1
2636,13139,Marlin Chase,2554,medium,704067.0,4260,4260 Receive Windows,1
2637,13139,Marlin Chase,2554,medium,704067.0,4300,4300 Receive Window/Door Flashings,1
2638,13139,Marlin Chase,2554,medium,704067.0,4340,4340 Receive Exterior Doors,1
2639,13139,Marlin Chase,2554,medium,704067.0,4390,4390 Receive Roofing Material,1
2640,13136,Marlin Chase,3170,medium,806102.0,4582,4582 Install Temp Poly,1
2641,12993,Peninsula,5996,high,750956.0,5100,5100 HVAC Rough,3
2642,13092,Marlin Chase,2079,medium,433351.0,5820,5820 Framing Inspection,1
2643,13136,Marlin Chase,3170,medium,806102.0,5825,5825 Frame Punch,1
2644,13145,Marlin Chase,3204,medium,841553.0,5940,5940 Order Cabinets,1
2645,13138,Marlin Chase,3171,medium,859133.0,5940,5940 Order Cabinets,1
2646,13138,Marlin Chase,3171,medium,859133.0,5941,5941 Order Cabinet Hardware,1
2647,13145,Marlin Chase,3204,medium,841553.0,5941,5941 Order Cabinet Hardware,1
2648,13090,Marsh Island,5603,high,1154185.0,6381,6381 Drywall Punch,1
2649,12850,Peninsula,5715,high,750956.0,7340,7340 Install Ceramic Tile,5
2650,12850,Peninsula,5715,high,750956.0,7350,7350 Install Shower Tile,11
2651,12850,Peninsula,5715,high,750956.0,7380,7380 Install Vinyl Floors,1
2652,12850,Peninsula,5715,high,750956.0,8020,8020 Receive Interior Railing,1
2653,12850,Peninsula,5715,high,750956.0,8220,8220 Install Fireplace Surround/Mantel,1
2654,13258,River Mill,3064,medium,670416.0,8500,8500 Order Appliance Pkg 1,1
2655,13277,Mosaic,1704,medium,561869.0,8500,8500 Order Appliance Pkg 1,1
2656,12673,Peninsula,5996,high,750956.0,8540,8540 Install Bath Accessories,1
2657,12673,Peninsula,5996,high,750956.0,8545,8545 Install Mirrors,1
2658,12673,Peninsula,5996,high,750956.0,8580,8580 Install Shower Enclosures,1
2659,12673,Peninsula,5996,high,750956.0,8900,8900 Install Closet Shelving,1
2660,13090,Marsh Island,5603,high,1154185.0,8980,8980 Final Plumbing Inspection,5
2661,12959,Marsh Island,5529,high,1221345.0,9500,9500 Blower Door/Ductblaster,1
2662,13277,Mosaic,1704,medium,561869.0,9750,9750 Order Appliance Pkg 2,1
2663,13258,River Mill,3064,medium,670416.0,9750,9750 Order Appliance Pkg 2,1
2664,12671,Peninsula,5870,high,750956.0,9755,9755 Rec. GE Appliance Pkg2 Allocation,1
2665,12673,Peninsula,5996,high,750956.0,10260,10260 Install House Numbers,1
2666,13240,Peninsula Lakes,1984,low,616419.0,10500,10500 Paint 2,5
2667,12959,Marsh Island,5529,high,1221345.0,10745,10745 Install Window Coverings,1
2668,13032,Welches Pond,2812,medium,643995.0,0,00000 START,1
2669,13140,Marlin Chase,2824,medium,766881.0,0,00000 START,1
2670,13401,Welches Pond,2927,medium,731557.0,0,00000 START,1
2671,13401,Welches Pond,2927,medium,731557.0,1,1 START  CONSTRUCTION,1
2672,13032,Welches Pond,2812,medium,643995.0,1,1 START  CONSTRUCTION,1
2673,13140,Marlin Chase,2824,medium,766881.0,1,1 START  CONSTRUCTION,1
2674,13137,Marlin Chase,2330,medium,637264.0,2,2 FRAMING START,1
2675,13136,Marlin Chase,3170,medium,806102.0,3,3 TRADES START,1
2676,13401,Welches Pond,2927,medium,731557.0,252,252 Site Plan,1
2677,13140,Marlin Chase,2824,medium,766881.0,252,252 Site Plan,1
2678,13032,Welches Pond,2812,medium,643995.0,252,252 Site Plan,1
2679,13032,Welches Pond,2812,medium,643995.0,260,260 Plan Review/Permit Allocation,0
2680,13401,Welches Pond,2927,medium,731557.0,260,260 Plan Review/Permit Allocation,0
2681,13140,Marlin Chase,2824,medium,766881.0,260,260 Plan Review/Permit Allocation,0
2682,13401,Welches Pond,2927,medium,731557.0,900,900 Bldg Stakeout,1
2683,13401,Welches Pond,2927,medium,731557.0,901,901 Engineering Allocation,0
2684,13032,Welches Pond,2812,medium,643995.0,901,901 Engineering Allocation,0
2685,13140,Marlin Chase,2824,medium,766881.0,901,901 Engineering Allocation,0
2686,13140,Marlin Chase,2824,medium,766881.0,980,980 Install Silt Fence,1
2687,13401,Welches Pond,2927,medium,731557.0,980,980 Install Silt Fence,1
2688,13401,Welches Pond,2927,medium,731557.0,1020,1020 Install Construction Entrance,1
2689,13140,Marlin Chase,2824,medium,766881.0,1020,1020 Install Construction Entrance,1
2690,13032,Welches Pond,2812,medium,643995.0,1020,1020 Install Construction Entrance,1
2691,13140,Marlin Chase,2824,medium,766881.0,1060,1060 Foundation Excavation,1
2692,13277,Mosaic,1704,medium,561869.0,1100,1100 Form Footings,1
2693,13388,Marsh Island,5848,high,750956.0,1190,1190 Capillary Break,1
2694,13388,Marsh Island,5848,high,750956.0,1195,1195 Pin Footings,1
2695,13140,Marlin Chase,2824,medium,766881.0,1780,1780 Order Steel,1
2696,13401,Welches Pond,2927,medium,731557.0,1780,1780 Order Steel,1
2697,13032,Welches Pond,2812,medium,643995.0,1780,1780 Order Steel,1
2698,13088,Forest Hills,3580,medium,222544.0,1900,1900 Strip Foundation Forms,1
2699,13032,Welches Pond,2812,medium,643995.0,2230,2230 Receive Dumpster Allocation,1
2700,13140,Marlin Chase,2824,medium,766881.0,2230,2230 Receive Dumpster Allocation,1
2701,13401,Welches Pond,2927,medium,731557.0,2230,2230 Receive Dumpster Allocation,1
2702,13401,Welches Pond,2927,medium,731557.0,2240,2240 Receive Portable Toilet Allocation,1
2703,13032,Welches Pond,2812,medium,643995.0,2240,2240 Receive Portable Toilet Allocation,1
2704,13140,Marlin Chase,2824,medium,766881.0,2240,2240 Receive Portable Toilet Allocation,1
2705,13137,Marlin Chase,2330,medium,637264.0,2440,2440 Receive Steel,1
2706,13137,Marlin Chase,2330,medium,637264.0,2460,2460 Receive Lumber Drop #1,1
2707,13137,Marlin Chase,2330,medium,637264.0,2540,2540 Receive 1st Floor Joists,1
2708,13113,Marlin Chase,2814,medium,750956.0,2540,2540 Receive 1st Floor Joists,1
2709,13113,Marlin Chase,2814,medium,750956.0,2700,2700 Pour Garage Slab,1
2710,13137,Marlin Chase,2330,medium,637264.0,2700,2700 Pour Garage Slab,1
2711,13175,Peninsula Lakes,2245,low,567645.0,3020,3020 Termite & Pest PreTreatment,1
2712,13175,Peninsula Lakes,2245,low,567645.0,3060,3060 Foundation Insulation-Crawl,1
2713,13113,Marlin Chase,2814,medium,750956.0,3100,3100 Foundation Survey,1
2714,13137,Marlin Chase,2330,medium,637264.0,3540,3540 Receive Lumber Drop #2,1
2715,13020,Peninsula Lakes,2100,low,578095.0,3700,3700 Receive Trusses,1
2716,13137,Marlin Chase,2330,medium,637264.0,3740,3740 Receive 2nd Floor Joists,1
2717,13113,Marlin Chase,2814,medium,750956.0,3740,3740 Receive 2nd Floor Joists,1
2718,13137,Marlin Chase,2330,medium,637264.0,3900,3900 Receive Lumber Drop #3,1
2719,13145,Marlin Chase,3204,medium,841553.0,4020,4020 Set Trusses,3
2720,13138,Marlin Chase,3171,medium,859133.0,4020,4020 Set Trusses,3
2721,13139,Marlin Chase,2554,medium,704067.0,4071,4071 Receive Exterior Decking,1
2722,13145,Marlin Chase,3204,medium,841553.0,4230,4230 Receive Housewrap/Flashing,1
2723,13138,Marlin Chase,3171,medium,859133.0,4230,4230 Receive Housewrap/Flashing,1
2724,13136,Marlin Chase,3170,medium,806102.0,4340,4340 Receive Exterior Doors,1
2725,13020,Peninsula Lakes,2100,low,578095.0,4380,4380 Roof Sheathing,2
2726,13139,Marlin Chase,2554,medium,704067.0,4540,4540 Install Windows,1
2727,13139,Marlin Chase,2554,medium,704067.0,4580,4580 Install Roofing,2
2728,13092,Marlin Chase,2079,medium,433351.0,4700,4700 Internal Framing Inspection,1
2729,13139,Marlin Chase,2554,medium,704067.0,4701,4701 Frame Check,1
2730,12850,Peninsula,5715,high,750956.0,4981,4981 Deliver Sinks,1
2731,13136,Marlin Chase,3170,medium,806102.0,5100,5100 HVAC Rough,3
2732,13136,Marlin Chase,3170,medium,806102.0,5120,5120 HVAC Set Furnace,1
2733,12850,Peninsula,5715,high,750956.0,5177,5177 Electric Meter Connection,1
2734,12832,Peninsula,4562,high,1090397.0,5177,5177 Electric Meter Connection,1
2735,12832,Peninsula,4562,high,1090397.0,5900,5900 Air Seal,1
2736,13092,Marlin Chase,2079,medium,433351.0,6180,6180 Install Insulation,2
2737,12850,Peninsula,5715,high,750956.0,7300,7300 Receive Interior Trim,1
2738,12850,Peninsula,5715,high,750956.0,7304,7304 Receive Goodie Box,1
2739,12850,Peninsula,5715,high,750956.0,7700,7700 Receive Interior Doors,1
2740,12850,Peninsula,5715,high,750956.0,7862,7862 Receive Cabinet Hardware Allocation,1
2741,12850,Peninsula,5715,high,750956.0,7866,7866 Receive Door Hardware,1
2742,12850,Peninsula,5715,high,750956.0,7900,7900 Receive Cabinets Allocation,1
2743,12850,Peninsula,5715,high,750956.0,7901,7901 Cabinet Delivery Charges,1
2744,12850,Peninsula,5715,high,750956.0,7940,7940 Receive Vanity Tops,1
2745,12850,Peninsula,5715,high,750956.0,8260,8260 Install Interior Railing,1
2746,13032,Welches Pond,2812,medium,643995.0,8500,8500 Order Appliance Pkg 1,1
2747,13401,Welches Pond,2927,medium,731557.0,8500,8500 Order Appliance Pkg 1,1
2748,13140,Marlin Chase,2824,medium,766881.0,8500,8500 Order Appliance Pkg 1,1
2749,12671,Peninsula,5870,high,750956.0,9060,9060 Final Electric Inspection,1
2750,13032,Welches Pond,2812,medium,643995.0,9750,9750 Order Appliance Pkg 2,1
2751,13140,Marlin Chase,2824,medium,766881.0,9750,9750 Order Appliance Pkg 2,1
2752,13401,Welches Pond,2927,medium,731557.0,9750,9750 Order Appliance Pkg 2,1
2753,13401,Welches Pond,2927,medium,731557.0,9860,9860 Final Utility Connection,0
2754,13032,Welches Pond,2812,medium,643995.0,9860,9860 Final Utility Connection,0
2755,12671,Peninsula,5870,high,750956.0,10501,10501 Paint Retouch,1
2756,12671,Peninsula,5870,high,750956.0,10620,10620 Punch Out Allocation,1
2757,12959,Marsh Island,5529,high,1221345.0,10780,10780 Customer Walk,1
2758,12451,Peninsula,5195,high,750956.0,0,appcheck Check Appliances for Damage,1
2759,13139,Marlin Chase,2554,medium,704067.0,140,140 Framing DRAW 2,1
2760,13401,Welches Pond,2927,medium,731557.0,1060,1060 Foundation Excavation,1
2761,13032,Welches Pond,2812,medium,643995.0,1100,1100 Form Footings,1
2762,13253,River Mill,2912,medium,692624.0,1100,1100 Form Footings,1
2763,13277,Mosaic,1704,medium,561869.0,1140,1140 Footing Inspection,1
2764,13032,Welches Pond,2812,medium,643995.0,1140,1140 Footing Inspection,1
2765,13277,Mosaic,1704,medium,561869.0,1180,1180 Pour Footings,1
2766,13388,Marsh Island,5848,high,750956.0,1580,1580 Form Foundation Walls,1
2767,13388,Marsh Island,5848,high,750956.0,1820,1820 Foundation Wall Inspection,1
2768,13388,Marsh Island,5848,high,750956.0,1860,1860 Foundation Wall Pour,1
2769,13175,Peninsula Lakes,2245,low,567645.0,2260,2260 Crawl Stone/Sand,1
2770,13175,Peninsula Lakes,2245,low,567645.0,2340,2340 Backfill & Compact,1
2771,13137,Marlin Chase,2330,medium,637264.0,3300,3300 1st Floor Deck Framing,1
2772,12920,Peninsula,4116,high,1454538.0,3700,3700 Receive Trusses,1
2773,13137,Marlin Chase,2330,medium,637264.0,4070,4070 Receive Exterior Deck Material,1
2774,13138,Marlin Chase,3171,medium,859133.0,4380,4380 Roof Sheathing,3
2775,13139,Marlin Chase,2554,medium,704067.0,4582,4582 Install Temp Poly,1
2776,12832,Peninsula,4562,high,1090397.0,4700,4700 Internal Framing Inspection,1
2777,13139,Marlin Chase,2554,medium,704067.0,4775,4775 Receive Hardwood Stairs,1
2778,13440,Marlin Chase,3067,medium,714189.0,5180,5180 Electric Rough,3
2779,12832,Peninsula,4562,high,1090397.0,5820,5820 Framing Inspection,1
2780,13139,Marlin Chase,2554,medium,704067.0,5825,5825 Frame Punch,1
2781,12671,Peninsula,5870,high,750956.0,8980,8980 Final Plumbing Inspection,1
2782,12671,Peninsula,5870,high,750956.0,9110,9110 Gas Trim,1
2783,13090,Marsh Island,5603,high,1154185.0,10745,10745 Install Window Coverings,1
2784,13092,Marlin Chase,2079,medium,433351.0,10940,10940 Framing Retainage,1
2785,13240,Peninsula Lakes,1984,low,616419.0,0,vancheck Check Vanity Tops/Windows for Damage,1
2786,13139,Marlin Chase,2554,medium,704067.0,3,3 TRADES START,1
2787,13258,River Mill,3064,medium,670416.0,860,860 Clear Lot,2
2788,13032,Welches Pond,2812,medium,643995.0,980,980 Install Silt Fence,1
2789,13401,Welches Pond,2927,medium,731557.0,1100,1100 Form Footings,1
2790,13401,Welches Pond,2927,medium,731557.0,1140,1140 Footing Inspection,1
2791,13253,River Mill,2912,medium,692624.0,1140,1140 Footing Inspection,1
2792,13253,River Mill,2912,medium,692624.0,1180,1180 Pour Footings,1
2793,13401,Welches Pond,2927,medium,731557.0,1180,1180 Pour Footings,1
2794,13278,Mosaic,2320,medium,818814.0,1190,1190 Capillary Break,1
2795,13032,Welches Pond,2812,medium,643995.0,1190,1190 Capillary Break,1
2796,13277,Mosaic,1704,medium,561869.0,1190,1190 Capillary Break,1
2797,13388,Marsh Island,5848,high,750956.0,1900,1900 Strip Foundation Forms,1
2798,13088,Forest Hills,3580,medium,222544.0,3060,3060 Foundation Insulation-Crawl,1
2799,13137,Marlin Chase,2330,medium,637264.0,3100,3100 Foundation Survey,1
2800,13175,Peninsula Lakes,2245,low,567645.0,3100,3100 Foundation Survey,1
2801,13113,Marlin Chase,2814,medium,750956.0,3300,3300 1st Floor Deck Framing,1
2802,13137,Marlin Chase,2330,medium,637264.0,3380,3380 1st Floor Wall Framing,1
2803,13137,Marlin Chase,2330,medium,637264.0,3700,3700 Receive Trusses,1
2804,13020,Peninsula Lakes,2100,low,578095.0,4100,4100 Exterior Deck Framing,1
2805,13020,Peninsula Lakes,2100,low,578095.0,4260,4260 Receive Windows,1
2806,13020,Peninsula Lakes,2100,low,578095.0,4300,4300 Receive Window/Door Flashings,1
2807,13020,Peninsula Lakes,2100,low,578095.0,4340,4340 Receive Exterior Doors,1
2808,12850,Peninsula,5715,high,750956.0,4590,4590 Install Metal Roofing,1
2809,13138,Marlin Chase,3171,medium,859133.0,4775,4775 Receive Hardwood Stairs,1
2810,12993,Peninsula,5996,high,750956.0,4980,4980 Plumbing Rough,3
2811,13139,Marlin Chase,2554,medium,704067.0,5100,5100 HVAC Rough,2
2812,13139,Marlin Chase,2554,medium,704067.0,5120,5120 HVAC Set Furnace,1
2813,12850,Peninsula,5715,high,750956.0,5120,5120 HVAC Set Furnace,2
2814,13101,Marlin Chase,2461,medium,682900.0,5260,5260 Mechanical Rough Inspection,1
2815,13101,Marlin Chase,2461,medium,682900.0,5580,5580 Structured Wiring Rough,1
2816,13113,Marlin Chase,2814,medium,750956.0,5940,5940 Order Cabinets,1
2817,13113,Marlin Chase,2814,medium,750956.0,5941,5941 Order Cabinet Hardware,1
2818,13092,Marlin Chase,2079,medium,433351.0,6300,6300 Energy Inspection,1
2819,12993,Peninsula,5996,high,750956.0,6900,6900 Schedule Septic Installation,1
2820,12850,Peninsula,5715,high,750956.0,7860,7860 Install Interior Trim,3
2821,12959,Marsh Island,5529,high,1221345.0,10420,10420 Powerwash,1
2822,12832,Peninsula,4562,high,1090397.0,10940,10940 Framing Retainage,1
2823,12920,Peninsula,4116,high,1454538.0,2,2 FRAMING START,1
2824,13408,NewMarket,3940,medium,889253.0,100,100 Framing DRAW 1,1
2825,13137,Marlin Chase,2330,medium,637264.0,980,980 Install Silt Fence,1
2826,13032,Welches Pond,2812,medium,643995.0,1180,1180 Pour Footings,1
2827,13253,River Mill,2912,medium,692624.0,1190,1190 Capillary Break,1
2828,13401,Welches Pond,2927,medium,731557.0,1190,1190 Capillary Break,1
2829,13401,Welches Pond,2927,medium,731557.0,1195,1195 Pin Footings,1
2830,13253,River Mill,2912,medium,692624.0,1195,1195 Pin Footings,1
2831,13032,Welches Pond,2812,medium,643995.0,1580,1580 Form Foundation Walls,1
2832,13032,Welches Pond,2812,medium,643995.0,1820,1820 Foundation Wall Inspection,1
2833,13032,Welches Pond,2812,medium,643995.0,1860,1860 Foundation Wall Pour,1
2834,13388,Marsh Island,5848,high,750956.0,2340,2340 Backfill & Compact,1
2835,13388,Marsh Island,5848,high,750956.0,2382,2382 Slab Insulation,1
2836,13175,Peninsula Lakes,2245,low,567645.0,2440,2440 Receive Steel,1
2837,13175,Peninsula Lakes,2245,low,567645.0,2540,2540 Receive 1st Floor Joists,1
2838,13175,Peninsula Lakes,2245,low,567645.0,2700,2700 Pour Garage Slab,1
2839,13113,Marlin Chase,2814,medium,750956.0,3380,3380 1st Floor Wall Framing,1
2840,13113,Marlin Chase,2814,medium,750956.0,3700,3700 Receive Trusses,1
2841,13113,Marlin Chase,2814,medium,750956.0,3780,3780 2nd Floor Deck Framing,1
2842,13137,Marlin Chase,2330,medium,637264.0,3780,3780 2nd Floor Deck Framing,1
2843,13408,NewMarket,3940,medium,889253.0,3820,3820 2nd Floor Wall Framing,2
2844,13020,Peninsula Lakes,2100,low,578095.0,4071,4071 Receive Exterior Decking,1
2845,12920,Peninsula,4116,high,1454538.0,4230,4230 Receive Housewrap/Flashing,1
2846,13113,Marlin Chase,2814,medium,750956.0,4230,4230 Receive Housewrap/Flashing,1
2847,13035,Forest Hills,4024,medium,816522.0,4260,4260 Receive Windows,2
2848,13035,Forest Hills,4024,medium,816522.0,4300,4300 Receive Window/Door Flashings,1
2849,13035,Forest Hills,4024,medium,816522.0,4340,4340 Receive Exterior Doors,1
2850,13145,Marlin Chase,3204,medium,841553.0,4380,4380 Roof Sheathing,1
2851,13035,Forest Hills,4024,medium,816522.0,4390,4390 Receive Roofing Material,1
2852,13020,Peninsula Lakes,2100,low,578095.0,4390,4390 Receive Roofing Material,1
2853,13113,Marlin Chase,2814,medium,750956.0,4460,4460 Schedule Gas Lateral Contractor,1
2854,13440,Marlin Chase,3067,medium,714189.0,4461,4461 Install Gas Lateral,1
2855,13020,Peninsula Lakes,2100,low,578095.0,4540,4540 Install Windows,1
2856,13020,Peninsula Lakes,2100,low,578095.0,4580,4580 Install Roofing,1
2857,13020,Peninsula Lakes,2100,low,578095.0,4701,4701 Frame Check,1
2858,13136,Marlin Chase,3170,medium,806102.0,4980,4980 Plumbing Rough,2
2859,13440,Marlin Chase,3067,medium,714189.0,5260,5260 Mechanical Rough Inspection,1
2860,13101,Marlin Chase,2461,medium,682900.0,5300,5300 Municipal Electric Inspection,1
2861,13440,Marlin Chase,3067,medium,714189.0,5580,5580 Structured Wiring Rough,1
2862,13092,Marlin Chase,2079,medium,433351.0,6345,6345 Stock Drywall,1
2863,13240,Peninsula Lakes,1984,low,616419.0,9020,9020 Electric Trim,13
2864,13240,Peninsula Lakes,1984,low,616419.0,9100,9100 HVAC Trim / Set Unit,1
2865,13090,Marsh Island,5603,high,1154185.0,9110,9110 Gas Trim,17
2866,13240,Peninsula Lakes,1984,low,616419.0,9260,9260 Structured Wiring Trim,1
2867,12451,Peninsula,5195,high,750956.0,9500,9500 Blower Door/Ductblaster,1
2868,13240,Peninsula Lakes,1984,low,616419.0,9620,9620 Install Appliances,1
2869,12649,Peninsula,5996,high,750956.0,9985,9985 Final Clean 2,1
2870,13175,Peninsula Lakes,2245,low,567645.0,2,2 FRAMING START,1
2871,13137,Marlin Chase,2330,medium,637264.0,100,100 Framing DRAW 1,1
2872,13113,Marlin Chase,2814,medium,750956.0,100,100 Framing DRAW 1,1
2873,13020,Peninsula Lakes,2100,low,578095.0,140,140 Framing DRAW 2,1
2874,13258,River Mill,3064,medium,670416.0,900,900 Bldg Stakeout,1
2875,13258,River Mill,3064,medium,670416.0,980,980 Install Silt Fence,1
2876,13140,Marlin Chase,2824,medium,766881.0,1100,1100 Form Footings,1
2877,13140,Marlin Chase,2824,medium,766881.0,1140,1140 Footing Inspection,1
2878,13140,Marlin Chase,2824,medium,766881.0,1180,1180 Pour Footings,1
2879,13278,Mosaic,2320,medium,818814.0,1195,1195 Pin Footings,1
2880,13277,Mosaic,1704,medium,561869.0,1195,1195 Pin Footings,1
2881,13401,Welches Pond,2927,medium,731557.0,1580,1580 Form Foundation Walls,1
2882,13401,Welches Pond,2927,medium,731557.0,1820,1820 Foundation Wall Inspection,1
2883,13401,Welches Pond,2927,medium,731557.0,1860,1860 Foundation Wall Pour,1
2884,13032,Welches Pond,2812,medium,643995.0,1900,1900 Strip Foundation Forms,1
2885,13388,Marsh Island,5848,high,750956.0,2344,2344 Meter Pit Install,1
2886,13175,Peninsula Lakes,2245,low,567645.0,2460,2460 Receive Lumber Drop #1,1
2887,13092,Marlin Chase,2079,medium,433351.0,3140,3140 Pour Porch Slab,1
2888,12920,Peninsula,4116,high,1454538.0,3300,3300 1st Floor Deck Framing,1
2889,12920,Peninsula,4116,high,1454538.0,3380,3380 1st Floor Wall Framing,3
2890,13175,Peninsula Lakes,2245,low,567645.0,3540,3540 Receive Lumber Drop #2,1
2891,13137,Marlin Chase,2330,medium,637264.0,3820,3820 2nd Floor Wall Framing,1
2892,13113,Marlin Chase,2814,medium,750956.0,3820,3820 2nd Floor Wall Framing,1
2893,13175,Peninsula Lakes,2245,low,567645.0,3900,3900 Receive Lumber Drop #3,1
2894,13175,Peninsula Lakes,2245,low,567645.0,4070,4070 Receive Exterior Deck Material,1
2895,13138,Marlin Chase,3171,medium,859133.0,4100,4100 Exterior Deck Framing,1
2896,13145,Marlin Chase,3204,medium,841553.0,4100,4100 Exterior Deck Framing,1
2897,13145,Marlin Chase,3204,medium,841553.0,4260,4260 Receive Windows,1
2898,13138,Marlin Chase,3171,medium,859133.0,4260,4260 Receive Windows,1
2899,13138,Marlin Chase,3171,medium,859133.0,4300,4300 Receive Window/Door Flashings,1
2900,13145,Marlin Chase,3204,medium,841553.0,4300,4300 Receive Window/Door Flashings,1
2901,13145,Marlin Chase,3204,medium,841553.0,4340,4340 Receive Exterior Doors,1
2902,13138,Marlin Chase,3171,medium,859133.0,4340,4340 Receive Exterior Doors,1
2903,13138,Marlin Chase,3171,medium,859133.0,4390,4390 Receive Roofing Material,1
2904,13145,Marlin Chase,3204,medium,841553.0,4390,4390 Receive Roofing Material,1
2905,13035,Forest Hills,4024,medium,816522.0,4580,4580 Install Roofing,6
2906,13020,Peninsula Lakes,2100,low,578095.0,4582,4582 Install Temp Poly,1
2907,13145,Marlin Chase,3204,medium,841553.0,4775,4775 Receive Hardwood Stairs,1
2908,12993,Peninsula,5996,high,750956.0,4940,4940 Install Fireplace,1
2909,13139,Marlin Chase,2554,medium,704067.0,4980,4980 Plumbing Rough,2
2910,13440,Marlin Chase,3067,medium,714189.0,5300,5300 Municipal Electric Inspection,1
2911,13020,Peninsula Lakes,2100,low,578095.0,5825,5825 Frame Punch,1
2912,13101,Marlin Chase,2461,medium,682900.0,5900,5900 Air Seal,1
2913,13440,Marlin Chase,3067,medium,714189.0,5900,5900 Air Seal,1
2914,13137,Marlin Chase,2330,medium,637264.0,5940,5940 Order Cabinets,1
2915,13137,Marlin Chase,2330,medium,637264.0,5941,5941 Order Cabinet Hardware,1
2916,13092,Marlin Chase,2079,medium,433351.0,6380,6380 Install Drywall,7
2917,13440,Marlin Chase,3067,medium,714189.0,6390,6390 Schedule Gas Meter,1
2918,13092,Marlin Chase,2079,medium,433351.0,6620,6620 Receive Vinyl Siding,1
2919,13092,Marlin Chase,2079,medium,433351.0,6700,6700 Receive Composite Ext Trim,1
2920,13092,Marlin Chase,2079,medium,433351.0,6720,6720 Receive Siding Accents,1
2921,13092,Marlin Chase,2079,medium,433351.0,6725,6725 Receive Shutters,1
2922,13092,Marlin Chase,2079,medium,433351.0,6740,6740 Receive PVC Exterior Trim,1
2923,13092,Marlin Chase,2079,medium,433351.0,6781,6781 Receive Column Wrap/Flower Bx/Pediment,1
2924,13092,Marlin Chase,2079,medium,433351.0,6820,6820 Receive Deck Skirting,1
2925,12850,Peninsula,5715,high,750956.0,8300,8300 Install Cabinets,2
2926,12850,Peninsula,5715,high,750956.0,8380,8380 Template Countertops,1
2927,12850,Peninsula,5715,high,750956.0,9540,9540 Rec. GE Appliance Pkg1 Allocation,1
2928,12850,Peninsula,5715,high,750956.0,9620,9620 Install Appliances,1
2929,12649,Peninsula,5996,high,750956.0,10780,10780 Customer Walk,1
2930,12673,Peninsula,5996,high,750956.0,0,vancheck Check Vanity Tops/Windows for Damage,1
2931,13144,Marlin Chase,3055,medium,740636.0,0,00000 START,1
2932,13339,Peninsula,5583,high,750956.0,0,00000 START,1
2933,13144,Marlin Chase,3055,medium,740636.0,1,1 START  CONSTRUCTION,1
2934,13020,Peninsula Lakes,2100,low,578095.0,3,3 TRADES START,1
2935,13144,Marlin Chase,3055,medium,740636.0,252,252 Site Plan,1
2936,13339,Peninsula,5583,high,750956.0,252,252 Site Plan,1
2937,13339,Peninsula,5583,high,750956.0,260,260 Plan Review/Permit Allocation,0
2938,13144,Marlin Chase,3055,medium,740636.0,260,260 Plan Review/Permit Allocation,0
2939,13144,Marlin Chase,3055,medium,740636.0,900,900 Bldg Stakeout,1
2940,13144,Marlin Chase,3055,medium,740636.0,901,901 Engineering Allocation,0
2941,13339,Peninsula,5583,high,750956.0,901,901 Engineering Allocation,0
2942,13020,Peninsula Lakes,2100,low,578095.0,980,980 Install Silt Fence,1
2943,13258,River Mill,3064,medium,670416.0,1020,1020 Install Construction Entrance,1
2944,13144,Marlin Chase,3055,medium,740636.0,1020,1020 Install Construction Entrance,1
2945,13144,Marlin Chase,3055,medium,740636.0,1060,1060 Foundation Excavation,1
2946,13144,Marlin Chase,3055,medium,740636.0,1780,1780 Order Steel,1
2947,13401,Welches Pond,2927,medium,731557.0,1900,1900 Strip Foundation Forms,1
2948,13032,Welches Pond,2812,medium,643995.0,1940,1940 Install Perimeter Drain/Croc,1
2949,13388,Marsh Island,5848,high,750956.0,2020,2020 Install Underground Plumbing,1
2950,13032,Welches Pond,2812,medium,643995.0,2060,2060 Waterproof Foundation Walls,1
2951,13339,Peninsula,5583,high,750956.0,2230,2230 Receive Dumpster Allocation,1
2952,13144,Marlin Chase,3055,medium,740636.0,2230,2230 Receive Dumpster Allocation,1
2953,13144,Marlin Chase,3055,medium,740636.0,2240,2240 Receive Portable Toilet Allocation,1
2954,13339,Peninsula,5583,high,750956.0,2240,2240 Receive Portable Toilet Allocation,1
2955,13175,Peninsula Lakes,2245,low,567645.0,3300,3300 1st Floor Deck Framing,2
2956,13175,Peninsula Lakes,2245,low,567645.0,3700,3700 Receive Trusses,1
2957,13113,Marlin Chase,2814,medium,750956.0,4020,4020 Set Trusses,1
2958,13137,Marlin Chase,2330,medium,637264.0,4020,4020 Set Trusses,3
2959,13145,Marlin Chase,3204,medium,841553.0,4071,4071 Receive Exterior Decking,1
2960,13138,Marlin Chase,3171,medium,859133.0,4071,4071 Receive Exterior Decking,1
2961,13137,Marlin Chase,2330,medium,637264.0,4230,4230 Receive Housewrap/Flashing,1
2962,13035,Forest Hills,4024,medium,816522.0,4540,4540 Install Windows,1
2963,13145,Marlin Chase,3204,medium,841553.0,4540,4540 Install Windows,1
2964,13138,Marlin Chase,3171,medium,859133.0,4540,4540 Install Windows,1
2965,13138,Marlin Chase,3171,medium,859133.0,4580,4580 Install Roofing,4
2966,13145,Marlin Chase,3204,medium,841553.0,4580,4580 Install Roofing,2
2967,13035,Forest Hills,4024,medium,816522.0,4582,4582 Install Temp Poly,1
2968,13101,Marlin Chase,2461,medium,682900.0,4700,4700 Internal Framing Inspection,1
2969,13440,Marlin Chase,3067,medium,714189.0,4700,4700 Internal Framing Inspection,1
2970,13035,Forest Hills,4024,medium,816522.0,4701,4701 Frame Check,1
2971,13145,Marlin Chase,3204,medium,841553.0,4701,4701 Frame Check,1
2972,13138,Marlin Chase,3171,medium,859133.0,4701,4701 Frame Check,1
2973,13035,Forest Hills,4024,medium,816522.0,4775,4775 Receive Hardwood Stairs,1
2974,13139,Marlin Chase,2554,medium,704067.0,4940,4940 Install Fireplace,1
2975,13020,Peninsula Lakes,2100,low,578095.0,5100,5100 HVAC Rough,2
2976,13020,Peninsula Lakes,2100,low,578095.0,5120,5120 HVAC Set Furnace,1
2977,12993,Peninsula,5996,high,750956.0,5740,5740 Install Gas Lines,1
2978,13101,Marlin Chase,2461,medium,682900.0,5820,5820 Framing Inspection,1
2979,13440,Marlin Chase,3067,medium,714189.0,5820,5820 Framing Inspection,1
2980,13092,Marlin Chase,2079,medium,433351.0,6860,6860 Siding Installation,8
2981,13339,Peninsula,5583,high,750956.0,8500,8500 Order Appliance Pkg 1,1
2982,13144,Marlin Chase,3055,medium,740636.0,8500,8500 Order Appliance Pkg 1,1
2983,13240,Peninsula Lakes,1984,low,616419.0,9101,9101 HVAC Startup,1
2984,12671,Peninsula,5870,high,750956.0,9740,9740 Fireplace Start Up,1
2985,13144,Marlin Chase,3055,medium,740636.0,9750,9750 Order Appliance Pkg 2,1
2986,13339,Peninsula,5583,high,750956.0,9750,9750 Order Appliance Pkg 2,1
2987,13339,Peninsula,5583,high,750956.0,9860,9860 Final Utility Connection,0
2988,12850,Peninsula,5715,high,750956.0,10460,10460 Drywall Touch Up,4
2989,12451,Peninsula,5195,high,750956.0,10660,10660 Quality Inspection,1
2990,12649,Peninsula,5996,high,750956.0,10820,10820 Settlement,1
2991,12959,Marsh Island,5529,high,1221345.0,10820,10820 Settlement,1
2992,12649,Peninsula,5996,high,750956.0,10888,10888 Release All Retainage,1
2993,12959,Marsh Island,5529,high,1221345.0,10888,10888 Release All Retainage,1
2994,12649,Peninsula,5996,high,750956.0,11585,11585 Exterior Paint Retainage,1
2995,12959,Marsh Island,5529,high,1221345.0,11585,11585 Exterior Paint Retainage,1
2996,12959,Marsh Island,5529,high,1221345.0,11980,11980 Sod Retainage,1
2997,12959,Marsh Island,5529,high,1221345.0,12060,12060 Irrigation Retainage,1
2998,12959,Marsh Island,5529,high,1221345.0,12100,12100 Shrub Retainage,1
2999,12649,Peninsula,5996,high,750956.0,12180,12180 Driveway Retainage,1
3000,12649,Peninsula,5996,high,750956.0,12180,12180.1 Driveway Top Coat Allocation,0
3001,12959,Marsh Island,5529,high,1221345.0,12180,12180 Driveway Retainage,1
3002,12959,Marsh Island,5529,high,1221345.0,12180,12180.1 Driveway Top Coat Allocation,0
3003,13145,Marlin Chase,3204,medium,841553.0,140,140 Framing DRAW 2,1
3004,13138,Marlin Chase,3171,medium,859133.0,140,140 Framing DRAW 2,1
3005,13175,Peninsula Lakes,2245,low,567645.0,980,980 Install Silt Fence,1
3006,13144,Marlin Chase,3055,medium,740636.0,1100,1100 Form Footings,1
3007,13144,Marlin Chase,3055,medium,740636.0,1140,1140 Footing Inspection,1
3008,13144,Marlin Chase,3055,medium,740636.0,1180,1180 Pour Footings,1
3009,13140,Marlin Chase,2824,medium,766881.0,1190,1190 Capillary Break,1
3010,13401,Welches Pond,2927,medium,731557.0,1940,1940 Install Perimeter Drain/Croc,1
3011,13088,Forest Hills,3580,medium,222544.0,1940,1940 Install Perimeter Drain/Croc,1
3012,13388,Marsh Island,5848,high,750956.0,1980,1980 Install Underground Electric,1
3013,13088,Forest Hills,3580,medium,222544.0,2060,2060 Waterproof Foundation Walls,1
3014,13401,Welches Pond,2927,medium,731557.0,2060,2060 Waterproof Foundation Walls,1
3015,13088,Forest Hills,3580,medium,222544.0,2344,2344 Meter Pit Install,1
3016,13388,Marsh Island,5848,high,750956.0,3020,3020 Termite & Pest PreTreatment,1
3017,13032,Welches Pond,2812,medium,643995.0,3060,3060 Foundation Insulation-Crawl,1
3018,13388,Marsh Island,5848,high,750956.0,3100,3100 Foundation Survey,1
3019,13175,Peninsula Lakes,2245,low,567645.0,3380,3380 1st Floor Wall Framing,2
3020,13113,Marlin Chase,2814,medium,750956.0,4380,4380 Roof Sheathing,2
3021,13138,Marlin Chase,3171,medium,859133.0,4582,4582 Install Temp Poly,1
3022,13145,Marlin Chase,3204,medium,841553.0,4582,4582 Install Temp Poly,1
3023,13139,Marlin Chase,2554,medium,704067.0,4585,4585 Install Membrane Roofing,1
3024,12993,Peninsula,5996,high,750956.0,4665,4665 Elevator Rough,2
3025,13136,Marlin Chase,3170,medium,806102.0,5180,5180 Electric Rough,4
3026,13136,Marlin Chase,3170,medium,806102.0,5740,5740 Install Gas Lines,1
3027,13139,Marlin Chase,2554,medium,704067.0,5740,5740 Install Gas Lines,1
3028,13145,Marlin Chase,3204,medium,841553.0,5825,5825 Frame Punch,1
3029,13138,Marlin Chase,3171,medium,859133.0,5825,5825 Frame Punch,1
3030,12993,Peninsula,5996,high,750956.0,5860,5860 Frame Stage Tour,1
3031,13136,Marlin Chase,3170,medium,806102.0,5860,5860 Frame Stage Tour,1
3032,13440,Marlin Chase,3067,medium,714189.0,6180,6180 Install Insulation,2
3033,13240,Peninsula Lakes,1984,low,616419.0,8540,8540 Install Bath Accessories,1
3034,13240,Peninsula Lakes,1984,low,616419.0,8545,8545 Install Mirrors,1
3035,13240,Peninsula Lakes,1984,low,616419.0,8580,8580 Install Shower Enclosures,1
3036,13240,Peninsula Lakes,1984,low,616419.0,8900,8900 Install Closet Shelving,1
3037,12850,Peninsula,5715,high,750956.0,9460,9460 Attic Insulation,1
3038,12671,Peninsula,5870,high,750956.0,9500,9500 Blower Door/Ductblaster,1
3039,12451,Peninsula,5195,high,750956.0,9940,9940 Final Inspection,1
3040,12671,Peninsula,5870,high,750956.0,9980,9980 Final Cleaning,1
3041,13240,Peninsula Lakes,1984,low,616419.0,10260,10260 Install House Numbers,1
3042,13101,Marlin Chase,2461,medium,682900.0,10940,10940 Framing Retainage,1
3043,13440,Marlin Chase,3067,medium,714189.0,10940,10940 Framing Retainage,1
3044,12649,Peninsula,5996,high,750956.0,99999,99999 HOME COMPLETE,1
3045,12959,Marsh Island,5529,high,1221345.0,99999,99999 HOME COMPLETE,1
3046,13138,Marlin Chase,3171,medium,859133.0,3,3 TRADES START,1
3047,13144,Marlin Chase,3055,medium,740636.0,1190,1190 Capillary Break,1
3048,13140,Marlin Chase,2824,medium,766881.0,1195,1195 Pin Footings,1
3049,13144,Marlin Chase,3055,medium,740636.0,1195,1195 Pin Footings,1
3050,13140,Marlin Chase,2824,medium,766881.0,1580,1580 Form Foundation Walls,1
3051,13278,Mosaic,2320,medium,818814.0,1580,1580 Form Foundation Walls,1
3052,13140,Marlin Chase,2824,medium,766881.0,1820,1820 Foundation Wall Inspection,1
3053,13140,Marlin Chase,2824,medium,766881.0,1860,1860 Foundation Wall Pour,1
3054,13401,Welches Pond,2927,medium,731557.0,3020,3020 Termite & Pest PreTreatment,1
3055,13401,Welches Pond,2927,medium,731557.0,3060,3060 Foundation Insulation-Crawl,1
3056,12920,Peninsula,4116,high,1454538.0,3780,3780 2nd Floor Deck Framing,1
3057,13175,Peninsula Lakes,2245,low,567645.0,4230,4230 Receive Housewrap/Flashing,1
3058,12993,Peninsula,5996,high,750956.0,4461,4461 Install Gas Lateral,1
3059,13137,Marlin Chase,2330,medium,637264.0,4775,4775 Receive Hardwood Stairs,1
3060,13020,Peninsula Lakes,2100,low,578095.0,4940,4940 Install Fireplace,1
3061,13020,Peninsula Lakes,2100,low,578095.0,4980,4980 Plumbing Rough,1
3062,13138,Marlin Chase,3171,medium,859133.0,5100,5100 HVAC Rough,2
3063,13138,Marlin Chase,3171,medium,859133.0,5120,5120 HVAC Set Furnace,1
3064,13175,Peninsula Lakes,2245,low,567645.0,5940,5940 Order Cabinets,1
3065,12920,Peninsula,4116,high,1454538.0,5940,5940 Order Cabinets,1
3066,13175,Peninsula Lakes,2245,low,567645.0,5941,5941 Order Cabinet Hardware,1
3067,12920,Peninsula,4116,high,1454538.0,5941,5941 Order Cabinet Hardware,1
3068,13101,Marlin Chase,2461,medium,682900.0,6180,6180 Install Insulation,2
3069,12993,Peninsula,5996,high,750956.0,6390,6390 Schedule Gas Meter,1
3070,12850,Peninsula,5715,high,750956.0,7180,7180 Install Exterior Railings,3
3071,13020,Peninsula Lakes,2100,low,578095.0,8820,8820 Schedule Irrigation Well,1
3072,12671,Peninsula,5870,high,750956.0,10100,10100 Irrigation Installation,2
3073,12850,Peninsula,5715,high,750956.0,10500,10500 Paint 2,8
3074,12451,Peninsula,5195,high,750956.0,10700,10700 Pick up C/O,1
3075,13145,Marlin Chase,3204,medium,841553.0,3,3 TRADES START,1
3076,13175,Peninsula Lakes,2245,low,567645.0,100,100 Framing DRAW 1,1
3077,12920,Peninsula,4116,high,1454538.0,100,100 Framing DRAW 1,1
3078,13277,Mosaic,1704,medium,561869.0,1580,1580 Form Foundation Walls,1
3079,13278,Mosaic,2320,medium,818814.0,1820,1820 Foundation Wall Inspection,1
3080,13278,Mosaic,2320,medium,818814.0,1860,1860 Foundation Wall Pour,1
3081,13140,Marlin Chase,2824,medium,766881.0,1900,1900 Strip Foundation Forms,1
3082,13388,Marsh Island,5848,high,750956.0,2140,2140 Underground Plumbing Inspection,1
3083,13032,Welches Pond,2812,medium,643995.0,2260,2260 Crawl Stone/Sand,2
3084,13032,Welches Pond,2812,medium,643995.0,2340,2340 Backfill & Compact,2
3085,13140,Marlin Chase,2824,medium,766881.0,2440,2440 Receive Steel,1
3086,12920,Peninsula,4116,high,1454538.0,3820,3820 2nd Floor Wall Framing,1
3087,13175,Peninsula Lakes,2245,low,567645.0,4020,4020 Set Trusses,3
3088,13408,NewMarket,3940,medium,889253.0,4020,4020 Set Trusses,4
3089,13113,Marlin Chase,2814,medium,750956.0,4071,4071 Receive Exterior Decking,1
3090,13113,Marlin Chase,2814,medium,750956.0,4100,4100 Exterior Deck Framing,1
3091,13113,Marlin Chase,2814,medium,750956.0,4260,4260 Receive Windows,1
3092,13113,Marlin Chase,2814,medium,750956.0,4300,4300 Receive Window/Door Flashings,1
3093,13113,Marlin Chase,2814,medium,750956.0,4340,4340 Receive Exterior Doors,1
3094,13137,Marlin Chase,2330,medium,637264.0,4380,4380 Roof Sheathing,2
3095,13113,Marlin Chase,2814,medium,750956.0,4390,4390 Receive Roofing Material,1
3096,13139,Marlin Chase,2554,medium,704067.0,4460,4460 Schedule Gas Lateral Contractor,1
3097,13113,Marlin Chase,2814,medium,750956.0,4777,4777 Receive Box Stairs,1
3098,13145,Marlin Chase,3204,medium,841553.0,5100,5100 HVAC Rough,2
3099,13145,Marlin Chase,3204,medium,841553.0,5120,5120 HVAC Set Furnace,1
3100,13136,Marlin Chase,3170,medium,806102.0,5580,5580 Structured Wiring Rough,1
3101,13020,Peninsula Lakes,2100,low,578095.0,5860,5860 Frame Stage Tour,1
3102,13101,Marlin Chase,2461,medium,682900.0,6300,6300 Energy Inspection,1
3103,13440,Marlin Chase,3067,medium,714189.0,6300,6300 Energy Inspection,1
3104,13101,Marlin Chase,2461,medium,682900.0,6345,6345 Stock Drywall,1
3105,13440,Marlin Chase,3067,medium,714189.0,6345,6345 Stock Drywall,1
3106,12959,Marsh Island,5529,high,1221345.0,10140,10140 Sod Installation,1
3107,12959,Marsh Island,5529,high,1221345.0,10180,10180 Shrub Installation,1
3108,12850,Peninsula,5715,high,750956.0,0,vancheck Check Vanity Tops/Windows for Damage,1
3109,13030,Peninsula,5546,high,1768191.0,0,00000 START,1
3110,13030,Peninsula,5546,high,1768191.0,1,1 START  CONSTRUCTION,1
3111,13339,Peninsula,5583,high,750956.0,1,1 START  CONSTRUCTION,1
3112,13030,Peninsula,5546,high,1768191.0,252,252 Site Plan,1
3113,13030,Peninsula,5546,high,1768191.0,260,260 Plan Review/Permit Allocation,0
3114,13030,Peninsula,5546,high,1768191.0,900,900 Bldg Stakeout,1
3115,13339,Peninsula,5583,high,750956.0,900,900 Bldg Stakeout,1
3116,13030,Peninsula,5546,high,1768191.0,901,901 Engineering Allocation,0
3117,13030,Peninsula,5546,high,1768191.0,980,980 Install Silt Fence,1
3118,13339,Peninsula,5583,high,750956.0,980,980 Install Silt Fence,1
3119,13339,Peninsula,5583,high,750956.0,1020,1020 Install Construction Entrance,1
3120,13144,Marlin Chase,3055,medium,740636.0,1580,1580 Form Foundation Walls,1
3121,13030,Peninsula,5546,high,1768191.0,1780,1780 Order Steel,1
3122,13339,Peninsula,5583,high,750956.0,1780,1780 Order Steel,1
3123,13277,Mosaic,1704,medium,561869.0,1820,1820 Foundation Wall Inspection,1
3124,13277,Mosaic,1704,medium,561869.0,1860,1860 Foundation Wall Pour,1
3125,13278,Mosaic,2320,medium,818814.0,1900,1900 Strip Foundation Forms,1
3126,13140,Marlin Chase,2824,medium,766881.0,1940,1940 Install Perimeter Drain/Croc,1
3127,13140,Marlin Chase,2824,medium,766881.0,2060,2060 Waterproof Foundation Walls,1
3128,13088,Forest Hills,3580,medium,222544.0,2120,2120 Install Brick Foundation,2
3129,13030,Peninsula,5546,high,1768191.0,2230,2230 Receive Dumpster Allocation,1
3130,13030,Peninsula,5546,high,1768191.0,2240,2240 Receive Portable Toilet Allocation,1
3131,13388,Marsh Island,5848,high,750956.0,2250,2250 Slab Prep,1
3132,13401,Welches Pond,2927,medium,731557.0,2260,2260 Crawl Stone/Sand,1
3133,13401,Welches Pond,2927,medium,731557.0,2340,2340 Backfill & Compact,1
3134,13388,Marsh Island,5848,high,750956.0,2420,2420 Slab Inspection,1
3135,13101,Marlin Chase,2461,medium,682900.0,3140,3140 Pour Porch Slab,1
3136,12920,Peninsula,4116,high,1454538.0,4020,4020 Set Trusses,4
3137,13138,Marlin Chase,3171,medium,859133.0,4460,4460 Schedule Gas Lateral Contractor,1
3138,13113,Marlin Chase,2814,medium,750956.0,4540,4540 Install Windows,1
3139,13113,Marlin Chase,2814,medium,750956.0,4580,4580 Install Roofing,2
3140,13136,Marlin Chase,3170,medium,806102.0,4591,4591 Install Metal Roof Flashing,1
3141,13113,Marlin Chase,2814,medium,750956.0,4701,4701 Frame Check,1
3142,13138,Marlin Chase,3171,medium,859133.0,4980,4980 Plumbing Rough,2
3143,13136,Marlin Chase,3170,medium,806102.0,5260,5260 Mechanical Rough Inspection,1
3144,13139,Marlin Chase,2554,medium,704067.0,5860,5860 Frame Stage Tour,1
3145,13035,Forest Hills,4024,medium,816522.0,5941,5941 Order Cabinet Hardware,1
3146,13101,Marlin Chase,2461,medium,682900.0,6380,6380 Install Drywall,10
3147,13101,Marlin Chase,2461,medium,682900.0,6620,6620 Receive Vinyl Siding,1
3148,13440,Marlin Chase,3067,medium,714189.0,6620,6620 Receive Vinyl Siding,1
3149,13101,Marlin Chase,2461,medium,682900.0,6700,6700 Receive Composite Ext Trim,1
3150,13440,Marlin Chase,3067,medium,714189.0,6700,6700 Receive Composite Ext Trim,1
3151,13440,Marlin Chase,3067,medium,714189.0,6705,6705 Receive Trellis Material,1
3152,13101,Marlin Chase,2461,medium,682900.0,6720,6720 Receive Siding Accents,1
3153,13440,Marlin Chase,3067,medium,714189.0,6720,6720 Receive Siding Accents,1
3154,13440,Marlin Chase,3067,medium,714189.0,6721,6721 Receive Brackets,1
3155,13440,Marlin Chase,3067,medium,714189.0,6725,6725 Receive Shutters,1
3156,13101,Marlin Chase,2461,medium,682900.0,6740,6740 Receive PVC Exterior Trim,1
3157,13440,Marlin Chase,3067,medium,714189.0,6740,6740 Receive PVC Exterior Trim,1
3158,13101,Marlin Chase,2461,medium,682900.0,6781,6781 Receive Column Wrap/Flower Bx/Pediment,1
3159,13440,Marlin Chase,3067,medium,714189.0,6781,6781 Receive Column Wrap/Flower Bx/Pediment,1
3160,13101,Marlin Chase,2461,medium,682900.0,6820,6820 Receive Deck Skirting,1
3161,13440,Marlin Chase,3067,medium,714189.0,6820,6820 Receive Deck Skirting,1
3162,13240,Peninsula Lakes,1984,low,616419.0,7825,7825 Crawl Poly,1
3163,13240,Peninsula Lakes,1984,low,616419.0,8460,8460 Install Countertops,1
3164,12850,Peninsula,5715,high,750956.0,8460,8460 Install Countertops,1
3165,13278,Mosaic,2320,medium,818814.0,8500,8500 Order Appliance Pkg 1,1
3166,13030,Peninsula,5546,high,1768191.0,8500,8500 Order Appliance Pkg 1,1
3167,13240,Peninsula Lakes,1984,low,616419.0,9700,9700 Install Hardwood Flooring,1
3168,12673,Peninsula,5996,high,750956.0,9700,9700 Install Hardwood Flooring,1
3169,13030,Peninsula,5546,high,1768191.0,9750,9750 Order Appliance Pkg 2,1
3170,13278,Mosaic,2320,medium,818814.0,9750,9750 Order Appliance Pkg 2,1
3171,12850,Peninsula,5715,high,750956.0,9820,9820 Install Gutters,1
3172,13030,Peninsula,5546,high,1768191.0,9860,9860 Final Utility Connection,0
3173,12671,Peninsula,5870,high,750956.0,10140,10140 Sod Installation,3
3174,12671,Peninsula,5870,high,750956.0,10180,10180 Shrub Installation,1
3175,12673,Peninsula,5996,high,750956.0,0,cabcheck Check Cabinets for Damage,1
3176,13152,Marlin Chase,2710,medium,768496.0,0,00000 START,1
3177,13152,Marlin Chase,2710,medium,768496.0,1,1 START  CONSTRUCTION,1
3178,13032,Welches Pond,2812,medium,643995.0,2,2 FRAMING START,1
3179,13113,Marlin Chase,2814,medium,750956.0,140,140 Framing DRAW 2,1
3180,13152,Marlin Chase,2710,medium,768496.0,252,252 Site Plan,1
3181,13152,Marlin Chase,2710,medium,768496.0,260,260 Plan Review/Permit Allocation,0
3182,13152,Marlin Chase,2710,medium,768496.0,900,900 Bldg Stakeout,1
3183,13152,Marlin Chase,2710,medium,768496.0,901,901 Engineering Allocation,0
3184,13152,Marlin Chase,2710,medium,768496.0,980,980 Install Silt Fence,1
3185,13144,Marlin Chase,3055,medium,740636.0,980,980 Install Silt Fence,1
3186,13152,Marlin Chase,2710,medium,768496.0,1020,1020 Install Construction Entrance,1
3187,13152,Marlin Chase,2710,medium,768496.0,1060,1060 Foundation Excavation,1
3188,13152,Marlin Chase,2710,medium,768496.0,1780,1780 Order Steel,1
3189,13258,River Mill,3064,medium,670416.0,1780,1780 Order Steel,1
3190,13144,Marlin Chase,3055,medium,740636.0,1860,1860 Foundation Wall Pour,1
3191,13144,Marlin Chase,3055,medium,740636.0,1900,1900 Strip Foundation Forms,1
3192,13277,Mosaic,1704,medium,561869.0,1900,1900 Strip Foundation Forms,1
3193,13278,Mosaic,2320,medium,818814.0,1940,1940 Install Perimeter Drain/Croc,1
3194,13278,Mosaic,2320,medium,818814.0,2060,2060 Waterproof Foundation Walls,1
3195,13278,Mosaic,2320,medium,818814.0,2120,2120 Install Brick Foundation,1
3196,13152,Marlin Chase,2710,medium,768496.0,2230,2230 Receive Dumpster Allocation,1
3197,13152,Marlin Chase,2710,medium,768496.0,2240,2240 Receive Portable Toilet Allocation,1
3198,13401,Welches Pond,2927,medium,731557.0,2344,2344 Meter Pit Install,19
3199,13388,Marsh Island,5848,high,750956.0,2385,2385 Pour SOG Slab,1
3200,13032,Welches Pond,2812,medium,643995.0,2460,2460 Receive Lumber Drop #1,1
3201,13032,Welches Pond,2812,medium,643995.0,2540,2540 Receive 1st Floor Joists,1
3202,13032,Welches Pond,2812,medium,643995.0,2700,2700 Pour Garage Slab,1
3203,13388,Marsh Island,5848,high,750956.0,2700,2700 Pour Garage Slab,1
3204,13401,Welches Pond,2927,medium,731557.0,2700,2700 Pour Garage Slab,1
3205,13140,Marlin Chase,2824,medium,766881.0,3020,3020 Termite & Pest PreTreatment,1
3206,13140,Marlin Chase,2824,medium,766881.0,3060,3060 Foundation Insulation-Crawl,1
3207,13401,Welches Pond,2927,medium,731557.0,3100,3100 Foundation Survey,1
3208,13032,Welches Pond,2812,medium,643995.0,3540,3540 Receive Lumber Drop #2,1
3209,13032,Welches Pond,2812,medium,643995.0,3740,3740 Receive 2nd Floor Joists,1
3210,13032,Welches Pond,2812,medium,643995.0,3900,3900 Receive Lumber Drop #3,1
3211,13137,Marlin Chase,2330,medium,637264.0,4100,4100 Exterior Deck Framing,1
3212,13137,Marlin Chase,2330,medium,637264.0,4260,4260 Receive Windows,1
3213,13137,Marlin Chase,2330,medium,637264.0,4300,4300 Receive Window/Door Flashings,1
3214,13137,Marlin Chase,2330,medium,637264.0,4340,4340 Receive Exterior Doors,1
3215,13137,Marlin Chase,2330,medium,637264.0,4390,4390 Receive Roofing Material,1
3216,13113,Marlin Chase,2814,medium,750956.0,4582,4582 Install Temp Poly,1
3217,13136,Marlin Chase,3170,medium,806102.0,4700,4700 Internal Framing Inspection,1
3218,13145,Marlin Chase,3204,medium,841553.0,4980,4980 Plumbing Rough,2
3219,13139,Marlin Chase,2554,medium,704067.0,5180,5180 Electric Rough,3
3220,12993,Peninsula,5996,high,750956.0,5180,5180 Electric Rough,10
3221,13136,Marlin Chase,3170,medium,806102.0,5220,5220 Solar Rough,1
3222,13136,Marlin Chase,3170,medium,806102.0,5300,5300 Municipal Electric Inspection,1
3223,13113,Marlin Chase,2814,medium,750956.0,5825,5825 Frame Punch,1
3224,13136,Marlin Chase,3170,medium,806102.0,5900,5900 Air Seal,1
3225,13440,Marlin Chase,3067,medium,714189.0,6380,6380 Install Drywall,10
3226,13035,Forest Hills,4024,medium,816522.0,6390,6390 Schedule Gas Meter,1
3227,13101,Marlin Chase,2461,medium,682900.0,6860,6860 Siding Installation,11
3228,13152,Marlin Chase,2710,medium,768496.0,8500,8500 Order Appliance Pkg 1,1
3229,12850,Peninsula,5715,high,750956.0,8579,8579 Template Shower Enclosure,1
3230,13240,Peninsula Lakes,1984,low,616419.0,9660,9660 Install Carpet Flooring,1
3231,12673,Peninsula,5996,high,750956.0,9660,9660 Install Carpet Flooring,1
3232,13152,Marlin Chase,2710,medium,768496.0,9750,9750 Order Appliance Pkg 2,1
3233,13240,Peninsula Lakes,1984,low,616419.0,10301,10301 Driveway Apron,1
3234,13240,Peninsula Lakes,1984,low,616419.0,10340,10340 Install Leadwalk & Comm. Sidewalk,1
3235,12451,Peninsula,5195,high,750956.0,10780,10780 Customer Walk,1
3236,13240,Peninsula Lakes,1984,low,616419.0,0,cabcheck Check Cabinets for Damage,1
3237,12850,Peninsula,5715,high,750956.0,0,cabcheck Check Cabinets for Damage,1
3238,13120,Marsh Island,4291,medium,851477.0,0,00000 START,1
3239,13120,Marsh Island,4291,medium,851477.0,1,1 START  CONSTRUCTION,1
3240,13401,Welches Pond,2927,medium,731557.0,2,2 FRAMING START,1
3241,13388,Marsh Island,5848,high,750956.0,2,2 FRAMING START,1
3242,13035,Forest Hills,4024,medium,816522.0,3,3 TRADES START,1
3243,13113,Marlin Chase,2814,medium,750956.0,3,3 TRADES START,1
3244,13120,Marsh Island,4291,medium,851477.0,252,252 Site Plan,1
3245,13120,Marsh Island,4291,medium,851477.0,260,260 Plan Review/Permit Allocation,0
3246,13120,Marsh Island,4291,medium,851477.0,857,857 Rough Stake for Clearing,0
3247,13120,Marsh Island,4291,medium,851477.0,900,900 Bldg Stakeout,1
3248,13120,Marsh Island,4291,medium,851477.0,901,901 Engineering Allocation,0
3249,13120,Marsh Island,4291,medium,851477.0,980,980 Install Silt Fence,1
3250,13120,Marsh Island,4291,medium,851477.0,1020,1020 Install Construction Entrance,1
3251,13120,Marsh Island,4291,medium,851477.0,1060,1060 Foundation Excavation,1
3252,13152,Marlin Chase,2710,medium,768496.0,1100,1100 Form Footings,1
3253,13152,Marlin Chase,2710,medium,768496.0,1140,1140 Footing Inspection,1
3254,13152,Marlin Chase,2710,medium,768496.0,1180,1180 Pour Footings,1
3255,13120,Marsh Island,4291,medium,851477.0,1780,1780 Order Steel,1
3256,13144,Marlin Chase,3055,medium,740636.0,1940,1940 Install Perimeter Drain/Croc,1
3257,13144,Marlin Chase,3055,medium,740636.0,2060,2060 Waterproof Foundation Walls,1
3258,13277,Mosaic,1704,medium,561869.0,2060,2060 Waterproof Foundation Walls,1
3259,13277,Mosaic,1704,medium,561869.0,2120,2120 Install Brick Foundation,1
3260,13120,Marsh Island,4291,medium,851477.0,2230,2230 Receive Dumpster Allocation,1
3261,13120,Marsh Island,4291,medium,851477.0,2240,2240 Receive Portable Toilet Allocation,1
3262,13140,Marlin Chase,2824,medium,766881.0,2260,2260 Crawl Stone/Sand,1
3263,13088,Forest Hills,3580,medium,222544.0,2260,2260 Crawl Stone/Sand,1
3264,13088,Forest Hills,3580,medium,222544.0,2340,2340 Backfill & Compact,1
3265,13140,Marlin Chase,2824,medium,766881.0,2340,2340 Backfill & Compact,1
3266,13401,Welches Pond,2927,medium,731557.0,2440,2440 Receive Steel,1
3267,13388,Marsh Island,5848,high,750956.0,2440,2440 Receive Steel,1
3268,13388,Marsh Island,5848,high,750956.0,2460,2460 Receive Lumber Drop #1,1
3269,13401,Welches Pond,2927,medium,731557.0,2460,2460 Receive Lumber Drop #1,1
3270,13401,Welches Pond,2927,medium,731557.0,2540,2540 Receive 1st Floor Joists,1
3271,13388,Marsh Island,5848,high,750956.0,2540,2540 Receive 1st Floor Joists,1
3272,13032,Welches Pond,2812,medium,643995.0,3020,3020 Termite & Pest PreTreatment,1
3273,13032,Welches Pond,2812,medium,643995.0,3300,3300 1st Floor Deck Framing,1
3274,13388,Marsh Island,5848,high,750956.0,3540,3540 Receive Lumber Drop #2,1
3275,13401,Welches Pond,2927,medium,731557.0,3540,3540 Receive Lumber Drop #2,1
3276,13401,Welches Pond,2927,medium,731557.0,3740,3740 Receive 2nd Floor Joists,1
3277,13388,Marsh Island,5848,high,750956.0,3740,3740 Receive 2nd Floor Joists,1
3278,13388,Marsh Island,5848,high,750956.0,3900,3900 Receive Lumber Drop #3,1
3279,13401,Welches Pond,2927,medium,731557.0,3900,3900 Receive Lumber Drop #3,1
3280,13388,Marsh Island,5848,high,750956.0,3990,3990 Receive 3nd Floor Joists,1
3281,13032,Welches Pond,2812,medium,643995.0,4070,4070 Receive Exterior Deck Material,1
3282,13137,Marlin Chase,2330,medium,637264.0,4071,4071 Receive Exterior Decking,1
3283,13175,Peninsula Lakes,2245,low,567645.0,4380,4380 Roof Sheathing,1
3284,13020,Peninsula Lakes,2100,low,578095.0,4460,4460 Schedule Gas Lateral Contractor,1
3285,13137,Marlin Chase,2330,medium,637264.0,4580,4580 Install Roofing,2
3286,13137,Marlin Chase,2330,medium,637264.0,4701,4701 Frame Check,1
3287,13138,Marlin Chase,3171,medium,859133.0,4940,4940 Install Fireplace,1
3288,13113,Marlin Chase,2814,medium,750956.0,5100,5100 HVAC Rough,3
3289,13035,Forest Hills,4024,medium,816522.0,5100,5100 HVAC Rough,5
3290,13035,Forest Hills,4024,medium,816522.0,5120,5120 HVAC Set Furnace,1
3291,13113,Marlin Chase,2814,medium,750956.0,5120,5120 HVAC Set Furnace,2
3292,13136,Marlin Chase,3170,medium,806102.0,5820,5820 Framing Inspection,1
3293,13035,Forest Hills,4024,medium,816522.0,5940,5940 Order Cabinets,1
3294,13440,Marlin Chase,3067,medium,714189.0,6860,6860 Siding Installation,15
3295,13240,Peninsula Lakes,1984,low,616419.0,7861,7861 Interior Trim Punch,1
3296,12673,Peninsula,5996,high,750956.0,7861,7861 Interior Trim Punch,1
3297,13092,Marlin Chase,2079,medium,433351.0,8420,8420 1st Paint,1
3298,13120,Marsh Island,4291,medium,851477.0,8500,8500 Order Appliance Pkg 1,1
3299,12673,Peninsula,5996,high,750956.0,8940,8940 Plumbing Trim,2
3300,12850,Peninsula,5715,high,750956.0,9020,9020 Electric Trim,14
3301,13092,Marlin Chase,2079,medium,433351.0,9140,9140 2nd Stage Air Seal,1
3302,13120,Marsh Island,4291,medium,851477.0,9750,9750 Order Appliance Pkg 2,1
3303,13120,Marsh Island,4291,medium,851477.0,9860,9860 Final Utility Connection,0
3304,12673,Peninsula,5996,high,750956.0,9980,9980 Final Cleaning,1
3305,13240,Peninsula Lakes,1984,low,616419.0,10020,10020 Final Grade,1
3306,13240,Peninsula Lakes,1984,low,616419.0,10300,10300 Install Driveway,1
3307,12850,Peninsula,5715,high,750956.0,10300,10300 Install Driveway,1
3308,12850,Peninsula,5715,high,750956.0,10340,10340 Install Leadwalk & Comm. Sidewalk,1
3309,12451,Peninsula,5195,high,750956.0,10888,10888 Release All Retainage,1
3310,13136,Marlin Chase,3170,medium,806102.0,10940,10940 Framing Retainage,1
3311,12451,Peninsula,5195,high,750956.0,11585,11585 Exterior Paint Retainage,1
3312,12451,Peninsula,5195,high,750956.0,12180,12180 Driveway Retainage,1
3313,12451,Peninsula,5195,high,750956.0,12180,12180.1 Driveway Top Coat Allocation,0
3314,13140,Marlin Chase,2824,medium,766881.0,2,2 FRAMING START,1
3315,13140,Marlin Chase,2824,medium,766881.0,100,100 Framing DRAW 1,1
3316,13120,Marsh Island,4291,medium,851477.0,1100,1100 Form Footings,1
3317,13120,Marsh Island,4291,medium,851477.0,1140,1140 Footing Inspection,1
3318,13120,Marsh Island,4291,medium,851477.0,1180,1180 Pour Footings,1
3319,13152,Marlin Chase,2710,medium,768496.0,1190,1190 Capillary Break,1
3320,13152,Marlin Chase,2710,medium,768496.0,1195,1195 Pin Footings,1
3321,13253,River Mill,2912,medium,692624.0,1780,1780 Order Steel,1
3322,13144,Marlin Chase,3055,medium,740636.0,1820,1820 Foundation Wall Inspection,1
3323,13278,Mosaic,2320,medium,818814.0,2040,2040 Foundation Inspection,1
3324,13032,Welches Pond,2812,medium,643995.0,2440,2440 Receive Steel,1
3325,13140,Marlin Chase,2824,medium,766881.0,2460,2460 Receive Lumber Drop #1,1
3326,13140,Marlin Chase,2824,medium,766881.0,2540,2540 Receive 1st Floor Joists,1
3327,13140,Marlin Chase,2824,medium,766881.0,2700,2700 Pour Garage Slab,1
3328,13088,Forest Hills,3580,medium,222544.0,2700,2700 Pour Garage Slab,3
3329,13144,Marlin Chase,3055,medium,740636.0,3020,3020 Termite & Pest PreTreatment,1
3330,13144,Marlin Chase,3055,medium,740636.0,3060,3060 Foundation Insulation-Crawl,1
3331,13140,Marlin Chase,2824,medium,766881.0,3100,3100 Foundation Survey,1
3332,13401,Welches Pond,2927,medium,731557.0,3300,3300 1st Floor Deck Framing,1
3333,13388,Marsh Island,5848,high,750956.0,3300,3300 1st Floor Deck Framing,1
3334,13032,Welches Pond,2812,medium,643995.0,3380,3380 1st Floor Wall Framing,1
3335,13140,Marlin Chase,2824,medium,766881.0,3540,3540 Receive Lumber Drop #2,1
3336,13032,Welches Pond,2812,medium,643995.0,3700,3700 Receive Trusses,1
3337,13140,Marlin Chase,2824,medium,766881.0,3740,3740 Receive 2nd Floor Joists,1
3338,13140,Marlin Chase,2824,medium,766881.0,3900,3900 Receive Lumber Drop #3,1
3339,13401,Welches Pond,2927,medium,731557.0,4070,4070 Receive Exterior Deck Material,1
3340,13388,Marsh Island,5848,high,750956.0,4070,4070 Receive Exterior Deck Material,1
3341,13175,Peninsula Lakes,2245,low,567645.0,4100,4100 Exterior Deck Framing,1
3342,13408,NewMarket,3940,medium,889253.0,4380,4380 Roof Sheathing,3
3343,13175,Peninsula Lakes,2245,low,567645.0,4390,4390 Receive Roofing Material,1
3344,12920,Peninsula,4116,high,1454538.0,4460,4460 Schedule Gas Lateral Contractor,1
3345,13032,Welches Pond,2812,medium,643995.0,4460,4460 Schedule Gas Lateral Contractor,1
3346,13137,Marlin Chase,2330,medium,637264.0,4540,4540 Install Windows,1
3347,13137,Marlin Chase,2330,medium,637264.0,4582,4582 Install Temp Poly,1
3348,13138,Marlin Chase,3171,medium,859133.0,5180,5180 Electric Rough,6
3349,13139,Marlin Chase,2554,medium,704067.0,5260,5260 Mechanical Rough Inspection,1
3350,13139,Marlin Chase,2554,medium,704067.0,5580,5580 Structured Wiring Rough,1
3351,13145,Marlin Chase,3204,medium,841553.0,5740,5740 Install Gas Lines,1
3352,13020,Peninsula Lakes,2100,low,578095.0,5740,5740 Install Gas Lines,1
3353,13137,Marlin Chase,2330,medium,637264.0,5825,5825 Frame Punch,1
3354,13138,Marlin Chase,3171,medium,859133.0,5860,5860 Frame Stage Tour,1
3355,13032,Welches Pond,2812,medium,643995.0,5940,5940 Order Cabinets,1
3356,13032,Welches Pond,2812,medium,643995.0,5941,5941 Order Cabinet Hardware,1
3357,13136,Marlin Chase,3170,medium,806102.0,6180,6180 Install Insulation,2
3358,13240,Peninsula Lakes,1984,low,616419.0,6381,6381 Drywall Punch,1
3359,12673,Peninsula,5996,high,750956.0,6381,6381 Drywall Punch,1
3360,12850,Peninsula,5715,high,750956.0,7060,7060 Exterior Masonry Installation,12
3361,13092,Marlin Chase,2079,medium,433351.0,7340,7340 Install Ceramic Tile,2
3362,13092,Marlin Chase,2079,medium,433351.0,7350,7350 Install Shower Tile,3
3363,13092,Marlin Chase,2079,medium,433351.0,7380,7380 Install Vinyl Floors,1
3364,13092,Marlin Chase,2079,medium,433351.0,8020,8020 Receive Interior Railing,1
3365,13092,Marlin Chase,2079,medium,433351.0,8220,8220 Install Fireplace Surround/Mantel,1
3366,13240,Peninsula Lakes,1984,low,616419.0,8465,8465 Install Tiled Backsplash,1
3367,13240,Peninsula Lakes,1984,low,616419.0,8920,8920 Install Water Heater/1st Trim,1
3368,12850,Peninsula,5715,high,750956.0,8920,8920 Install Water Heater/1st Trim,1
3369,13240,Peninsula Lakes,1984,low,616419.0,8940,8940 Plumbing Trim,4
3370,12850,Peninsula,5715,high,750956.0,9100,9100 HVAC Trim / Set Unit,1
3371,13240,Peninsula Lakes,1984,low,616419.0,10100,10100 Irrigation Installation,1
3372,13240,Peninsula Lakes,1984,low,616419.0,10220,10220 Install Mailbox,1
3373,13240,Peninsula Lakes,1984,low,616419.0,10380,10380 As Built Survey,1
3374,12671,Peninsula,5870,high,750956.0,10420,10420 Powerwash,1
3375,12673,Peninsula,5996,high,750956.0,10501,10501 Paint Retouch,5
3376,13088,Forest Hills,3580,medium,222544.0,2,2 FRAMING START,1
3377,13137,Marlin Chase,2330,medium,637264.0,3,3 TRADES START,1
3378,13137,Marlin Chase,2330,medium,637264.0,140,140 Framing DRAW 2,1
3379,13258,River Mill,3064,medium,670416.0,1060,1060 Foundation Excavation,1
3380,13258,River Mill,3064,medium,670416.0,1180,1180 Pour Footings,1
3381,13120,Marsh Island,4291,medium,851477.0,1190,1190 Capillary Break,1
3382,13120,Marsh Island,4291,medium,851477.0,1195,1195 Pin Footings,1
3383,13253,River Mill,2912,medium,692624.0,1580,1580 Form Foundation Walls,1
3384,13152,Marlin Chase,2710,medium,768496.0,1580,1580 Form Foundation Walls,1
3385,13152,Marlin Chase,2710,medium,768496.0,1820,1820 Foundation Wall Inspection,1
3386,13152,Marlin Chase,2710,medium,768496.0,1860,1860 Foundation Wall Pour,1
3387,13277,Mosaic,1704,medium,561869.0,2040,2040 Foundation Inspection,1
3388,13144,Marlin Chase,3055,medium,740636.0,2260,2260 Crawl Stone/Sand,1
3389,13144,Marlin Chase,3055,medium,740636.0,2340,2340 Backfill & Compact,1
3390,13088,Forest Hills,3580,medium,222544.0,2460,2460 Receive Lumber Drop #1,1
3391,13088,Forest Hills,3580,medium,222544.0,2540,2540 Receive 1st Floor Joists,1
3392,13140,Marlin Chase,2824,medium,766881.0,3300,3300 1st Floor Deck Framing,1
3393,12920,Peninsula,4116,high,1454538.0,3340,3340 Basement Wall Framing,1
3394,13388,Marsh Island,5848,high,750956.0,3380,3380 1st Floor Wall Framing,1
3395,13401,Welches Pond,2927,medium,731557.0,3380,3380 1st Floor Wall Framing,1
3396,13088,Forest Hills,3580,medium,222544.0,3540,3540 Receive Lumber Drop #2,1
3397,13401,Welches Pond,2927,medium,731557.0,3700,3700 Receive Trusses,1
3398,13388,Marsh Island,5848,high,750956.0,3700,3700 Receive Trusses,1
3399,13088,Forest Hills,3580,medium,222544.0,3740,3740 Receive 2nd Floor Joists,1
3400,13032,Welches Pond,2812,medium,643995.0,3780,3780 2nd Floor Deck Framing,1
3401,13088,Forest Hills,3580,medium,222544.0,3900,3900 Receive Lumber Drop #3,1
3402,13032,Welches Pond,2812,medium,643995.0,4020,4020 Set Trusses,1
3403,13140,Marlin Chase,2824,medium,766881.0,4070,4070 Receive Exterior Deck Material,1
3404,13175,Peninsula Lakes,2245,low,567645.0,4071,4071 Receive Exterior Decking,1
3405,13175,Peninsula Lakes,2245,low,567645.0,4260,4260 Receive Windows,1
3406,13175,Peninsula Lakes,2245,low,567645.0,4300,4300 Receive Window/Door Flashings,1
3407,12920,Peninsula,4116,high,1454538.0,4380,4380 Roof Sheathing,4
3408,13388,Marsh Island,5848,high,750956.0,4460,4460 Schedule Gas Lateral Contractor,1
3409,13401,Welches Pond,2927,medium,731557.0,4460,4460 Schedule Gas Lateral Contractor,1
3410,13145,Marlin Chase,3204,medium,841553.0,4461,4461 Install Gas Lateral,1
3411,13175,Peninsula Lakes,2245,low,567645.0,4580,4580 Install Roofing,2
3412,13137,Marlin Chase,2330,medium,637264.0,4585,4585 Install Membrane Roofing,1
3413,13138,Marlin Chase,3171,medium,859133.0,4585,4585 Install Membrane Roofing,1
3414,13092,Marlin Chase,2079,medium,433351.0,4981,4981 Deliver Sinks,1
3415,13137,Marlin Chase,2330,medium,637264.0,5100,5100 HVAC Rough,2
3416,13137,Marlin Chase,2330,medium,637264.0,5120,5120 HVAC Set Furnace,1
3417,13145,Marlin Chase,3204,medium,841553.0,5180,5180 Electric Rough,7
3418,13020,Peninsula Lakes,2100,low,578095.0,5180,5180 Electric Rough,3
3419,13139,Marlin Chase,2554,medium,704067.0,5300,5300 Municipal Electric Inspection,1
3420,13138,Marlin Chase,3171,medium,859133.0,5740,5740 Install Gas Lines,1
3421,13139,Marlin Chase,2554,medium,704067.0,5900,5900 Air Seal,1
3422,13401,Welches Pond,2927,medium,731557.0,5940,5940 Order Cabinets,1
3423,13401,Welches Pond,2927,medium,731557.0,5941,5941 Order Cabinet Hardware,1
3424,13092,Marlin Chase,2079,medium,433351.0,6884,6884 Measure Screen Porch Enclosure,1
3425,13092,Marlin Chase,2079,medium,433351.0,7220,7220 Install Deck Skirting/Flower Boxes,1
3426,13092,Marlin Chase,2079,medium,433351.0,7300,7300 Receive Interior Trim,1
3427,13092,Marlin Chase,2079,medium,433351.0,7304,7304 Receive Goodie Box,1
3428,13092,Marlin Chase,2079,medium,433351.0,7700,7700 Receive Interior Doors,1
3429,13092,Marlin Chase,2079,medium,433351.0,7862,7862 Receive Cabinet Hardware Allocation,1
3430,13092,Marlin Chase,2079,medium,433351.0,7866,7866 Receive Door Hardware,1
3431,13092,Marlin Chase,2079,medium,433351.0,7900,7900 Receive Cabinets Allocation,1
3432,13092,Marlin Chase,2079,medium,433351.0,7901,7901 Cabinet Delivery Charges,1
3433,13092,Marlin Chase,2079,medium,433351.0,7940,7940 Receive Vanity Tops,1
3434,13092,Marlin Chase,2079,medium,433351.0,8260,8260 Install Interior Railing,1
3435,12850,Peninsula,5715,high,750956.0,8545,8545 Install Mirrors,1
3436,12850,Peninsula,5715,high,750956.0,8580,8580 Install Shower Enclosures,1
3437,12850,Peninsula,5715,high,750956.0,8900,8900 Install Closet Shelving,1
3438,12673,Peninsula,5996,high,750956.0,9110,9110 Gas Trim,1
3439,12993,Peninsula,5996,high,750956.0,9390,9390 Install Water Meter/Sewer Frame,1
3440,13020,Peninsula Lakes,2100,low,578095.0,9390,9390 Install Water Meter/Sewer Frame,1
3441,13136,Marlin Chase,3170,medium,806102.0,9390,9390 Install Water Meter/Sewer Frame,1
3442,13136,Marlin Chase,3170,medium,806102.0,9900,9900 Water Lateral,1
3443,12993,Peninsula,5996,high,750956.0,9900,9900 Water Lateral,1
3444,12993,Peninsula,5996,high,750956.0,9905,9905 Sewer Lateral,1
3445,13136,Marlin Chase,3170,medium,806102.0,9905,9905 Sewer Lateral,1
3446,12673,Peninsula,5996,high,750956.0,9940,9940 Final Inspection,1
3447,13090,Marsh Island,5603,high,1154185.0,9980,9980 Final Cleaning,1
3448,13090,Marsh Island,5603,high,1154185.0,10020,10020 Final Grade,1
3449,13090,Marsh Island,5603,high,1154185.0,10100,10100 Irrigation Installation,1
3450,13240,Peninsula Lakes,1984,low,616419.0,10140,10140 Sod Installation,1
3451,13240,Peninsula Lakes,1984,low,616419.0,10180,10180 Shrub Installation,1
3452,12850,Peninsula,5715,high,750956.0,10260,10260 Install House Numbers,1
3453,12850,Peninsula,5715,high,750956.0,10380,10380 As Built Survey,1
3454,13032,Welches Pond,2812,medium,643995.0,100,100 Framing DRAW 1,1
3455,13030,Peninsula,5546,high,1768191.0,1020,1020 Install Construction Entrance,1
3456,13258,River Mill,3064,medium,670416.0,1100,1100 Form Footings,1
3457,13258,River Mill,3064,medium,670416.0,1190,1190 Capillary Break,1
3458,13258,River Mill,3064,medium,670416.0,1195,1195 Pin Footings,1
3459,13120,Marsh Island,4291,medium,851477.0,1580,1580 Form Foundation Walls,1
3460,13120,Marsh Island,4291,medium,851477.0,1820,1820 Foundation Wall Inspection,1
3461,13253,River Mill,2912,medium,692624.0,1820,1820 Foundation Wall Inspection,1
3462,13253,River Mill,2912,medium,692624.0,1860,1860 Foundation Wall Pour,1
3463,13120,Marsh Island,4291,medium,851477.0,1860,1860 Foundation Wall Pour,1
3464,13152,Marlin Chase,2710,medium,768496.0,1900,1900 Strip Foundation Forms,1
3465,13144,Marlin Chase,3055,medium,740636.0,2700,2700 Pour Garage Slab,1
3466,13144,Marlin Chase,3055,medium,740636.0,3100,3100 Foundation Survey,1
3467,13088,Forest Hills,3580,medium,222544.0,3300,3300 1st Floor Deck Framing,5
3468,13140,Marlin Chase,2824,medium,766881.0,3380,3380 1st Floor Wall Framing,1
3469,13140,Marlin Chase,2824,medium,766881.0,3700,3700 Receive Trusses,1
3470,13388,Marsh Island,5848,high,750956.0,3780,3780 2nd Floor Deck Framing,1
3471,13401,Welches Pond,2927,medium,731557.0,3780,3780 2nd Floor Deck Framing,1
3472,13032,Welches Pond,2812,medium,643995.0,3820,3820 2nd Floor Wall Framing,1
3473,13088,Forest Hills,3580,medium,222544.0,4230,4230 Receive Housewrap/Flashing,1
3474,13175,Peninsula Lakes,2245,low,567645.0,4340,4340 Receive Exterior Doors,1
3475,13032,Welches Pond,2812,medium,643995.0,4380,4380 Roof Sheathing,1
3476,13140,Marlin Chase,2824,medium,766881.0,4460,4460 Schedule Gas Lateral Contractor,1
3477,13175,Peninsula Lakes,2245,low,567645.0,4540,4540 Install Windows,1
3478,13175,Peninsula Lakes,2245,low,567645.0,4582,4582 Install Temp Poly,1
3479,13113,Marlin Chase,2814,medium,750956.0,4591,4591 Install Metal Roof Flashing,1
3480,13139,Marlin Chase,2554,medium,704067.0,4700,4700 Internal Framing Inspection,1
3481,13175,Peninsula Lakes,2245,low,567645.0,4701,4701 Frame Check,1
3482,13113,Marlin Chase,2814,medium,750956.0,4980,4980 Plumbing Rough,2
3483,13140,Marlin Chase,2824,medium,766881.0,5940,5940 Order Cabinets,1
3484,13140,Marlin Chase,2824,medium,766881.0,5941,5941 Order Cabinet Hardware,1
3485,13136,Marlin Chase,3170,medium,806102.0,6300,6300 Energy Inspection,1
3486,13136,Marlin Chase,3170,medium,806102.0,6345,6345 Stock Drywall,1
3487,13145,Marlin Chase,3204,medium,841553.0,6390,6390 Schedule Gas Meter,1
3488,13092,Marlin Chase,2079,medium,433351.0,7860,7860 Install Interior Trim,2
3489,12850,Peninsula,5715,high,750956.0,8465,8465 Install Tiled Backsplash,1
3490,13476,Durham Farms,4277,medium,750956.0,8500,8500 Order Appliance Pkg 1,1
3491,12673,Peninsula,5996,high,750956.0,8980,8980 Final Plumbing Inspection,1
3492,12850,Peninsula,5715,high,750956.0,9101,9101 HVAC Startup,1
3493,13240,Peninsula Lakes,1984,low,616419.0,9110,9110 Gas Trim,1
3494,12673,Peninsula,5996,high,750956.0,9740,9740 Fireplace Start Up,1
3495,13476,Durham Farms,4277,medium,750956.0,9750,9750 Order Appliance Pkg 2,1
3496,13240,Peninsula Lakes,1984,low,616419.0,9755,9755 Rec. GE Appliance Pkg2 Allocation,1
3497,12673,Peninsula,5996,high,750956.0,9755,9755 Rec. GE Appliance Pkg2 Allocation,1
3498,12673,Peninsula,5996,high,750956.0,9756,9756 Receive N/S Appliance Pkg 2,1
3499,13020,Peninsula Lakes,2100,low,578095.0,9900,9900 Water Lateral,1
3500,13020,Peninsula Lakes,2100,low,578095.0,9905,9905 Sewer Lateral,1
3501,13136,Marlin Chase,3170,medium,806102.0,9910,9910 Utility Grade,1
3502,13240,Peninsula Lakes,1984,low,616419.0,9980,9980 Final Cleaning,1
3503,12671,Peninsula,5870,high,750956.0,9985,9985 Final Clean 2,1
3504,12850,Peninsula,5715,high,750956.0,9990,9990 2nd Stage Termite Treatment,1
3505,13240,Peninsula Lakes,1984,low,616419.0,10501,10501 Paint Retouch,5
3506,13090,Marsh Island,5603,high,1154185.0,10501,10501 Paint Retouch,1
3507,13240,Peninsula Lakes,1984,low,616419.0,10620,10620 Punch Out Allocation,1
3508,12673,Peninsula,5996,high,750956.0,10620,10620 Punch Out Allocation,1
3509,13112,Marlin Chase,3171,medium,634940.0,0,00000 START,1
3510,13112,Marlin Chase,3171,medium,634940.0,1,1 START  CONSTRUCTION,1
3511,13144,Marlin Chase,3055,medium,740636.0,2,2 FRAMING START,1
3512,13388,Marsh Island,5848,high,750956.0,100,100 Framing DRAW 1,1
3513,13401,Welches Pond,2927,medium,731557.0,100,100 Framing DRAW 1,1
3514,13175,Peninsula Lakes,2245,low,567645.0,140,140 Framing DRAW 2,1
3515,13112,Marlin Chase,3171,medium,634940.0,252,252 Site Plan,1
3516,13112,Marlin Chase,3171,medium,634940.0,260,260 Plan Review/Permit Allocation,0
3517,13112,Marlin Chase,3171,medium,634940.0,900,900 Bldg Stakeout,1
3518,13112,Marlin Chase,3171,medium,634940.0,901,901 Engineering Allocation,0
3519,13112,Marlin Chase,3171,medium,634940.0,1020,1020 Install Construction Entrance,1
3520,13030,Peninsula,5546,high,1768191.0,1100,1100 Form Footings,1
3521,13339,Peninsula,5583,high,750956.0,1100,1100 Form Footings,1
3522,13030,Peninsula,5546,high,1768191.0,1140,1140 Footing Inspection,1
3523,13339,Peninsula,5583,high,750956.0,1140,1140 Footing Inspection,1
3524,13258,River Mill,3064,medium,670416.0,1140,1140 Footing Inspection,1
3525,13030,Peninsula,5546,high,1768191.0,1180,1180 Pour Footings,1
3526,13339,Peninsula,5583,high,750956.0,1180,1180 Pour Footings,1
3527,13258,River Mill,3064,medium,670416.0,1580,1580 Form Foundation Walls,2
3528,13112,Marlin Chase,3171,medium,634940.0,1780,1780 Order Steel,1
3529,13253,River Mill,2912,medium,692624.0,1900,1900 Strip Foundation Forms,1
3530,13120,Marsh Island,4291,medium,851477.0,1900,1900 Strip Foundation Forms,1
3531,13152,Marlin Chase,2710,medium,768496.0,1940,1940 Install Perimeter Drain/Croc,1
3532,13277,Mosaic,1704,medium,561869.0,1940,1940 Install Perimeter Drain/Croc,1
3533,13152,Marlin Chase,2710,medium,768496.0,2060,2060 Waterproof Foundation Walls,1
3534,13112,Marlin Chase,3171,medium,634940.0,2230,2230 Receive Dumpster Allocation,1
3535,13112,Marlin Chase,3171,medium,634940.0,2240,2240 Receive Portable Toilet Allocation,1
3536,13277,Mosaic,1704,medium,561869.0,2340,2340 Backfill & Compact,1
3537,13278,Mosaic,2320,medium,818814.0,2340,2340 Backfill & Compact,1
3538,13144,Marlin Chase,3055,medium,740636.0,2440,2440 Receive Steel,1
3539,13144,Marlin Chase,3055,medium,740636.0,2460,2460 Receive Lumber Drop #1,1
3540,13136,Marlin Chase,3170,medium,806102.0,3140,3140 Pour Porch Slab,1
3541,13144,Marlin Chase,3055,medium,740636.0,3540,3540 Receive Lumber Drop #2,1
3542,13144,Marlin Chase,3055,medium,740636.0,3740,3740 Receive 2nd Floor Joists,1
3543,13140,Marlin Chase,2824,medium,766881.0,3780,3780 2nd Floor Deck Framing,1
3544,13401,Welches Pond,2927,medium,731557.0,3820,3820 2nd Floor Wall Framing,1
3545,13388,Marsh Island,5848,high,750956.0,3820,3820 2nd Floor Wall Framing,2
3546,13144,Marlin Chase,3055,medium,740636.0,3900,3900 Receive Lumber Drop #3,1
3547,13408,NewMarket,3940,medium,889253.0,4100,4100 Exterior Deck Framing,1
3548,13032,Welches Pond,2812,medium,643995.0,4230,4230 Receive Housewrap/Flashing,1
3549,13032,Welches Pond,2812,medium,643995.0,4260,4260 Receive Windows,1
3550,13408,NewMarket,3940,medium,889253.0,4260,4260 Receive Windows,1
3551,13408,NewMarket,3940,medium,889253.0,4300,4300 Receive Window/Door Flashings,1
3552,13032,Welches Pond,2812,medium,643995.0,4300,4300 Receive Window/Door Flashings,1
3553,13032,Welches Pond,2812,medium,643995.0,4340,4340 Receive Exterior Doors,2
3554,13408,NewMarket,3940,medium,889253.0,4340,4340 Receive Exterior Doors,1
3555,13408,NewMarket,3940,medium,889253.0,4390,4390 Receive Roofing Material,1
3556,12920,Peninsula,4116,high,1454538.0,4390,4390 Receive Roofing Material,1
3557,13032,Welches Pond,2812,medium,643995.0,4390,4390 Receive Roofing Material,1
3558,13175,Peninsula Lakes,2245,low,567645.0,4591,4591 Install Metal Roof Flashing,1
3559,13388,Marsh Island,5848,high,750956.0,4660,4660 Schedule Elevator Rough,1
3560,13140,Marlin Chase,2824,medium,766881.0,4775,4775 Receive Hardwood Stairs,1
3561,13137,Marlin Chase,2330,medium,637264.0,4940,4940 Install Fireplace,1
3562,13137,Marlin Chase,2330,medium,637264.0,4980,4980 Plumbing Rough,2
3563,13020,Peninsula Lakes,2100,low,578095.0,5260,5260 Mechanical Rough Inspection,1
3564,13020,Peninsula Lakes,2100,low,578095.0,5580,5580 Structured Wiring Rough,1
3565,13175,Peninsula Lakes,2245,low,567645.0,5825,5825 Frame Punch,1
3566,13136,Marlin Chase,3170,medium,806102.0,6380,6380 Install Drywall,10
3567,13136,Marlin Chase,3170,medium,806102.0,6620,6620 Receive Vinyl Siding,1
3568,13136,Marlin Chase,3170,medium,806102.0,6700,6700 Receive Composite Ext Trim,1
3569,13136,Marlin Chase,3170,medium,806102.0,6705,6705 Receive Trellis Material,1
3570,13136,Marlin Chase,3170,medium,806102.0,6720,6720 Receive Siding Accents,1
3571,13136,Marlin Chase,3170,medium,806102.0,6721,6721 Receive Brackets,1
3572,13136,Marlin Chase,3170,medium,806102.0,6725,6725 Receive Shutters,1
3573,13136,Marlin Chase,3170,medium,806102.0,6740,6740 Receive PVC Exterior Trim,1
3574,13136,Marlin Chase,3170,medium,806102.0,6781,6781 Receive Column Wrap/Flower Bx/Pediment,1
3575,13136,Marlin Chase,3170,medium,806102.0,6820,6820 Receive Deck Skirting,1
3576,13092,Marlin Chase,2079,medium,433351.0,8300,8300 Install Cabinets,2
3577,13112,Marlin Chase,3171,medium,634940.0,8500,8500 Order Appliance Pkg 1,1
3578,13092,Marlin Chase,2079,medium,433351.0,8579,8579 Template Shower Enclosure,1
3579,13440,Marlin Chase,3067,medium,714189.0,9390,9390 Install Water Meter/Sewer Frame,1
3580,13092,Marlin Chase,2079,medium,433351.0,9540,9540 Rec. GE Appliance Pkg1 Allocation,1
3581,12850,Peninsula,5715,high,750956.0,9700,9700 Install Hardwood Flooring,1
3582,13112,Marlin Chase,3171,medium,634940.0,9750,9750 Order Appliance Pkg 2,1
3583,13440,Marlin Chase,3067,medium,714189.0,9900,9900 Water Lateral,1
3584,13440,Marlin Chase,3067,medium,714189.0,9905,9905 Sewer Lateral,1
3585,12671,Peninsula,5870,high,750956.0,9940,9940 Final Inspection,1
3586,12671,Peninsula,5870,high,750956.0,10660,10660 Quality Inspection,1
3587,12451,Peninsula,5195,high,750956.0,10820,10820 Settlement,1
3588,13139,Marlin Chase,2554,medium,704067.0,10940,10940 Framing Retainage,1
3589,13240,Peninsula Lakes,1984,low,616419.0,0,appcheck Check Appliances for Damage,1
3590,13477,Cardinal Grove,2589,medium,750956.0,0,00000 START,1
3591,13392,Marsh Island,2795,medium,771707.0,0,00000 START,1
3592,13392,Marsh Island,2795,medium,771707.0,1,1 START  CONSTRUCTION,1
3593,13477,Cardinal Grove,2589,medium,750956.0,1,1 START  CONSTRUCTION,1
3594,13175,Peninsula Lakes,2245,low,567645.0,3,3 TRADES START,1
3595,13477,Cardinal Grove,2589,medium,750956.0,252,252 Site Plan,1
3596,13392,Marsh Island,2795,medium,771707.0,252,252 Site Plan,1
3597,13392,Marsh Island,2795,medium,771707.0,260,260 Plan Review/Permit Allocation,0
3598,13477,Cardinal Grove,2589,medium,750956.0,260,260 Plan Review/Permit Allocation,0
3599,13477,Cardinal Grove,2589,medium,750956.0,900,900 Bldg Stakeout,1
3600,13392,Marsh Island,2795,medium,771707.0,900,900 Bldg Stakeout,1
3601,13392,Marsh Island,2795,medium,771707.0,901,901 Engineering Allocation,0
3602,13477,Cardinal Grove,2589,medium,750956.0,901,901 Engineering Allocation,0
3603,13477,Cardinal Grove,2589,medium,750956.0,980,980 Install Silt Fence,1
3604,13392,Marsh Island,2795,medium,771707.0,980,980 Install Silt Fence,1
3605,13392,Marsh Island,2795,medium,771707.0,1020,1020 Install Construction Entrance,1
3606,13477,Cardinal Grove,2589,medium,750956.0,1020,1020 Install Construction Entrance,1
3607,13112,Marlin Chase,3171,medium,634940.0,1060,1060 Foundation Excavation,1
3608,13030,Peninsula,5546,high,1768191.0,1190,1190 Capillary Break,1
3609,13339,Peninsula,5583,high,750956.0,1190,1190 Capillary Break,1
3610,13339,Peninsula,5583,high,750956.0,1195,1195 Pin Footings,1
3611,13392,Marsh Island,2795,medium,771707.0,1780,1780 Order Steel,1
3612,13477,Cardinal Grove,2589,medium,750956.0,1780,1780 Order Steel,1
3613,13339,Peninsula,5583,high,750956.0,1860,1860 Foundation Wall Pour,1
3614,13253,River Mill,2912,medium,692624.0,1940,1940 Install Perimeter Drain/Croc,1
3615,13120,Marsh Island,4291,medium,851477.0,1940,1940 Install Perimeter Drain/Croc,1
3616,13278,Mosaic,2320,medium,818814.0,1980,1980 Install Underground Electric,1
3617,13278,Mosaic,2320,medium,818814.0,2020,2020 Install Underground Plumbing,1
3618,13253,River Mill,2912,medium,692624.0,2060,2060 Waterproof Foundation Walls,1
3619,13120,Marsh Island,4291,medium,851477.0,2060,2060 Waterproof Foundation Walls,1
3620,13477,Cardinal Grove,2589,medium,750956.0,2230,2230 Receive Dumpster Allocation,1
3621,13392,Marsh Island,2795,medium,771707.0,2230,2230 Receive Dumpster Allocation,1
3622,13392,Marsh Island,2795,medium,771707.0,2240,2240 Receive Portable Toilet Allocation,1
3623,13477,Cardinal Grove,2589,medium,750956.0,2240,2240 Receive Portable Toilet Allocation,1
3624,13278,Mosaic,2320,medium,818814.0,2344,2344 Meter Pit Install,1
3625,13277,Mosaic,1704,medium,561869.0,2344,2344 Meter Pit Install,1
3626,13144,Marlin Chase,3055,medium,740636.0,2540,2540 Receive 1st Floor Joists,1
3627,13152,Marlin Chase,2710,medium,768496.0,3020,3020 Termite & Pest PreTreatment,1
3628,13152,Marlin Chase,2710,medium,768496.0,3060,3060 Foundation Insulation-Crawl,1
3629,13278,Mosaic,2320,medium,818814.0,3100,3100 Foundation Survey,1
3630,13277,Mosaic,1704,medium,561869.0,3100,3100 Foundation Survey,1
3631,13144,Marlin Chase,3055,medium,740636.0,3300,3300 1st Floor Deck Framing,1
3632,13140,Marlin Chase,2824,medium,766881.0,3820,3820 2nd Floor Wall Framing,1
3633,13401,Welches Pond,2927,medium,731557.0,4020,4020 Set Trusses,2
3634,13144,Marlin Chase,3055,medium,740636.0,4070,4070 Receive Exterior Deck Material,1
3635,13032,Welches Pond,2812,medium,643995.0,4071,4071 Receive Exterior Decking,1
3636,13401,Welches Pond,2927,medium,731557.0,4230,4230 Receive Housewrap/Flashing,1
3637,13137,Marlin Chase,2330,medium,637264.0,4460,4460 Schedule Gas Lateral Contractor,1
3638,13032,Welches Pond,2812,medium,643995.0,4540,4540 Install Windows,1
3639,13408,NewMarket,3940,medium,889253.0,4540,4540 Install Windows,1
3640,13092,Marlin Chase,2079,medium,433351.0,4542,4542 Measure/Order Window Coverings,1
3641,13408,NewMarket,3940,medium,889253.0,4580,4580 Install Roofing,2
3642,12920,Peninsula,4116,high,1454538.0,4580,4580 Install Roofing,2
3643,13032,Welches Pond,2812,medium,643995.0,4580,4580 Install Roofing,2
3644,13139,Marlin Chase,2554,medium,704067.0,4591,4591 Install Metal Roof Flashing,1
3645,13138,Marlin Chase,3171,medium,859133.0,4591,4591 Install Metal Roof Flashing,1
3646,13032,Welches Pond,2812,medium,643995.0,4701,4701 Frame Check,1
3647,13408,NewMarket,3940,medium,889253.0,4701,4701 Frame Check,1
3648,13175,Peninsula Lakes,2245,low,567645.0,5100,5100 HVAC Rough,2
3649,13175,Peninsula Lakes,2245,low,567645.0,5120,5120 HVAC Set Furnace,1
3650,12993,Peninsula,5996,high,750956.0,5260,5260 Mechanical Rough Inspection,1
3651,13020,Peninsula Lakes,2100,low,578095.0,5300,5300 Municipal Electric Inspection,1
3652,13113,Marlin Chase,2814,medium,750956.0,5740,5740 Install Gas Lines,1
3653,12993,Peninsula,5996,high,750956.0,5900,5900 Air Seal,1
3654,13020,Peninsula Lakes,2100,low,578095.0,5900,5900 Air Seal,1
3655,13392,Marsh Island,2795,medium,771707.0,8500,8500 Order Appliance Pkg 1,1
3656,13477,Cardinal Grove,2589,medium,750956.0,8500,8500 Order Appliance Pkg 1,1
3657,13101,Marlin Chase,2461,medium,682900.0,9140,9140 2nd Stage Air Seal,1
3658,12850,Peninsula,5715,high,750956.0,9660,9660 Install Carpet Flooring,1
3659,13240,Peninsula Lakes,1984,low,616419.0,9740,9740 Fireplace Start Up,5
3660,13477,Cardinal Grove,2589,medium,750956.0,9750,9750 Order Appliance Pkg 2,1
3661,13392,Marsh Island,2795,medium,771707.0,9750,9750 Order Appliance Pkg 2,1
3662,13392,Marsh Island,2795,medium,771707.0,9860,9860 Final Utility Connection,0
3663,13477,Cardinal Grove,2589,medium,750956.0,9860,9860 Final Utility Connection,0
3664,13440,Marlin Chase,3067,medium,714189.0,9910,9910 Utility Grade,1
3665,13240,Peninsula Lakes,1984,low,616419.0,9990,9990 2nd Stage Termite Treatment,1
3666,13477,Cardinal Grove,2589,medium,750956.0,10300,10300.1 Driveway/Curb Repair Allowance,0
3667,13392,Marsh Island,2795,medium,771707.0,10300,10300.1 Driveway/Curb Repair Allowance,0
3668,13092,Marlin Chase,2079,medium,433351.0,10460,10460 Drywall Touch Up,3
3669,12451,Peninsula,5195,high,750956.0,99999,99999 HOME COMPLETE,1
3670,13032,Welches Pond,2812,medium,643995.0,140,140 Framing DRAW 2,1
3671,13408,NewMarket,3940,medium,889253.0,140,140 Framing DRAW 2,1
3672,13477,Cardinal Grove,2589,medium,750956.0,1060,1060 Foundation Excavation,1
3673,13392,Marsh Island,2795,medium,771707.0,1060,1060 Foundation Excavation,1
3674,13030,Peninsula,5546,high,1768191.0,1580,1580 Form Foundation Walls,1
3675,13339,Peninsula,5583,high,750956.0,1580,1580 Form Foundation Walls,1
3676,13030,Peninsula,5546,high,1768191.0,1820,1820 Foundation Wall Inspection,1
3677,13339,Peninsula,5583,high,750956.0,1820,1820 Foundation Wall Inspection,1
3678,13258,River Mill,3064,medium,670416.0,1820,1820 Foundation Wall Inspection,2
3679,13030,Peninsula,5546,high,1768191.0,1860,1860 Foundation Wall Pour,1
3680,13030,Peninsula,5546,high,1768191.0,1900,1900 Strip Foundation Forms,1
3681,13339,Peninsula,5583,high,750956.0,1900,1900 Strip Foundation Forms,1
3682,13278,Mosaic,2320,medium,818814.0,2140,2140 Underground Plumbing Inspection,1
3683,13253,River Mill,2912,medium,692624.0,2260,2260 Crawl Stone/Sand,1
3684,13152,Marlin Chase,2710,medium,768496.0,2260,2260 Crawl Stone/Sand,1
3685,13253,River Mill,2912,medium,692624.0,2340,2340 Backfill & Compact,1
3686,13152,Marlin Chase,2710,medium,768496.0,2340,2340 Backfill & Compact,1
3687,13120,Marsh Island,4291,medium,851477.0,3020,3020 Termite & Pest PreTreatment,1
3688,13144,Marlin Chase,3055,medium,740636.0,3380,3380 1st Floor Wall Framing,1
3689,13144,Marlin Chase,3055,medium,740636.0,3700,3700 Receive Trusses,1
3690,13388,Marsh Island,5848,high,750956.0,3940,3940 3rd Floor Deck Framing,1
3691,13388,Marsh Island,5848,high,750956.0,3980,3980 3rd Floor Wall Framing,2
3692,13140,Marlin Chase,2824,medium,766881.0,4020,4020 Set Trusses,1
3693,12920,Peninsula,4116,high,1454538.0,4100,4100 Exterior Deck Framing,1
3694,13140,Marlin Chase,2824,medium,766881.0,4230,4230 Receive Housewrap/Flashing,1
3695,12920,Peninsula,4116,high,1454538.0,4260,4260 Receive Windows,1
3696,12920,Peninsula,4116,high,1454538.0,4300,4300 Receive Window/Door Flashings,1
3697,12920,Peninsula,4116,high,1454538.0,4340,4340 Receive Exterior Doors,1
3698,13408,NewMarket,3940,medium,889253.0,4460,4460 Schedule Gas Lateral Contractor,1
3699,13144,Marlin Chase,3055,medium,740636.0,4460,4460 Schedule Gas Lateral Contractor,1
3700,13408,NewMarket,3940,medium,889253.0,4582,4582 Install Temp Poly,1
3701,12993,Peninsula,5996,high,750956.0,4700,4700 Internal Framing Inspection,1
3702,13020,Peninsula Lakes,2100,low,578095.0,4700,4700 Internal Framing Inspection,1
3703,13408,NewMarket,3940,medium,889253.0,4775,4775 Receive Hardwood Stairs,1
3704,12920,Peninsula,4116,high,1454538.0,4777,4777 Receive Box Stairs,1
3705,13138,Marlin Chase,3171,medium,859133.0,5580,5580 Structured Wiring Rough,1
3706,13408,NewMarket,3940,medium,889253.0,5825,5825 Frame Punch,1
3707,13032,Welches Pond,2812,medium,643995.0,5825,5825 Frame Punch,1
3708,13408,NewMarket,3940,medium,889253.0,5940,5940 Order Cabinets,1
3709,13408,NewMarket,3940,medium,889253.0,5941,5941 Order Cabinet Hardware,1
3710,13035,Forest Hills,4024,medium,816522.0,6910,6910 Install Brick Façade,1
3711,13092,Marlin Chase,2079,medium,433351.0,8380,8380 Template Countertops,1
3712,13090,Marsh Island,5603,high,1154185.0,8540,8540 Install Bath Accessories,13
3713,12850,Peninsula,5715,high,750956.0,9110,9110 Gas Trim,1
3714,13440,Marlin Chase,3067,medium,714189.0,9140,9140 2nd Stage Air Seal,1
3715,13138,Marlin Chase,3171,medium,859133.0,9390,9390 Install Water Meter/Sewer Frame,1
3716,13138,Marlin Chase,3171,medium,859133.0,9900,9900 Water Lateral,1
3717,13139,Marlin Chase,2554,medium,704067.0,9900,9900 Water Lateral,1
3718,13138,Marlin Chase,3171,medium,859133.0,9905,9905 Sewer Lateral,1
3719,12673,Peninsula,5996,high,750956.0,9985,9985 Final Clean 2,1
3720,12673,Peninsula,5996,high,750956.0,10420,10420 Powerwash,1
3721,13032,Welches Pond,2812,medium,643995.0,3,3 TRADES START,1
3722,13477,Cardinal Grove,2589,medium,750956.0,1100,1100 Form Footings,1
3723,13477,Cardinal Grove,2589,medium,750956.0,1140,1140 Footing Inspection,1
3724,13477,Cardinal Grove,2589,medium,750956.0,1180,1180 Pour Footings,1
3725,13258,River Mill,3064,medium,670416.0,1860,1860 Foundation Wall Pour,1
3726,13440,Marlin Chase,3067,medium,714189.0,2344,2344 Meter Pit Install,1
3727,13253,River Mill,2912,medium,692624.0,2344,2344 Meter Pit Install,1
3728,13278,Mosaic,2320,medium,818814.0,2382,2382 Slab Insulation,1
3729,13030,Peninsula,5546,high,1768191.0,2382,2382 Slab Insulation,1
3730,13339,Peninsula,5583,high,750956.0,2382,2382 Slab Insulation,1
3731,13088,Forest Hills,3580,medium,222544.0,2440,2440 Receive Steel,1
3732,13152,Marlin Chase,2710,medium,768496.0,3100,3100 Foundation Survey,1
3733,13144,Marlin Chase,3055,medium,740636.0,3780,3780 2nd Floor Deck Framing,1
3734,13035,Forest Hills,4024,medium,816522.0,4070,4070 Receive Exterior Deck Material,1
3735,12920,Peninsula,4116,high,1454538.0,4071,4071 Receive Exterior Decking,1
3736,13388,Marsh Island,5848,high,750956.0,4230,4230 Receive Housewrap/Flashing,1
3737,13401,Welches Pond,2927,medium,731557.0,4380,4380 Roof Sheathing,2
3738,13140,Marlin Chase,2824,medium,766881.0,4380,4380 Roof Sheathing,3
3739,12920,Peninsula,4116,high,1454538.0,4540,4540 Install Windows,1
3740,13032,Welches Pond,2812,medium,643995.0,4582,4582 Install Temp Poly,1
3741,13408,NewMarket,3940,medium,889253.0,4585,4585 Install Membrane Roofing,1
3742,13408,NewMarket,3940,medium,889253.0,4591,4591 Install Metal Roof Flashing,1
3743,12920,Peninsula,4116,high,1454538.0,4701,4701 Frame Check,1
3744,13175,Peninsula Lakes,2245,low,567645.0,4980,4980 Plumbing Rough,2
3745,13138,Marlin Chase,3171,medium,859133.0,5260,5260 Mechanical Rough Inspection,1
3746,13138,Marlin Chase,3171,medium,859133.0,5300,5300 Municipal Electric Inspection,1
3747,13139,Marlin Chase,2554,medium,704067.0,5820,5820 Framing Inspection,1
3748,13138,Marlin Chase,3171,medium,859133.0,5900,5900 Air Seal,1
3749,12850,Peninsula,5715,high,750956.0,6381,6381 Drywall Punch,1
3750,13408,NewMarket,3940,medium,889253.0,6390,6390 Schedule Gas Meter,1
3751,13101,Marlin Chase,2461,medium,682900.0,8420,8420 1st Paint,1
3752,12850,Peninsula,5715,high,750956.0,8540,8540 Install Bath Accessories,1
3753,13240,Peninsula Lakes,1984,low,616419.0,8980,8980 Final Plumbing Inspection,1
3754,13240,Peninsula Lakes,1984,low,616419.0,9060,9060 Final Electric Inspection,1
3755,13145,Marlin Chase,3204,medium,841553.0,9390,9390 Install Water Meter/Sewer Frame,1
3756,13137,Marlin Chase,2330,medium,637264.0,9390,9390 Install Water Meter/Sewer Frame,1
3757,12850,Peninsula,5715,high,750956.0,9740,9740 Fireplace Start Up,1
3758,13137,Marlin Chase,2330,medium,637264.0,9900,9900 Water Lateral,1
3759,13092,Marlin Chase,2079,medium,433351.0,9900,9900 Water Lateral,1
3760,13145,Marlin Chase,3204,medium,841553.0,9900,9900 Water Lateral,1
3761,13092,Marlin Chase,2079,medium,433351.0,9905,9905 Sewer Lateral,1
3762,13145,Marlin Chase,3204,medium,841553.0,9905,9905 Sewer Lateral,1
3763,13137,Marlin Chase,2330,medium,637264.0,9905,9905 Sewer Lateral,1
3764,13240,Peninsula Lakes,1984,low,616419.0,9985,9985 Final Clean 2,1
3765,12993,Peninsula,5996,high,750956.0,10940,10940 Framing Retainage,1
3766,13020,Peninsula Lakes,2100,low,578095.0,10940,10940 Framing Retainage,1
3767,13360,Peninsula Lakes,3496,medium,575090.0,0,00000 START,1
3768,13442,Walden,4633,medium,656370.0,0,00000 START,1
3769,13442,Walden,4633,medium,656370.0,1,1 START  CONSTRUCTION,1
3770,13360,Peninsula Lakes,3496,medium,575090.0,1,1 START  CONSTRUCTION,1
3771,13152,Marlin Chase,2710,medium,768496.0,2,2 FRAMING START,1
3772,13144,Marlin Chase,3055,medium,740636.0,100,100 Framing DRAW 1,1
3773,12920,Peninsula,4116,high,1454538.0,140,140 Framing DRAW 2,1
3774,13360,Peninsula Lakes,3496,medium,575090.0,252,252 Site Plan,1
3775,13442,Walden,4633,medium,656370.0,252,252 Site Plan,1
3776,13442,Walden,4633,medium,656370.0,260,260 Plan Review/Permit Allocation,0
3777,13360,Peninsula Lakes,3496,medium,575090.0,260,260 Plan Review/Permit Allocation,0
3778,13360,Peninsula Lakes,3496,medium,575090.0,900,900 Bldg Stakeout,1
3779,13442,Walden,4633,medium,656370.0,900,900 Bldg Stakeout,1
3780,13442,Walden,4633,medium,656370.0,901,901 Engineering Allocation,0
3781,13360,Peninsula Lakes,3496,medium,575090.0,901,901 Engineering Allocation,0
3782,13360,Peninsula Lakes,3496,medium,575090.0,980,980 Install Silt Fence,1
3783,13442,Walden,4633,medium,656370.0,980,980 Install Silt Fence,1
3784,13442,Walden,4633,medium,656370.0,1020,1020 Install Construction Entrance,1
3785,13360,Peninsula Lakes,3496,medium,575090.0,1020,1020 Install Construction Entrance,1
3786,13360,Peninsula Lakes,3496,medium,575090.0,1060,1060 Foundation Excavation,1
3787,13394,Peninsula Lakes,2154,medium,474879.0,1100,1100 Form Footings,1
3788,13112,Marlin Chase,3171,medium,634940.0,1100,1100 Form Footings,1
3789,13349,Peninsula Lakes,2188,medium,442826.0,1100,1100 Form Footings,1
3790,13112,Marlin Chase,3171,medium,634940.0,1140,1140 Footing Inspection,1
3791,13394,Peninsula Lakes,2154,medium,474879.0,1140,1140 Footing Inspection,1
3792,13394,Peninsula Lakes,2154,medium,474879.0,1180,1180 Pour Footings,1
3793,13112,Marlin Chase,3171,medium,634940.0,1180,1180 Pour Footings,1
3794,13477,Cardinal Grove,2589,medium,750956.0,1190,1190 Capillary Break,1
3795,13442,Walden,4633,medium,656370.0,1780,1780 Order Steel,1
3796,13360,Peninsula Lakes,3496,medium,575090.0,1780,1780 Order Steel,1
3797,13258,River Mill,3064,medium,670416.0,1900,1900 Strip Foundation Forms,1
3798,13120,Marsh Island,4291,medium,851477.0,2020,2020 Install Underground Plumbing,1
3799,13277,Mosaic,1704,medium,561869.0,2020,2020 Install Underground Plumbing,1
3800,13360,Peninsula Lakes,3496,medium,575090.0,2230,2230 Receive Dumpster Allocation,1
3801,13442,Walden,4633,medium,656370.0,2230,2230 Receive Dumpster Allocation,1
3802,13442,Walden,4633,medium,656370.0,2240,2240 Receive Portable Toilet Allocation,1
3803,13360,Peninsula Lakes,3496,medium,575090.0,2240,2240 Receive Portable Toilet Allocation,1
3804,13278,Mosaic,2320,medium,818814.0,2250,2250 Slab Prep,1
3805,13253,River Mill,2912,medium,692624.0,2440,2440 Receive Steel,1
3806,13152,Marlin Chase,2710,medium,768496.0,2440,2440 Receive Steel,1
3807,13152,Marlin Chase,2710,medium,768496.0,2460,2460 Receive Lumber Drop #1,1
3808,13152,Marlin Chase,2710,medium,768496.0,2540,2540 Receive 1st Floor Joists,1
3809,13030,Peninsula,5546,high,1768191.0,3020,3020 Termite & Pest PreTreatment,1
3810,13339,Peninsula,5583,high,750956.0,3020,3020 Termite & Pest PreTreatment,1
3811,13088,Forest Hills,3580,medium,222544.0,3380,3380 1st Floor Wall Framing,3
3812,13152,Marlin Chase,2710,medium,768496.0,3540,3540 Receive Lumber Drop #2,1
3813,13152,Marlin Chase,2710,medium,768496.0,3740,3740 Receive 2nd Floor Joists,1
3814,13144,Marlin Chase,3055,medium,740636.0,3820,3820 2nd Floor Wall Framing,1
3815,13152,Marlin Chase,2710,medium,768496.0,3900,3900 Receive Lumber Drop #3,1
3816,13388,Marsh Island,5848,high,750956.0,4020,4020 Set Trusses,3
3817,13032,Welches Pond,2812,medium,643995.0,4100,4100 Exterior Deck Framing,2
3818,13088,Forest Hills,3580,medium,222544.0,4460,4460 Schedule Gas Lateral Contractor,1
3819,13138,Marlin Chase,3171,medium,859133.0,4700,4700 Internal Framing Inspection,1
3820,12920,Peninsula,4116,high,1454538.0,4775,4775 Receive Hardwood Stairs,1
3821,13032,Welches Pond,2812,medium,643995.0,4775,4775 Receive Hardwood Stairs,1
3822,13032,Welches Pond,2812,medium,643995.0,5100,5100 HVAC Rough,4
3823,13032,Welches Pond,2812,medium,643995.0,5120,5120 HVAC Set Furnace,3
3824,13145,Marlin Chase,3204,medium,841553.0,5220,5220 Solar Rough,1
3825,12993,Peninsula,5996,high,750956.0,5580,5580 Structured Wiring Rough,1
3826,13137,Marlin Chase,2330,medium,637264.0,5740,5740 Install Gas Lines,1
3827,13020,Peninsula Lakes,2100,low,578095.0,5820,5820 Framing Inspection,1
3828,13138,Marlin Chase,3171,medium,859133.0,5820,5820 Framing Inspection,1
3829,12920,Peninsula,4116,high,1454538.0,5825,5825 Frame Punch,1
3830,13035,Forest Hills,4024,medium,816522.0,5825,5825 Frame Punch,5
3831,13145,Marlin Chase,3204,medium,841553.0,5860,5860 Frame Stage Tour,1
3832,13137,Marlin Chase,2330,medium,637264.0,5860,5860 Frame Stage Tour,1
3833,13144,Marlin Chase,3055,medium,740636.0,5940,5940 Order Cabinets,1
3834,13144,Marlin Chase,3055,medium,740636.0,5941,5941 Order Cabinet Hardware,1
3835,13139,Marlin Chase,2554,medium,704067.0,6180,6180 Install Insulation,2
3836,13101,Marlin Chase,2461,medium,682900.0,7340,7340 Install Ceramic Tile,2
3837,12850,Peninsula,5715,high,750956.0,7861,7861 Interior Trim Punch,1
3838,13360,Peninsula Lakes,3496,medium,575090.0,8500,8500 Order Appliance Pkg 1,1
3839,13442,Walden,4633,medium,656370.0,8500,8500 Order Appliance Pkg 1,1
3840,13139,Marlin Chase,2554,medium,704067.0,9390,9390 Install Water Meter/Sewer Frame,1
3841,13101,Marlin Chase,2461,medium,682900.0,9460,9460 Attic Insulation,1
3842,13360,Peninsula Lakes,3496,medium,575090.0,9750,9750 Order Appliance Pkg 2,1
3843,13442,Walden,4633,medium,656370.0,9750,9750 Order Appliance Pkg 2,1
3844,13442,Walden,4633,medium,656370.0,9860,9860 Final Utility Connection,0
3845,13101,Marlin Chase,2461,medium,682900.0,9900,9900 Water Lateral,1
3846,13139,Marlin Chase,2554,medium,704067.0,9905,9905 Sewer Lateral,1
3847,13145,Marlin Chase,3204,medium,841553.0,9910,9910 Utility Grade,1
3848,13240,Peninsula Lakes,1984,low,616419.0,10420,10420 Powerwash,1
3849,13092,Marlin Chase,2079,medium,433351.0,10500,10500 Paint 2,4
3850,13394,Peninsula Lakes,2154,medium,474879.0,0,00000 START,1
3851,13091,Marlin Chase,2591,medium,562928.0,0,00000 START,1
3852,13349,Peninsula Lakes,2188,medium,442826.0,0,00000 START,1
3853,13091,Marlin Chase,2591,medium,562928.0,1,1 START  CONSTRUCTION,1
3854,13349,Peninsula Lakes,2188,medium,442826.0,1,1 START  CONSTRUCTION,1
3855,13394,Peninsula Lakes,2154,medium,474879.0,1,1 START  CONSTRUCTION,1
3856,13408,NewMarket,3940,medium,889253.0,3,3 TRADES START,1
3857,13091,Marlin Chase,2591,medium,562928.0,252,252 Site Plan,1
3858,13349,Peninsula Lakes,2188,medium,442826.0,252,252 Site Plan,1
3859,13394,Peninsula Lakes,2154,medium,474879.0,252,252 Site Plan,1
3860,13394,Peninsula Lakes,2154,medium,474879.0,260,260 Plan Review/Permit Allocation,0
3861,13091,Marlin Chase,2591,medium,562928.0,260,260 Plan Review/Permit Allocation,0
3862,13349,Peninsula Lakes,2188,medium,442826.0,260,260 Plan Review/Permit Allocation,0
3863,13091,Marlin Chase,2591,medium,562928.0,900,900 Bldg Stakeout,1
3864,13349,Peninsula Lakes,2188,medium,442826.0,900,900 Bldg Stakeout,1
3865,13394,Peninsula Lakes,2154,medium,474879.0,900,900 Bldg Stakeout,1
3866,13394,Peninsula Lakes,2154,medium,474879.0,901,901 Engineering Allocation,0
3867,13091,Marlin Chase,2591,medium,562928.0,901,901 Engineering Allocation,0
3868,13349,Peninsula Lakes,2188,medium,442826.0,901,901 Engineering Allocation,0
3869,13091,Marlin Chase,2591,medium,562928.0,980,980 Install Silt Fence,1
3870,13091,Marlin Chase,2591,medium,562928.0,1020,1020 Install Construction Entrance,1
3871,13349,Peninsula Lakes,2188,medium,442826.0,1020,1020 Install Construction Entrance,1
3872,13394,Peninsula Lakes,2154,medium,474879.0,1020,1020 Install Construction Entrance,1
3873,13091,Marlin Chase,2591,medium,562928.0,1060,1060 Foundation Excavation,1
3874,13442,Walden,4633,medium,656370.0,1060,1060 Foundation Excavation,1
3875,13360,Peninsula Lakes,3496,medium,575090.0,1100,1100 Form Footings,1
3876,13360,Peninsula Lakes,3496,medium,575090.0,1140,1140 Footing Inspection,1
3877,13349,Peninsula Lakes,2188,medium,442826.0,1140,1140 Footing Inspection,1
3878,13349,Peninsula Lakes,2188,medium,442826.0,1180,1180 Pour Footings,1
3879,13360,Peninsula Lakes,3496,medium,575090.0,1180,1180 Pour Footings,1
3880,13112,Marlin Chase,3171,medium,634940.0,1190,1190 Capillary Break,1
3881,13477,Cardinal Grove,2589,medium,750956.0,1580,1580 Form Foundation Walls,1
3882,13091,Marlin Chase,2591,medium,562928.0,1780,1780 Order Steel,1
3883,13477,Cardinal Grove,2589,medium,750956.0,1820,1820 Foundation Wall Inspection,1
3884,13477,Cardinal Grove,2589,medium,750956.0,1860,1860 Foundation Wall Pour,1
3885,13258,River Mill,3064,medium,670416.0,1940,1940 Install Perimeter Drain/Croc,1
3886,13277,Mosaic,1704,medium,561869.0,1980,1980 Install Underground Electric,1
3887,13339,Peninsula,5583,high,750956.0,2020,2020 Install Underground Plumbing,1
3888,13253,River Mill,2912,medium,692624.0,2040,2040 Foundation Inspection,1
3889,13258,River Mill,3064,medium,670416.0,2060,2060 Waterproof Foundation Walls,1
3890,13277,Mosaic,1704,medium,561869.0,2140,2140 Underground Plumbing Inspection,1
3891,13091,Marlin Chase,2591,medium,562928.0,2230,2230 Receive Dumpster Allocation,1
3892,13349,Peninsula Lakes,2188,medium,442826.0,2230,2230 Receive Dumpster Allocation,1
3893,13394,Peninsula Lakes,2154,medium,474879.0,2230,2230 Receive Dumpster Allocation,1
3894,13394,Peninsula Lakes,2154,medium,474879.0,2240,2240 Receive Portable Toilet Allocation,1
3895,13091,Marlin Chase,2591,medium,562928.0,2240,2240 Receive Portable Toilet Allocation,1
3896,13349,Peninsula Lakes,2188,medium,442826.0,2240,2240 Receive Portable Toilet Allocation,1
3897,13339,Peninsula,5583,high,750956.0,2340,2340 Backfill & Compact,1
3898,13120,Marsh Island,4291,medium,851477.0,2340,2340 Backfill & Compact,1
3899,13030,Peninsula,5546,high,1768191.0,2344,2344 Meter Pit Install,1
3900,13278,Mosaic,2320,medium,818814.0,2420,2420 Slab Inspection,1
3901,13152,Marlin Chase,2710,medium,768496.0,2700,2700 Pour Garage Slab,1
3902,13030,Peninsula,5546,high,1768191.0,3100,3100 Foundation Survey,1
3903,13440,Marlin Chase,3067,medium,714189.0,3140,3140 Pour Porch Slab,1
3904,13152,Marlin Chase,2710,medium,768496.0,3300,3300 1st Floor Deck Framing,1
3905,13144,Marlin Chase,3055,medium,740636.0,4020,4020 Set Trusses,2
3906,13152,Marlin Chase,2710,medium,768496.0,4070,4070 Receive Exterior Deck Material,1
3907,13401,Welches Pond,2927,medium,731557.0,4100,4100 Exterior Deck Framing,1
3908,13253,River Mill,2912,medium,692624.0,4230,4230 Receive Housewrap/Flashing,1
3909,13144,Marlin Chase,3055,medium,740636.0,4230,4230 Receive Housewrap/Flashing,1
3910,13140,Marlin Chase,2824,medium,766881.0,4260,4260 Receive Windows,1
3911,13401,Welches Pond,2927,medium,731557.0,4260,4260 Receive Windows,1
3912,13401,Welches Pond,2927,medium,731557.0,4300,4300 Receive Window/Door Flashings,1
3913,13140,Marlin Chase,2824,medium,766881.0,4300,4300 Receive Window/Door Flashings,1
3914,13140,Marlin Chase,2824,medium,766881.0,4340,4340 Receive Exterior Doors,1
3915,13401,Welches Pond,2927,medium,731557.0,4340,4340 Receive Exterior Doors,1
3916,13401,Welches Pond,2927,medium,731557.0,4390,4390 Receive Roofing Material,1
3917,13140,Marlin Chase,2824,medium,766881.0,4390,4390 Receive Roofing Material,1
3918,13101,Marlin Chase,2461,medium,682900.0,4981,4981 Deliver Sinks,1
3919,13113,Marlin Chase,2814,medium,750956.0,5180,5180 Electric Rough,3
3920,13145,Marlin Chase,3204,medium,841553.0,5260,5260 Mechanical Rough Inspection,1
3921,13145,Marlin Chase,3204,medium,841553.0,5300,5300 Municipal Electric Inspection,1
3922,12993,Peninsula,5996,high,750956.0,5300,5300 Municipal Electric Inspection,1
3923,13145,Marlin Chase,3204,medium,841553.0,5580,5580 Structured Wiring Rough,1
3924,13175,Peninsula Lakes,2245,low,567645.0,5860,5860 Frame Stage Tour,1
3925,13152,Marlin Chase,2710,medium,768496.0,5940,5940 Order Cabinets,1
3926,13152,Marlin Chase,2710,medium,768496.0,5941,5941 Order Cabinet Hardware,1
3927,13138,Marlin Chase,3171,medium,859133.0,6180,6180 Install Insulation,2
3928,13020,Peninsula Lakes,2100,low,578095.0,6180,6180 Install Insulation,1
3929,13101,Marlin Chase,2461,medium,682900.0,7300,7300 Receive Interior Trim,1
3930,13101,Marlin Chase,2461,medium,682900.0,7304,7304 Receive Goodie Box,1
3931,13101,Marlin Chase,2461,medium,682900.0,7700,7700 Receive Interior Doors,1
3932,13101,Marlin Chase,2461,medium,682900.0,7862,7862 Receive Cabinet Hardware Allocation,1
3933,13101,Marlin Chase,2461,medium,682900.0,7866,7866 Receive Door Hardware,1
3934,13101,Marlin Chase,2461,medium,682900.0,7900,7900 Receive Cabinets Allocation,1
3935,13101,Marlin Chase,2461,medium,682900.0,7901,7901 Cabinet Delivery Charges,1
3936,13101,Marlin Chase,2461,medium,682900.0,7940,7940 Receive Vanity Tops,1
3937,13440,Marlin Chase,3067,medium,714189.0,8420,8420 1st Paint,1
3938,13394,Peninsula Lakes,2154,medium,474879.0,8500,8500 Order Appliance Pkg 1,1
3939,13349,Peninsula Lakes,2188,medium,442826.0,8500,8500 Order Appliance Pkg 1,1
3940,13091,Marlin Chase,2591,medium,562928.0,8500,8500 Order Appliance Pkg 1,1
3941,12850,Peninsula,5715,high,750956.0,8940,8940 Plumbing Trim,2
3942,13240,Peninsula Lakes,1984,low,616419.0,9500,9500 Blower Door/Ductblaster,1
3943,13092,Marlin Chase,2079,medium,433351.0,9620,9620 Install Appliances,1
3944,13394,Peninsula Lakes,2154,medium,474879.0,9750,9750 Order Appliance Pkg 2,1
3945,13349,Peninsula Lakes,2188,medium,442826.0,9750,9750 Order Appliance Pkg 2,1
3946,13091,Marlin Chase,2591,medium,562928.0,9750,9750 Order Appliance Pkg 2,1
3947,12850,Peninsula,5715,high,750956.0,9755,9755 Rec. GE Appliance Pkg2 Allocation,1
3948,13101,Marlin Chase,2461,medium,682900.0,9905,9905 Sewer Lateral,1
3949,12850,Peninsula,5715,high,750956.0,10501,10501 Paint Retouch,1
3950,12850,Peninsula,5715,high,750956.0,10620,10620 Punch Out Allocation,1
3951,13240,Peninsula Lakes,1984,low,616419.0,10660,10660 Quality Inspection,1
3952,12671,Peninsula,5870,high,750956.0,10780,10780 Customer Walk,1
3953,13138,Marlin Chase,3171,medium,859133.0,10940,10940 Framing Retainage,1
3954,13465,Cardinal Grove,1764,medium,569722.0,0,00000 START,1
3955,13465,Cardinal Grove,1764,medium,569722.0,1,1 START  CONSTRUCTION,1
3956,13253,River Mill,2912,medium,692624.0,2,2 FRAMING START,1
3957,12920,Peninsula,4116,high,1454538.0,3,3 TRADES START,1
3958,13465,Cardinal Grove,1764,medium,569722.0,252,252 Site Plan,1
3959,13465,Cardinal Grove,1764,medium,569722.0,260,260 Plan Review/Permit Allocation,0
3960,13465,Cardinal Grove,1764,medium,569722.0,900,900 Bldg Stakeout,1
3961,13465,Cardinal Grove,1764,medium,569722.0,901,901 Engineering Allocation,0
3962,13465,Cardinal Grove,1764,medium,569722.0,980,980 Install Silt Fence,1
3963,13465,Cardinal Grove,1764,medium,569722.0,1020,1020 Install Construction Entrance,1
3964,13442,Walden,4633,medium,656370.0,1100,1100 Form Footings,1
3965,13091,Marlin Chase,2591,medium,562928.0,1100,1100 Form Footings,1
3966,13392,Marsh Island,2795,medium,771707.0,1100,1100 Form Footings,1
3967,13392,Marsh Island,2795,medium,771707.0,1140,1140 Footing Inspection,1
3968,13442,Walden,4633,medium,656370.0,1140,1140 Footing Inspection,1
3969,13091,Marlin Chase,2591,medium,562928.0,1140,1140 Footing Inspection,1
3970,13091,Marlin Chase,2591,medium,562928.0,1180,1180 Pour Footings,1
3971,13442,Walden,4633,medium,656370.0,1180,1180 Pour Footings,1
3972,13360,Peninsula Lakes,3496,medium,575090.0,1190,1190 Capillary Break,1
3973,13394,Peninsula Lakes,2154,medium,474879.0,1190,1190 Capillary Break,1
3974,13349,Peninsula Lakes,2188,medium,442826.0,1190,1190 Capillary Break,1
3975,13112,Marlin Chase,3171,medium,634940.0,1195,1195 Pin Footings,1
3976,13112,Marlin Chase,3171,medium,634940.0,1580,1580 Form Foundation Walls,1
3977,13360,Peninsula Lakes,3496,medium,575090.0,1580,1580 Form Foundation Walls,1
3978,13465,Cardinal Grove,1764,medium,569722.0,1780,1780 Order Steel,1
3979,13360,Peninsula Lakes,3496,medium,575090.0,1820,1820 Foundation Wall Inspection,1
3980,13112,Marlin Chase,3171,medium,634940.0,1820,1820 Foundation Wall Inspection,1
3981,13112,Marlin Chase,3171,medium,634940.0,1860,1860 Foundation Wall Pour,1
3982,13360,Peninsula Lakes,3496,medium,575090.0,1860,1860 Foundation Wall Pour,1
3983,13477,Cardinal Grove,2589,medium,750956.0,1900,1900 Strip Foundation Forms,1
3984,13339,Peninsula,5583,high,750956.0,1980,1980 Install Underground Electric,1
3985,13465,Cardinal Grove,1764,medium,569722.0,2230,2230 Receive Dumpster Allocation,1
3986,13465,Cardinal Grove,1764,medium,569722.0,2240,2240 Receive Portable Toilet Allocation,1
3987,13030,Peninsula,5546,high,1768191.0,2340,2340 Backfill & Compact,1
3988,13339,Peninsula,5583,high,750956.0,2344,2344 Meter Pit Install,1
3989,13120,Marsh Island,4291,medium,851477.0,2344,2344 Meter Pit Install,1
3990,13120,Marsh Island,4291,medium,851477.0,2380,2380 Pour Basement Slab,3
3991,13277,Mosaic,1704,medium,561869.0,2382,2382 Slab Insulation,1
3992,13253,River Mill,2912,medium,692624.0,2540,2540 Receive 1st Floor Joists,1
3993,13258,River Mill,3064,medium,670416.0,3060,3060 Foundation Insulation-Crawl,1
3994,13120,Marsh Island,4291,medium,851477.0,3100,3100 Foundation Survey,1
3995,13339,Peninsula,5583,high,750956.0,3100,3100 Foundation Survey,1
3996,13152,Marlin Chase,2710,medium,768496.0,3380,3380 1st Floor Wall Framing,1
3997,13253,River Mill,2912,medium,692624.0,3740,3740 Receive 2nd Floor Joists,1
3998,13140,Marlin Chase,2824,medium,766881.0,4071,4071 Receive Exterior Decking,1
3999,13401,Welches Pond,2927,medium,731557.0,4071,4071 Receive Exterior Decking,1
4000,13140,Marlin Chase,2824,medium,766881.0,4100,4100 Exterior Deck Framing,1
4001,13152,Marlin Chase,2710,medium,768496.0,4460,4460 Schedule Gas Lateral Contractor,1
4002,13020,Peninsula Lakes,2100,low,578095.0,4461,4461 Install Gas Lateral,1
4003,13140,Marlin Chase,2824,medium,766881.0,4540,4540 Install Windows,1
4004,13401,Welches Pond,2927,medium,731557.0,4540,4540 Install Windows,1
4005,13401,Welches Pond,2927,medium,731557.0,4580,4580 Install Roofing,2
4006,13140,Marlin Chase,2824,medium,766881.0,4580,4580 Install Roofing,2
4007,13092,Marlin Chase,2079,medium,433351.0,4590,4590 Install Metal Roofing,1
4008,13140,Marlin Chase,2824,medium,766881.0,4701,4701 Frame Check,1
4009,13401,Welches Pond,2927,medium,731557.0,4701,4701 Frame Check,1
4010,13032,Welches Pond,2812,medium,643995.0,4940,4940 Install Fireplace,1
4011,13032,Welches Pond,2812,medium,643995.0,4980,4980 Plumbing Rough,2
4012,12920,Peninsula,4116,high,1454538.0,5100,5100 HVAC Rough,2
4013,13408,NewMarket,3940,medium,889253.0,5100,5100 HVAC Rough,5
4014,13408,NewMarket,3940,medium,889253.0,5120,5120 HVAC Set Furnace,3
4015,12920,Peninsula,4116,high,1454538.0,5120,5120 HVAC Set Furnace,1
4016,13175,Peninsula Lakes,2245,low,567645.0,5740,5740 Install Gas Lines,1
4017,12993,Peninsula,5996,high,750956.0,5820,5820 Framing Inspection,1
4018,13145,Marlin Chase,3204,medium,841553.0,5900,5900 Air Seal,1
4019,13388,Marsh Island,5848,high,750956.0,5940,5940 Order Cabinets,1
4020,13388,Marsh Island,5848,high,750956.0,5941,5941 Order Cabinet Hardware,1
4021,13139,Marlin Chase,2554,medium,704067.0,6300,6300 Energy Inspection,1
4022,13139,Marlin Chase,2554,medium,704067.0,6345,6345 Stock Drywall,1
4023,13101,Marlin Chase,2461,medium,682900.0,7220,7220 Install Deck Skirting/Flower Boxes,1
4024,13440,Marlin Chase,3067,medium,714189.0,7340,7340 Install Ceramic Tile,3
4025,13440,Marlin Chase,3067,medium,714189.0,7350,7350 Install Shower Tile,5
4026,13101,Marlin Chase,2461,medium,682900.0,7860,7860 Install Interior Trim,2
4027,13440,Marlin Chase,3067,medium,714189.0,8020,8020 Receive Interior Railing,1
4028,13440,Marlin Chase,3067,medium,714189.0,8220,8220 Install Fireplace Surround/Mantel,1
4029,13465,Cardinal Grove,1764,medium,569722.0,8500,8500 Order Appliance Pkg 1,1
4030,12850,Peninsula,5715,high,750956.0,8980,8980 Final Plumbing Inspection,1
4031,13113,Marlin Chase,2814,medium,750956.0,9390,9390 Install Water Meter/Sewer Frame,1
4032,13092,Marlin Chase,2079,medium,433351.0,9460,9460 Attic Insulation,1
4033,13465,Cardinal Grove,1764,medium,569722.0,9750,9750 Order Appliance Pkg 2,1
4034,13465,Cardinal Grove,1764,medium,569722.0,9860,9860 Final Utility Connection,0
4035,13113,Marlin Chase,2814,medium,750956.0,9900,9900 Water Lateral,1
4036,13113,Marlin Chase,2814,medium,750956.0,9905,9905 Sewer Lateral,1
4037,12850,Peninsula,5715,high,750956.0,0,appcheck Check Appliances for Damage,1
4038,13278,Mosaic,2320,medium,818814.0,2,2 FRAMING START,1
4039,13401,Welches Pond,2927,medium,731557.0,140,140 Framing DRAW 2,1
4040,13140,Marlin Chase,2824,medium,766881.0,140,140 Framing DRAW 2,1
4041,13465,Cardinal Grove,1764,medium,569722.0,1060,1060 Foundation Excavation,1
4042,13476,Durham Farms,4277,medium,750956.0,1060,1060 Foundation Excavation,1
4043,13392,Marsh Island,2795,medium,771707.0,1180,1180 Pour Footings,1
4044,13091,Marlin Chase,2591,medium,562928.0,1190,1190 Capillary Break,1
4045,13442,Walden,4633,medium,656370.0,1190,1190 Capillary Break,1
4046,13091,Marlin Chase,2591,medium,562928.0,1195,1195 Pin Footings,1
4047,13349,Peninsula Lakes,2188,medium,442826.0,1580,1580 Form Foundation Walls,1
4048,13392,Marsh Island,2795,medium,771707.0,1580,1580 Form Foundation Walls,1
4049,13394,Peninsula Lakes,2154,medium,474879.0,1580,1580 Form Foundation Walls,1
4050,13394,Peninsula Lakes,2154,medium,474879.0,1820,1820 Foundation Wall Inspection,1
4051,13392,Marsh Island,2795,medium,771707.0,1820,1820 Foundation Wall Inspection,1
4052,13349,Peninsula Lakes,2188,medium,442826.0,1820,1820 Foundation Wall Inspection,1
4053,13349,Peninsula Lakes,2188,medium,442826.0,1860,1860 Foundation Wall Pour,1
4054,13392,Marsh Island,2795,medium,771707.0,1860,1860 Foundation Wall Pour,1
4055,13394,Peninsula Lakes,2154,medium,474879.0,1860,1860 Foundation Wall Pour,1
4056,13112,Marlin Chase,3171,medium,634940.0,1900,1900 Strip Foundation Forms,1
4057,13360,Peninsula Lakes,3496,medium,575090.0,1940,1940 Install Perimeter Drain/Croc,1
4058,13477,Cardinal Grove,2589,medium,750956.0,1940,1940 Install Perimeter Drain/Croc,1
4059,13030,Peninsula,5546,high,1768191.0,1980,1980 Install Underground Electric,1
4060,13030,Peninsula,5546,high,1768191.0,2020,2020 Install Underground Plumbing,1
4061,13477,Cardinal Grove,2589,medium,750956.0,2060,2060 Waterproof Foundation Walls,1
4062,13120,Marsh Island,4291,medium,851477.0,2140,2140 Underground Plumbing Inspection,1
4063,13277,Mosaic,1704,medium,561869.0,2250,2250 Slab Prep,1
4064,13339,Peninsula,5583,high,750956.0,2250,2250 Slab Prep,1
4065,13278,Mosaic,2320,medium,818814.0,2385,2385 Pour SOG Slab,1
4066,13277,Mosaic,1704,medium,561869.0,2420,2420 Slab Inspection,1
4067,13339,Peninsula,5583,high,750956.0,2420,2420 Slab Inspection,1
4068,13253,River Mill,2912,medium,692624.0,2460,2460 Receive Lumber Drop #1,1
4069,13278,Mosaic,2320,medium,818814.0,2460,2460 Receive Lumber Drop #1,1
4070,13278,Mosaic,2320,medium,818814.0,2700,2700 Pour Garage Slab,1
4071,13139,Marlin Chase,2554,medium,704067.0,3140,3140 Pour Porch Slab,1
4072,13253,River Mill,2912,medium,692624.0,3300,3300 1st Floor Deck Framing,1
4073,13253,River Mill,2912,medium,692624.0,3540,3540 Receive Lumber Drop #2,1
4074,13278,Mosaic,2320,medium,818814.0,3540,3540 Receive Lumber Drop #2,1
4075,13088,Forest Hills,3580,medium,222544.0,3780,3780 2nd Floor Deck Framing,1
4076,13152,Marlin Chase,2710,medium,768496.0,3780,3780 2nd Floor Deck Framing,1
4077,13253,River Mill,2912,medium,692624.0,3900,3900 Receive Lumber Drop #3,1
4078,13278,Mosaic,2320,medium,818814.0,4230,4230 Receive Housewrap/Flashing,1
4079,13144,Marlin Chase,3055,medium,740636.0,4380,4380 Roof Sheathing,1
4080,13388,Marsh Island,5848,high,750956.0,4380,4380 Roof Sheathing,3
4081,13175,Peninsula Lakes,2245,low,567645.0,4460,4460 Schedule Gas Lateral Contractor,1
4082,13092,Marlin Chase,2079,medium,433351.0,4461,4461 Install Gas Lateral,1
4083,13140,Marlin Chase,2824,medium,766881.0,4582,4582 Install Temp Poly,1
4084,13401,Welches Pond,2927,medium,731557.0,4582,4582 Install Temp Poly,1
4085,13145,Marlin Chase,3204,medium,841553.0,4700,4700 Internal Framing Inspection,1
4086,13401,Welches Pond,2927,medium,731557.0,4775,4775 Receive Hardwood Stairs,1
4087,13113,Marlin Chase,2814,medium,750956.0,5260,5260 Mechanical Rough Inspection,1
4088,13113,Marlin Chase,2814,medium,750956.0,5580,5580 Structured Wiring Rough,1
4089,13140,Marlin Chase,2824,medium,766881.0,5825,5825 Frame Punch,1
4090,13401,Welches Pond,2927,medium,731557.0,5825,5825 Frame Punch,1
4091,13113,Marlin Chase,2814,medium,750956.0,5860,5860 Frame Stage Tour,1
4092,12993,Peninsula,5996,high,750956.0,6180,6180 Install Insulation,2
4093,13020,Peninsula Lakes,2100,low,578095.0,6300,6300 Energy Inspection,1
4094,13138,Marlin Chase,3171,medium,859133.0,6300,6300 Energy Inspection,1
4095,13138,Marlin Chase,3171,medium,859133.0,6345,6345 Stock Drywall,1
4096,13020,Peninsula Lakes,2100,low,578095.0,6345,6345 Stock Drywall,1
4097,13139,Marlin Chase,2554,medium,704067.0,6380,6380 Install Drywall,9
4098,13020,Peninsula Lakes,2100,low,578095.0,6390,6390 Schedule Gas Meter,1
4099,13092,Marlin Chase,2079,medium,433351.0,6391,6391 Install Gas Meter,1
4100,13139,Marlin Chase,2554,medium,704067.0,6620,6620 Receive Vinyl Siding,1
4101,13139,Marlin Chase,2554,medium,704067.0,6700,6700 Receive Composite Ext Trim,1
4102,13139,Marlin Chase,2554,medium,704067.0,6720,6720 Receive Siding Accents,1
4103,13139,Marlin Chase,2554,medium,704067.0,6725,6725 Receive Shutters,1
4104,13139,Marlin Chase,2554,medium,704067.0,6740,6740 Receive PVC Exterior Trim,1
4105,13139,Marlin Chase,2554,medium,704067.0,6781,6781 Receive Column Wrap/Flower Bx/Pediment,1
4106,13139,Marlin Chase,2554,medium,704067.0,6820,6820 Receive Deck Skirting,1
4107,13136,Marlin Chase,3170,medium,806102.0,6860,6860 Siding Installation,10
4108,12850,Peninsula,5715,high,750956.0,7140,7140 Exterior Painting,6
4109,13440,Marlin Chase,3067,medium,714189.0,8260,8260 Install Interior Railing,1
4110,13101,Marlin Chase,2461,medium,682900.0,8300,8300 Install Cabinets,2
4111,13136,Marlin Chase,3170,medium,806102.0,9140,9140 2nd Stage Air Seal,1
4112,13113,Marlin Chase,2814,medium,750956.0,9910,9910 Utility Grade,1
4113,13140,Marlin Chase,2824,medium,766881.0,3,3 TRADES START,1
4114,13401,Welches Pond,2927,medium,731557.0,3,3 TRADES START,1
4115,13152,Marlin Chase,2710,medium,768496.0,100,100 Framing DRAW 1,1
4116,13088,Forest Hills,3580,medium,222544.0,100,100 Framing DRAW 1,1
4117,13035,Forest Hills,4024,medium,816522.0,140,140 Framing DRAW 2,1
4118,13476,Durham Farms,4277,medium,750956.0,1100,1100 Form Footings,1
4119,13465,Cardinal Grove,1764,medium,569722.0,1100,1100 Form Footings,1
4120,13465,Cardinal Grove,1764,medium,569722.0,1140,1140 Footing Inspection,1
4121,13392,Marsh Island,2795,medium,771707.0,1190,1190 Capillary Break,1
4122,13442,Walden,4633,medium,656370.0,1580,1580 Form Foundation Walls,1
4123,13091,Marlin Chase,2591,medium,562928.0,1580,1580 Form Foundation Walls,1
4124,13091,Marlin Chase,2591,medium,562928.0,1820,1820 Foundation Wall Inspection,1
4125,13442,Walden,4633,medium,656370.0,1820,1820 Foundation Wall Inspection,1
4126,13442,Walden,4633,medium,656370.0,1860,1860 Foundation Wall Pour,1
4127,13091,Marlin Chase,2591,medium,562928.0,1860,1860 Foundation Wall Pour,1
4128,13349,Peninsula Lakes,2188,medium,442826.0,1900,1900 Strip Foundation Forms,1
4129,13360,Peninsula Lakes,3496,medium,575090.0,1900,1900 Strip Foundation Forms,1
4130,13394,Peninsula Lakes,2154,medium,474879.0,1900,1900 Strip Foundation Forms,1
4131,13392,Marsh Island,2795,medium,771707.0,1900,1900 Strip Foundation Forms,1
4132,13112,Marlin Chase,3171,medium,634940.0,1940,1940 Install Perimeter Drain/Croc,1
4133,13112,Marlin Chase,3171,medium,634940.0,2060,2060 Waterproof Foundation Walls,1
4134,13360,Peninsula Lakes,3496,medium,575090.0,2060,2060 Waterproof Foundation Walls,1
4135,13339,Peninsula,5583,high,750956.0,2140,2140 Underground Plumbing Inspection,1
4136,13258,River Mill,3064,medium,670416.0,2260,2260 Crawl Stone/Sand,1
4137,13258,River Mill,3064,medium,670416.0,2340,2340 Backfill & Compact,1
4138,13339,Peninsula,5583,high,750956.0,2385,2385 Pour SOG Slab,3
4139,13339,Peninsula,5583,high,750956.0,2700,2700 Pour Garage Slab,2
4140,13477,Cardinal Grove,2589,medium,750956.0,3020,3020 Termite & Pest PreTreatment,1
4141,13477,Cardinal Grove,2589,medium,750956.0,3060,3060 Foundation Insulation-Crawl,1
4142,13020,Peninsula Lakes,2100,low,578095.0,3140,3140 Pour Porch Slab,1
4143,13253,River Mill,2912,medium,692624.0,3380,3380 1st Floor Wall Framing,2
4144,13278,Mosaic,2320,medium,818814.0,3380,3380 1st Floor Wall Framing,2
4145,13253,River Mill,2912,medium,692624.0,3700,3700 Receive Trusses,1
4146,13152,Marlin Chase,2710,medium,768496.0,3700,3700 Receive Trusses,1
4147,13152,Marlin Chase,2710,medium,768496.0,3820,3820 2nd Floor Wall Framing,1
4148,13088,Forest Hills,3580,medium,222544.0,3820,3820 2nd Floor Wall Framing,2
4149,13035,Forest Hills,4024,medium,816522.0,4100,4100 Exterior Deck Framing,1
4150,13144,Marlin Chase,3055,medium,740636.0,4100,4100 Exterior Deck Framing,1
4151,13401,Welches Pond,2927,medium,731557.0,4585,4585 Install Membrane Roofing,1
4152,13401,Welches Pond,2927,medium,731557.0,4591,4591 Install Metal Roof Flashing,1
4153,13032,Welches Pond,2812,medium,643995.0,4591,4591 Install Metal Roof Flashing,1
4154,13144,Marlin Chase,3055,medium,740636.0,4775,4775 Receive Hardwood Stairs,1
4155,13035,Forest Hills,4024,medium,816522.0,4940,4940 Install Fireplace,1
4156,12920,Peninsula,4116,high,1454538.0,4980,4980 Plumbing Rough,2
4157,13440,Marlin Chase,3067,medium,714189.0,4981,4981 Deliver Sinks,1
4158,13401,Welches Pond,2927,medium,731557.0,5100,5100 HVAC Rough,2
4159,13140,Marlin Chase,2824,medium,766881.0,5100,5100 HVAC Rough,2
4160,13140,Marlin Chase,2824,medium,766881.0,5120,5120 HVAC Set Furnace,1
4161,13401,Welches Pond,2927,medium,731557.0,5120,5120 HVAC Set Furnace,1
4162,13137,Marlin Chase,2330,medium,637264.0,5180,5180 Electric Rough,3
4163,13113,Marlin Chase,2814,medium,750956.0,5300,5300 Municipal Electric Inspection,1
4164,13145,Marlin Chase,3204,medium,841553.0,5820,5820 Framing Inspection,1
4165,13113,Marlin Chase,2814,medium,750956.0,5900,5900 Air Seal,1
4166,13138,Marlin Chase,3171,medium,859133.0,6380,6380 Install Drywall,10
4167,13020,Peninsula Lakes,2100,low,578095.0,6380,6380 Install Drywall,8
4168,13020,Peninsula Lakes,2100,low,578095.0,6620,6620 Receive Vinyl Siding,1
4169,13138,Marlin Chase,3171,medium,859133.0,6620,6620 Receive Vinyl Siding,1
4170,13138,Marlin Chase,3171,medium,859133.0,6700,6700 Receive Composite Ext Trim,1
4171,13020,Peninsula Lakes,2100,low,578095.0,6700,6700 Receive Composite Ext Trim,1
4172,13138,Marlin Chase,3171,medium,859133.0,6705,6705 Receive Trellis Material,1
4173,13138,Marlin Chase,3171,medium,859133.0,6720,6720 Receive Siding Accents,1
4174,13020,Peninsula Lakes,2100,low,578095.0,6720,6720 Receive Siding Accents,1
4175,13138,Marlin Chase,3171,medium,859133.0,6721,6721 Receive Brackets,1
4176,13138,Marlin Chase,3171,medium,859133.0,6725,6725 Receive Shutters,1
4177,13020,Peninsula Lakes,2100,low,578095.0,6725,6725 Receive Shutters,1
4178,13020,Peninsula Lakes,2100,low,578095.0,6740,6740 Receive PVC Exterior Trim,1
4179,13138,Marlin Chase,3171,medium,859133.0,6740,6740 Receive PVC Exterior Trim,1
4180,13138,Marlin Chase,3171,medium,859133.0,6781,6781 Receive Column Wrap/Flower Bx/Pediment,1
4181,13020,Peninsula Lakes,2100,low,578095.0,6781,6781 Receive Column Wrap/Flower Bx/Pediment,1
4182,13020,Peninsula Lakes,2100,low,578095.0,6820,6820 Receive Deck Skirting,1
4183,13138,Marlin Chase,3171,medium,859133.0,6820,6820 Receive Deck Skirting,1
4184,13020,Peninsula Lakes,2100,low,578095.0,6860,6860 Siding Installation,2
4185,12920,Peninsula,4116,high,1454538.0,6900,6900 Schedule Septic Installation,1
4186,13440,Marlin Chase,3067,medium,714189.0,7300,7300 Receive Interior Trim,1
4187,13440,Marlin Chase,3067,medium,714189.0,7304,7304 Receive Goodie Box,1
4188,13440,Marlin Chase,3067,medium,714189.0,7700,7700 Receive Interior Doors,1
4189,13440,Marlin Chase,3067,medium,714189.0,7862,7862 Receive Cabinet Hardware Allocation,1
4190,13440,Marlin Chase,3067,medium,714189.0,7866,7866 Receive Door Hardware,1
4191,13440,Marlin Chase,3067,medium,714189.0,7900,7900 Receive Cabinets Allocation,1
4192,13440,Marlin Chase,3067,medium,714189.0,7901,7901 Cabinet Delivery Charges,1
4193,13440,Marlin Chase,3067,medium,714189.0,7940,7940 Receive Vanity Tops,1
4194,13101,Marlin Chase,2461,medium,682900.0,8260,8260 Install Interior Railing,1
4195,13092,Marlin Chase,2079,medium,433351.0,9100,9100 HVAC Trim / Set Unit,1
4196,13092,Marlin Chase,2079,medium,433351.0,9260,9260 Structured Wiring Trim,1
4197,12850,Peninsula,5715,high,750956.0,9260,9260 Structured Wiring Trim,1
4198,13092,Marlin Chase,2079,medium,433351.0,9820,9820 Install Gutters,1
4199,13092,Marlin Chase,2079,medium,433351.0,9910,9910 Utility Grade,1
4200,13101,Marlin Chase,2461,medium,682900.0,10460,10460 Drywall Touch Up,2
4201,13145,Marlin Chase,3204,medium,841553.0,10940,10940 Framing Retainage,1
4202,13476,Durham Farms,4277,medium,750956.0,0,00000 START,1
4203,12673,Peninsula,5996,high,750956.0,0,appcheck Check Appliances for Damage,1
4204,13476,Durham Farms,4277,medium,750956.0,1,1 START  CONSTRUCTION,1
4205,13120,Marsh Island,4291,medium,851477.0,2,2 FRAMING START,1
4206,13476,Durham Farms,4277,medium,750956.0,252,252 Site Plan,1
4207,13476,Durham Farms,4277,medium,750956.0,252,252 Site Plan,1
4208,13476,Durham Farms,4277,medium,750956.0,260,260 Plan Review/Permit Allocation,0
4209,13476,Durham Farms,4277,medium,750956.0,900,900 Bldg Stakeout,1
4210,13476,Durham Farms,4277,medium,750956.0,900,900 Bldg Stakeout,1
4211,13476,Durham Farms,4277,medium,750956.0,901,901 Engineering Allocation,0
4212,13476,Durham Farms,4277,medium,750956.0,980,980 Install Silt Fence,1
4213,13476,Durham Farms,4277,medium,750956.0,1020,1020 Install Construction Entrance,1
4214,13476,Durham Farms,4277,medium,750956.0,1140,1140 Footing Inspection,1
4215,13476,Durham Farms,4277,medium,750956.0,1780,1780 Order Steel,1
4216,13442,Walden,4633,medium,656370.0,1900,1900 Strip Foundation Forms,1
4217,13091,Marlin Chase,2591,medium,562928.0,1900,1900 Strip Foundation Forms,1
4218,13349,Peninsula Lakes,2188,medium,442826.0,1940,1940 Install Perimeter Drain/Croc,1
4219,13394,Peninsula Lakes,2154,medium,474879.0,1940,1940 Install Perimeter Drain/Croc,1
4220,13392,Marsh Island,2795,medium,771707.0,1940,1940 Install Perimeter Drain/Croc,1
4221,13392,Marsh Island,2795,medium,771707.0,2060,2060 Waterproof Foundation Walls,1
4222,13394,Peninsula Lakes,2154,medium,474879.0,2060,2060 Waterproof Foundation Walls,1
4223,13349,Peninsula Lakes,2188,medium,442826.0,2060,2060 Waterproof Foundation Walls,1
4224,13030,Peninsula,5546,high,1768191.0,2140,2140 Underground Plumbing Inspection,1
4225,13476,Durham Farms,4277,medium,750956.0,2230,2230 Receive Dumpster Allocation,84
4226,13476,Durham Farms,4277,medium,750956.0,2240,2240 Receive Portable Toilet Allocation,1
4227,13394,Peninsula Lakes,2154,medium,474879.0,2340,2340 Backfill & Compact,1
4228,13349,Peninsula Lakes,2188,medium,442826.0,2340,2340 Backfill & Compact,1
4229,13258,River Mill,3064,medium,670416.0,2344,2344 Meter Pit Install,1
4230,13394,Peninsula Lakes,2154,medium,474879.0,2382,2382 Slab Insulation,1
4231,13349,Peninsula Lakes,2188,medium,442826.0,2382,2382 Slab Insulation,1
4232,13120,Marsh Island,4291,medium,851477.0,2440,2440 Receive Steel,1
4233,13120,Marsh Island,4291,medium,851477.0,2460,2460 Receive Lumber Drop #1,1
4234,13120,Marsh Island,4291,medium,851477.0,2540,2540 Receive 1st Floor Joists,1
4235,13120,Marsh Island,4291,medium,851477.0,2700,2700 Pour Garage Slab,1
4236,13360,Peninsula Lakes,3496,medium,575090.0,3020,3020 Termite & Pest PreTreatment,1
4237,13112,Marlin Chase,3171,medium,634940.0,3020,3020 Termite & Pest PreTreatment,1
4238,13112,Marlin Chase,3171,medium,634940.0,3060,3060 Foundation Insulation-Crawl,1
4239,13113,Marlin Chase,2814,medium,750956.0,3140,3140 Pour Porch Slab,1
4240,13120,Marsh Island,4291,medium,851477.0,3540,3540 Receive Lumber Drop #2,1
4241,13088,Forest Hills,3580,medium,222544.0,3700,3700 Receive Trusses,1
4242,13120,Marsh Island,4291,medium,851477.0,3740,3740 Receive 2nd Floor Joists,1
4243,13120,Marsh Island,4291,medium,851477.0,3900,3900 Receive Lumber Drop #3,1
4244,13152,Marlin Chase,2710,medium,768496.0,4020,4020 Set Trusses,3
4245,13152,Marlin Chase,2710,medium,768496.0,4230,4230 Receive Housewrap/Flashing,1
4246,13144,Marlin Chase,3055,medium,740636.0,4260,4260 Receive Windows,1
4247,13144,Marlin Chase,3055,medium,740636.0,4300,4300 Receive Window/Door Flashings,1
4248,13144,Marlin Chase,3055,medium,740636.0,4340,4340 Receive Exterior Doors,1
4249,13144,Marlin Chase,3055,medium,740636.0,4390,4390 Receive Roofing Material,1
4250,13113,Marlin Chase,2814,medium,750956.0,4700,4700 Internal Framing Inspection,1
4251,13140,Marlin Chase,2824,medium,766881.0,4980,4980 Plumbing Rough,2
4252,13035,Forest Hills,4024,medium,816522.0,4980,4980 Plumbing Rough,10
4253,13032,Welches Pond,2812,medium,643995.0,5860,5860 Frame Stage Tour,1
4254,13145,Marlin Chase,3204,medium,841553.0,6180,6180 Install Insulation,2
4255,12993,Peninsula,5996,high,750956.0,6300,6300 Energy Inspection,1
4256,12993,Peninsula,5996,high,750956.0,6345,6345 Stock Drywall,1
4257,13101,Marlin Chase,2461,medium,682900.0,6884,6884 Measure Screen Porch Enclosure,1
4258,13101,Marlin Chase,2461,medium,682900.0,7350,7350 Install Shower Tile,13
4259,13440,Marlin Chase,3067,medium,714189.0,7860,7860 Install Interior Trim,3
4260,12850,Peninsula,5715,high,750956.0,9060,9060 Final Electric Inspection,1
4261,13101,Marlin Chase,2461,medium,682900.0,9390,9390 Install Water Meter/Sewer Frame,1
4262,12850,Peninsula,5715,high,750956.0,9980,9980 Final Cleaning,1
4263,12850,Peninsula,5715,high,750956.0,10020,10020 Final Grade,1
4264,13507,Welches Pond,2852,medium,845914.0,0,00000 START,1
4265,13507,Welches Pond,2852,medium,845914.0,1,1 START  CONSTRUCTION,1
4266,13278,Mosaic,2320,medium,818814.0,100,100 Framing DRAW 1,1
4267,13507,Welches Pond,2852,medium,845914.0,252,252 Site Plan,1
4268,13507,Welches Pond,2852,medium,845914.0,260,260 Plan Review/Permit Allocation,0
4269,13507,Welches Pond,2852,medium,845914.0,900,900 Bldg Stakeout,1
4270,13507,Welches Pond,2852,medium,845914.0,901,901 Engineering Allocation,0
4271,13507,Welches Pond,2852,medium,845914.0,980,980 Install Silt Fence,1
4272,13507,Welches Pond,2852,medium,845914.0,1020,1020 Install Construction Entrance,1
4273,13476,Durham Farms,4277,medium,750956.0,1180,1180 Pour Footings,4
4274,13507,Welches Pond,2852,medium,845914.0,1780,1780 Order Steel,1
4275,13091,Marlin Chase,2591,medium,562928.0,1940,1940 Install Perimeter Drain/Croc,1
4276,13442,Walden,4633,medium,656370.0,1940,1940 Install Perimeter Drain/Croc,1
4277,13258,River Mill,3064,medium,670416.0,2040,2040 Foundation Inspection,1
4278,13442,Walden,4633,medium,656370.0,2060,2060 Waterproof Foundation Walls,1
4279,13091,Marlin Chase,2591,medium,562928.0,2060,2060 Waterproof Foundation Walls,1
4280,13507,Welches Pond,2852,medium,845914.0,2230,2230 Receive Dumpster Allocation,1
4281,13507,Welches Pond,2852,medium,845914.0,2240,2240 Receive Portable Toilet Allocation,1
4282,13030,Peninsula,5546,high,1768191.0,2250,2250 Slab Prep,1
4283,13477,Cardinal Grove,2589,medium,750956.0,2260,2260 Crawl Stone/Sand,1
4284,13477,Cardinal Grove,2589,medium,750956.0,2340,2340 Backfill & Compact,1
4285,13277,Mosaic,1704,medium,561869.0,2385,2385 Pour SOG Slab,1
4286,13030,Peninsula,5546,high,1768191.0,2420,2420 Slab Inspection,1
4287,13477,Cardinal Grove,2589,medium,750956.0,2460,2460 Receive Lumber Drop #1,1
4288,13258,River Mill,3064,medium,670416.0,2460,2460 Receive Lumber Drop #1,1
4289,13258,River Mill,3064,medium,670416.0,2540,2540 Receive 1st Floor Joists,1
4290,13277,Mosaic,1704,medium,561869.0,2700,2700 Pour Garage Slab,1
4291,13394,Peninsula Lakes,2154,medium,474879.0,3020,3020 Termite & Pest PreTreatment,1
4292,13349,Peninsula Lakes,2188,medium,442826.0,3020,3020 Termite & Pest PreTreatment,1
4293,13360,Peninsula Lakes,3496,medium,575090.0,3060,3060 Foundation Insulation-Crawl,1
4294,13394,Peninsula Lakes,2154,medium,474879.0,3100,3100 Foundation Survey,1
4295,13349,Peninsula Lakes,2188,medium,442826.0,3100,3100 Foundation Survey,1
4296,13120,Marsh Island,4291,medium,851477.0,3300,3300 1st Floor Deck Framing,1
4297,13120,Marsh Island,4291,medium,851477.0,3380,3380 1st Floor Wall Framing,1
4298,13258,River Mill,3064,medium,670416.0,3540,3540 Receive Lumber Drop #2,1
4299,13278,Mosaic,2320,medium,818814.0,3700,3700 Receive Trusses,1
4300,13258,River Mill,3064,medium,670416.0,3740,3740 Receive 2nd Floor Joists,1
4301,13253,River Mill,2912,medium,692624.0,3780,3780 2nd Floor Deck Framing,1
4302,13258,River Mill,3064,medium,670416.0,3900,3900 Receive Lumber Drop #3,1
4303,13088,Forest Hills,3580,medium,222544.0,4020,4020 Set Trusses,5
4304,13278,Mosaic,2320,medium,818814.0,4020,4020 Set Trusses,4
4305,13253,River Mill,2912,medium,692624.0,4070,4070 Receive Exterior Deck Material,1
4306,13120,Marsh Island,4291,medium,851477.0,4070,4070 Receive Exterior Deck Material,1
4307,13144,Marlin Chase,3055,medium,740636.0,4071,4071 Receive Exterior Decking,1
4308,13388,Marsh Island,5848,high,750956.0,4100,4100 Exterior Deck Framing,1
4309,13388,Marsh Island,5848,high,750956.0,4390,4390 Receive Roofing Material,2
4310,13144,Marlin Chase,3055,medium,740636.0,4540,4540 Install Windows,1
4311,13144,Marlin Chase,3055,medium,740636.0,4580,4580 Install Roofing,2
4312,13144,Marlin Chase,3055,medium,740636.0,4701,4701 Frame Check,1
4313,13401,Welches Pond,2927,medium,731557.0,4940,4940 Install Fireplace,1
4314,13401,Welches Pond,2927,medium,731557.0,4980,4980 Plumbing Rough,2
4315,13032,Welches Pond,2812,medium,643995.0,5180,5180 Electric Rough,2
4316,12920,Peninsula,4116,high,1454538.0,5740,5740 Install Gas Lines,1
4317,13032,Welches Pond,2812,medium,643995.0,5740,5740 Install Gas Lines,1
4318,13278,Mosaic,2320,medium,818814.0,5940,5940 Order Cabinets,1
4319,13360,Peninsula Lakes,3496,medium,575090.0,5940,5940 Order Cabinets,1
4320,13360,Peninsula Lakes,3496,medium,575090.0,5941,5941 Order Cabinet Hardware,1
4321,13278,Mosaic,2320,medium,818814.0,5941,5941 Order Cabinet Hardware,1
4322,13145,Marlin Chase,3204,medium,841553.0,6300,6300 Energy Inspection,1
4323,12993,Peninsula,5996,high,750956.0,6380,6380 Install Drywall,14
4324,12993,Peninsula,5996,high,750956.0,6620,6620 Receive Vinyl Siding,1
4325,12993,Peninsula,5996,high,750956.0,6660,6660 Receive Fiber Cement Siding,1
4326,12993,Peninsula,5996,high,750956.0,6700,6700 Receive Composite Ext Trim,1
4327,12993,Peninsula,5996,high,750956.0,6720,6720 Receive Siding Accents,1
4328,12993,Peninsula,5996,high,750956.0,6740,6740 Receive PVC Exterior Trim,1
4329,12993,Peninsula,5996,high,750956.0,6781,6781 Receive Column Wrap/Flower Bx/Pediment,1
4330,12993,Peninsula,5996,high,750956.0,6820,6820 Receive Deck Skirting,1
4331,13092,Marlin Chase,2079,medium,433351.0,7180,7180 Install Exterior Railings,1
4332,13020,Peninsula Lakes,2100,low,578095.0,7220,7220 Install Deck Skirting/Flower Boxes,1
4333,13101,Marlin Chase,2461,medium,682900.0,8020,8020 Receive Interior Railing,1
4334,13101,Marlin Chase,2461,medium,682900.0,8380,8380 Template Countertops,1
4335,13136,Marlin Chase,3170,medium,806102.0,8420,8420 1st Paint,1
4336,13507,Welches Pond,2852,medium,845914.0,8500,8500 Order Appliance Pkg 1,1
4337,13401,Welches Pond,2927,medium,731557.0,8820,8820 Schedule Irrigation Well,1
4338,13020,Peninsula Lakes,2100,low,578095.0,9380,9380 Install Irrigation Well,1
4339,13507,Welches Pond,2852,medium,845914.0,9750,9750 Order Appliance Pkg 2,1
4340,13090,Marsh Island,5603,high,1154185.0,9755,9755 Rec. GE Appliance Pkg2 Allocation,1
4341,13507,Welches Pond,2852,medium,845914.0,9860,9860 Final Utility Connection,62
4342,13035,Forest Hills,4024,medium,816522.0,9900,9900 Water Lateral,1
4343,13035,Forest Hills,4024,medium,816522.0,9905,9905 Sewer Lateral,1
4344,12850,Peninsula,5715,high,750956.0,10100,10100 Irrigation Installation,1
4345,13101,Marlin Chase,2461,medium,682900.0,10500,10500 Paint 2,3
4346,13090,Marsh Island,5603,high,1154185.0,10620,10620 Punch Out Allocation,1
4347,12671,Peninsula,5870,high,750956.0,10888,10888 Release All Retainage,1
4348,13113,Marlin Chase,2814,medium,750956.0,10940,10940 Framing Retainage,1
4349,12671,Peninsula,5870,high,750956.0,11585,11585 Exterior Paint Retainage,1
4350,12671,Peninsula,5870,high,750956.0,12180,12180 Driveway Retainage,1
4351,12671,Peninsula,5870,high,750956.0,12180,12180.1 Driveway Top Coat Allocation,0
4352,13471,Cardinal Grove,2233,medium,517387.0,0,00000 START,1
4353,13471,Cardinal Grove,2233,medium,517387.0,1,1 START  CONSTRUCTION,1
4354,13277,Mosaic,1704,medium,561869.0,2,2 FRAMING START,1
4355,13339,Peninsula,5583,high,750956.0,2,2 FRAMING START,1
4356,13253,River Mill,2912,medium,692624.0,100,100 Framing DRAW 1,1
4357,13144,Marlin Chase,3055,medium,740636.0,140,140 Framing DRAW 2,1
4358,13471,Cardinal Grove,2233,medium,517387.0,252,252 Site Plan,1
4359,13471,Cardinal Grove,2233,medium,517387.0,260,260 Plan Review/Permit Allocation,0
4360,13471,Cardinal Grove,2233,medium,517387.0,900,900 Bldg Stakeout,1
4361,13471,Cardinal Grove,2233,medium,517387.0,901,901 Engineering Allocation,0
4362,13471,Cardinal Grove,2233,medium,517387.0,980,980 Install Silt Fence,1
4363,13471,Cardinal Grove,2233,medium,517387.0,1020,1020 Install Construction Entrance,1
4364,13507,Welches Pond,2852,medium,845914.0,1060,1060 Foundation Excavation,1
4365,13471,Cardinal Grove,2233,medium,517387.0,1780,1780 Order Steel,1
4366,13349,Peninsula Lakes,2188,medium,442826.0,2020,2020 Install Underground Plumbing,1
4367,13394,Peninsula Lakes,2154,medium,474879.0,2020,2020 Install Underground Plumbing,1
4368,13471,Cardinal Grove,2233,medium,517387.0,2230,2230 Receive Dumpster Allocation,1
4369,13471,Cardinal Grove,2233,medium,517387.0,2240,2240 Receive Portable Toilet Allocation,1
4370,13360,Peninsula Lakes,3496,medium,575090.0,2260,2260 Crawl Stone/Sand,1
4371,13112,Marlin Chase,3171,medium,634940.0,2260,2260 Crawl Stone/Sand,1
4372,13112,Marlin Chase,3171,medium,634940.0,2340,2340 Backfill & Compact,1
4373,13360,Peninsula Lakes,3496,medium,575090.0,2340,2340 Backfill & Compact,1
4374,13477,Cardinal Grove,2589,medium,750956.0,2344,2344 Meter Pit Install,1
4375,13030,Peninsula,5546,high,1768191.0,2385,2385 Pour SOG Slab,1
4376,13277,Mosaic,1704,medium,561869.0,2440,2440 Receive Steel,1
4377,13277,Mosaic,1704,medium,561869.0,2460,2460 Receive Lumber Drop #1,1
4378,13339,Peninsula,5583,high,750956.0,2460,2460 Receive Lumber Drop #1,1
4379,13030,Peninsula,5546,high,1768191.0,2700,2700 Pour Garage Slab,1
4380,13477,Cardinal Grove,2589,medium,750956.0,2700,2700 Pour Garage Slab,1
4381,13442,Walden,4633,medium,656370.0,3020,3020 Termite & Pest PreTreatment,1
4382,13091,Marlin Chase,2591,medium,562928.0,3020,3020 Termite & Pest PreTreatment,1
4383,13091,Marlin Chase,2591,medium,562928.0,3060,3060 Foundation Insulation-Crawl,1
4384,13442,Walden,4633,medium,656370.0,3060,3060 Foundation Insulation-Crawl,1
4385,13477,Cardinal Grove,2589,medium,750956.0,3100,3100 Foundation Survey,1
4386,13277,Mosaic,1704,medium,561869.0,3540,3540 Receive Lumber Drop #2,1
4387,13339,Peninsula,5583,high,750956.0,3540,3540 Receive Lumber Drop #2,1
4388,13120,Marsh Island,4291,medium,851477.0,3700,3700 Receive Trusses,1
4389,13339,Peninsula,5583,high,750956.0,3740,3740 Receive 2nd Floor Joists,1
4390,13120,Marsh Island,4291,medium,851477.0,3780,3780 2nd Floor Deck Framing,1
4391,13253,River Mill,2912,medium,692624.0,3820,3820 2nd Floor Wall Framing,2
4392,13277,Mosaic,1704,medium,561869.0,3900,3900 Receive Lumber Drop #3,1
4393,13339,Peninsula,5583,high,750956.0,3900,3900 Receive Lumber Drop #3,1
4394,13339,Peninsula,5583,high,750956.0,3990,3990 Receive 3nd Floor Joists,1
4395,13388,Marsh Island,5848,high,750956.0,4071,4071 Receive Exterior Decking,1
4396,13277,Mosaic,1704,medium,561869.0,4230,4230 Receive Housewrap/Flashing,1
4397,13120,Marsh Island,4291,medium,851477.0,4460,4460 Schedule Gas Lateral Contractor,1
4398,13144,Marlin Chase,3055,medium,740636.0,4582,4582 Install Temp Poly,1
4399,13440,Marlin Chase,3067,medium,714189.0,4590,4590 Install Metal Roofing,1
4400,12920,Peninsula,4116,high,1454538.0,4940,4940 Install Fireplace,2
4401,13140,Marlin Chase,2824,medium,766881.0,5180,5180 Electric Rough,5
4402,13137,Marlin Chase,2330,medium,637264.0,5260,5260 Mechanical Rough Inspection,1
4403,13137,Marlin Chase,2330,medium,637264.0,5300,5300 Municipal Electric Inspection,1
4404,13137,Marlin Chase,2330,medium,637264.0,5580,5580 Structured Wiring Rough,1
4405,13113,Marlin Chase,2814,medium,750956.0,5820,5820 Framing Inspection,1
4406,13144,Marlin Chase,3055,medium,740636.0,5825,5825 Frame Punch,1
4407,13145,Marlin Chase,3204,medium,841553.0,6620,6620 Receive Vinyl Siding,1
4408,13145,Marlin Chase,3204,medium,841553.0,6700,6700 Receive Composite Ext Trim,1
4409,13145,Marlin Chase,3204,medium,841553.0,6720,6720 Receive Siding Accents,1
4410,13145,Marlin Chase,3204,medium,841553.0,6740,6740 Receive PVC Exterior Trim,1
4411,13145,Marlin Chase,3204,medium,841553.0,6781,6781 Receive Column Wrap/Flower Bx/Pediment,1
4412,13145,Marlin Chase,3204,medium,841553.0,6820,6820 Receive Deck Skirting,1
4413,12993,Peninsula,5996,high,750956.0,6860,6860 Siding Installation,23
4414,13440,Marlin Chase,3067,medium,714189.0,6862,6862 Trellis Construction,1
4415,13440,Marlin Chase,3067,medium,714189.0,7220,7220 Install Deck Skirting/Flower Boxes,1
4416,13136,Marlin Chase,3170,medium,806102.0,7340,7340 Install Ceramic Tile,3
4417,13136,Marlin Chase,3170,medium,806102.0,7350,7350 Install Shower Tile,8
4418,13136,Marlin Chase,3170,medium,806102.0,8020,8020 Receive Interior Railing,1
4419,13440,Marlin Chase,3067,medium,714189.0,8300,8300 Install Cabinets,2
4420,13092,Marlin Chase,2079,medium,433351.0,8460,8460 Install Countertops,1
4421,13471,Cardinal Grove,2233,medium,517387.0,8500,8500 Order Appliance Pkg 1,1
4422,13440,Marlin Chase,3067,medium,714189.0,8579,8579 Template Shower Enclosure,1
4423,13401,Welches Pond,2927,medium,731557.0,9390,9390 Install Water Meter/Sewer Frame,1
4424,13032,Welches Pond,2812,medium,643995.0,9390,9390 Install Water Meter/Sewer Frame,1
4425,13140,Marlin Chase,2824,medium,766881.0,9390,9390 Install Water Meter/Sewer Frame,1
4426,13440,Marlin Chase,3067,medium,714189.0,9540,9540 Rec. GE Appliance Pkg1 Allocation,1
4427,13440,Marlin Chase,3067,medium,714189.0,9620,9620 Install Appliances,1
4428,13471,Cardinal Grove,2233,medium,517387.0,9750,9750 Order Appliance Pkg 2,1
4429,13471,Cardinal Grove,2233,medium,517387.0,9860,9860 Final Utility Connection,0
4430,13401,Welches Pond,2927,medium,731557.0,9900,9900 Water Lateral,1
4431,13140,Marlin Chase,2824,medium,766881.0,9900,9900 Water Lateral,1
4432,13032,Welches Pond,2812,medium,643995.0,9900,9900 Water Lateral,1
4433,13032,Welches Pond,2812,medium,643995.0,9905,9905 Sewer Lateral,1
4434,13401,Welches Pond,2927,medium,731557.0,9905,9905 Sewer Lateral,1
4435,13140,Marlin Chase,2824,medium,766881.0,9905,9905 Sewer Lateral,1
4436,12850,Peninsula,5715,high,750956.0,10140,10140 Sod Installation,1
4437,12850,Peninsula,5715,high,750956.0,10180,10180 Shrub Installation,1
4438,12671,Peninsula,5870,high,750956.0,99999,99999 HOME COMPLETE,1
4439,13477,Cardinal Grove,2589,medium,750956.0,2,2 FRAMING START,1
4440,13144,Marlin Chase,3055,medium,740636.0,3,3 TRADES START,1
4441,13120,Marsh Island,4291,medium,851477.0,100,100 Framing DRAW 1,1
4442,13388,Marsh Island,5848,high,750956.0,140,140 Framing DRAW 2,1
4443,13471,Cardinal Grove,2233,medium,517387.0,1060,1060 Foundation Excavation,1
4444,13507,Welches Pond,2852,medium,845914.0,1100,1100 Form Footings,1
4445,13507,Welches Pond,2852,medium,845914.0,1140,1140 Footing Inspection,1
4446,13507,Welches Pond,2852,medium,845914.0,1180,1180 Pour Footings,1
4447,13465,Cardinal Grove,1764,medium,569722.0,1180,1180 Pour Footings,1
4448,13471,Cardinal Grove,2233,medium,517387.0,1180,1180 Pour Footings,1
4449,13394,Peninsula Lakes,2154,medium,474879.0,1980,1980 Install Underground Electric,1
4450,13349,Peninsula Lakes,2188,medium,442826.0,1980,1980 Install Underground Electric,1
4451,13392,Marsh Island,2795,medium,771707.0,2020,2020 Install Underground Plumbing,1
4452,13091,Marlin Chase,2591,medium,562928.0,2260,2260 Crawl Stone/Sand,1
4453,13091,Marlin Chase,2591,medium,562928.0,2340,2340 Backfill & Compact,1
4454,13030,Peninsula,5546,high,1768191.0,2440,2440 Receive Steel,1
4455,13339,Peninsula,5583,high,750956.0,2440,2440 Receive Steel,1
4456,13477,Cardinal Grove,2589,medium,750956.0,2440,2440 Receive Steel,1
4457,13258,River Mill,3064,medium,670416.0,2440,2440 Receive Steel,1
4458,13030,Peninsula,5546,high,1768191.0,2460,2460 Receive Lumber Drop #1,1
4459,13477,Cardinal Grove,2589,medium,750956.0,2540,2540 Receive 1st Floor Joists,1
4460,13112,Marlin Chase,3171,medium,634940.0,2700,2700 Pour Garage Slab,1
4461,13112,Marlin Chase,3171,medium,634940.0,3100,3100 Foundation Survey,1
4462,13360,Peninsula Lakes,3496,medium,575090.0,3100,3100 Foundation Survey,1
4463,13277,Mosaic,1704,medium,561869.0,3380,3380 1st Floor Wall Framing,2
4464,13339,Peninsula,5583,high,750956.0,3380,3380 1st Floor Wall Framing,1
4465,13030,Peninsula,5546,high,1768191.0,3540,3540 Receive Lumber Drop #2,1
4466,13477,Cardinal Grove,2589,medium,750956.0,3540,3540 Receive Lumber Drop #2,1
4467,13258,River Mill,3064,medium,670416.0,3700,3700 Receive Trusses,1
4468,13339,Peninsula,5583,high,750956.0,3700,3700 Receive Trusses,1
4469,13030,Peninsula,5546,high,1768191.0,3740,3740 Receive 2nd Floor Joists,1
4470,13477,Cardinal Grove,2589,medium,750956.0,3740,3740 Receive 2nd Floor Joists,1
4471,13120,Marsh Island,4291,medium,851477.0,3820,3820 2nd Floor Wall Framing,1
4472,13477,Cardinal Grove,2589,medium,750956.0,3900,3900 Receive Lumber Drop #3,1
4473,13030,Peninsula,5546,high,1768191.0,3900,3900 Receive Lumber Drop #3,1
4474,13030,Peninsula,5546,high,1768191.0,3990,3990 Receive 3nd Floor Joists,1
4475,13339,Peninsula,5583,high,750956.0,4070,4070 Receive Exterior Deck Material,1
4476,13152,Marlin Chase,2710,medium,768496.0,4380,4380 Roof Sheathing,2
4477,13388,Marsh Island,5848,high,750956.0,4580,4580 Install Roofing,2
4478,13137,Marlin Chase,2330,medium,637264.0,4591,4591 Install Metal Roof Flashing,1
4479,13152,Marlin Chase,2710,medium,768496.0,4777,4777 Receive Box Stairs,1
4480,13408,NewMarket,3940,medium,889253.0,4980,4980 Plumbing Rough,5
4481,13144,Marlin Chase,3055,medium,740636.0,5100,5100 HVAC Rough,2
4482,13144,Marlin Chase,3055,medium,740636.0,5120,5120 HVAC Set Furnace,1
4483,13175,Peninsula Lakes,2245,low,567645.0,5180,5180 Electric Rough,3
4484,13401,Welches Pond,2927,medium,731557.0,5180,5180 Electric Rough,3
4485,13032,Welches Pond,2812,medium,643995.0,5260,5260 Mechanical Rough Inspection,1
4486,13032,Welches Pond,2812,medium,643995.0,5300,5300 Municipal Electric Inspection,1
4487,13032,Welches Pond,2812,medium,643995.0,5580,5580 Structured Wiring Rough,1
4488,13401,Welches Pond,2927,medium,731557.0,5740,5740 Install Gas Lines,1
4489,13401,Welches Pond,2927,medium,731557.0,5860,5860 Frame Stage Tour,1
4490,13137,Marlin Chase,2330,medium,637264.0,5900,5900 Air Seal,1
4491,13477,Cardinal Grove,2589,medium,750956.0,5940,5940 Order Cabinets,1
4492,13477,Cardinal Grove,2589,medium,750956.0,5941,5941 Order Cabinet Hardware,1
4493,13113,Marlin Chase,2814,medium,750956.0,6180,6180 Install Insulation,2
4494,12850,Peninsula,5715,high,750956.0,6340,6340 Install Overhead Door,1
4495,13090,Marsh Island,5603,high,1154185.0,6340,6340 Install Overhead Door,9
4496,13145,Marlin Chase,3204,medium,841553.0,6345,6345 Stock Drywall,1
4497,13136,Marlin Chase,3170,medium,806102.0,8260,8260 Install Interior Railing,1
4498,12673,Peninsula,5996,high,750956.0,9500,9500 Blower Door/Ductblaster,1
4499,12850,Peninsula,5715,high,750956.0,9500,9500 Blower Door/Ductblaster,1
4500,13090,Marsh Island,5603,high,1154185.0,9740,9740 Fireplace Start Up,15
4501,13032,Welches Pond,2812,medium,643995.0,9910,9910 Utility Grade,1
4502,13401,Welches Pond,2927,medium,731557.0,9910,9910 Utility Grade,1
4503,13140,Marlin Chase,2824,medium,766881.0,9910,9910 Utility Grade,1
4504,13090,Marsh Island,5603,high,1154185.0,10140,10140 Sod Installation,1
4505,13440,Marlin Chase,3067,medium,714189.0,10460,10460 Drywall Touch Up,2
4506,12673,Peninsula,5996,high,750956.0,10660,10660 Quality Inspection,2
4507,13090,Marsh Island,5603,high,1154185.0,0,appcheck Check Appliances for Damage,1
4508,13112,Marlin Chase,3171,medium,634940.0,2,2 FRAMING START,1
4509,13258,River Mill,3064,medium,670416.0,2,2 FRAMING START,1
4510,13360,Peninsula Lakes,3496,medium,575090.0,2,2 FRAMING START,1
4511,13388,Marsh Island,5848,high,750956.0,3,3 TRADES START,1
4512,13471,Cardinal Grove,2233,medium,517387.0,1100,1100 Form Footings,1
4513,13471,Cardinal Grove,2233,medium,517387.0,1140,1140 Footing Inspection,1
4514,13465,Cardinal Grove,1764,medium,569722.0,1190,1190 Capillary Break,1
4515,13471,Cardinal Grove,2233,medium,517387.0,1190,1190 Capillary Break,1
4516,13507,Welches Pond,2852,medium,845914.0,1190,1190 Capillary Break,1
4517,13507,Welches Pond,2852,medium,845914.0,1195,1195 Pin Footings,1
4518,13471,Cardinal Grove,2233,medium,517387.0,1195,1195 Pin Footings,1
4519,13442,Walden,4633,medium,656370.0,2260,2260 Crawl Stone/Sand,1
4520,13442,Walden,4633,medium,656370.0,2340,2340 Backfill & Compact,1
4521,13392,Marsh Island,2795,medium,771707.0,2340,2340 Backfill & Compact,4
4522,13112,Marlin Chase,3171,medium,634940.0,2440,2440 Receive Steel,1
4523,13360,Peninsula Lakes,3496,medium,575090.0,2440,2440 Receive Steel,1
4524,13360,Peninsula Lakes,3496,medium,575090.0,2460,2460 Receive Lumber Drop #1,1
4525,13112,Marlin Chase,3171,medium,634940.0,2460,2460 Receive Lumber Drop #1,1
4526,13112,Marlin Chase,3171,medium,634940.0,2540,2540 Receive 1st Floor Joists,1
4527,13360,Peninsula Lakes,3496,medium,575090.0,2540,2540 Receive 1st Floor Joists,1
4528,13091,Marlin Chase,2591,medium,562928.0,2700,2700 Pour Garage Slab,1
4529,13392,Marsh Island,2795,medium,771707.0,3020,3020 Termite & Pest PreTreatment,2
4530,13091,Marlin Chase,2591,medium,562928.0,3100,3100 Foundation Survey,1
4531,13145,Marlin Chase,3204,medium,841553.0,3140,3140 Pour Porch Slab,1
4532,13477,Cardinal Grove,2589,medium,750956.0,3300,3300 1st Floor Deck Framing,1
4533,13112,Marlin Chase,3171,medium,634940.0,3540,3540 Receive Lumber Drop #2,1
4534,13360,Peninsula Lakes,3496,medium,575090.0,3540,3540 Receive Lumber Drop #2,1
4535,13360,Peninsula Lakes,3496,medium,575090.0,3740,3740 Receive 2nd Floor Joists,1
4536,13112,Marlin Chase,3171,medium,634940.0,3740,3740 Receive 2nd Floor Joists,1
4537,13339,Peninsula,5583,high,750956.0,3780,3780 2nd Floor Deck Framing,1
4538,13112,Marlin Chase,3171,medium,634940.0,3900,3900 Receive Lumber Drop #3,1
4539,13360,Peninsula Lakes,3496,medium,575090.0,3900,3900 Receive Lumber Drop #3,1
4540,13120,Marsh Island,4291,medium,851477.0,4020,4020 Set Trusses,1
4541,13253,River Mill,2912,medium,692624.0,4020,4020 Set Trusses,4
4542,13030,Peninsula,5546,high,1768191.0,4070,4070 Receive Exterior Deck Material,1
4543,13477,Cardinal Grove,2589,medium,750956.0,4070,4070 Receive Exterior Deck Material,1
4544,13278,Mosaic,2320,medium,818814.0,4260,4260 Receive Windows,1
4545,13278,Mosaic,2320,medium,818814.0,4300,4300 Receive Window/Door Flashings,1
4546,13278,Mosaic,2320,medium,818814.0,4340,4340 Receive Exterior Doors,1
4547,13253,River Mill,2912,medium,692624.0,4460,4460 Schedule Gas Lateral Contractor,1
4548,13032,Welches Pond,2812,medium,643995.0,4461,4461 Install Gas Lateral,1
4549,13401,Welches Pond,2927,medium,731557.0,4461,4461 Install Gas Lateral,1
4550,13101,Marlin Chase,2461,medium,682900.0,4590,4590 Install Metal Roofing,1
4551,12920,Peninsula,4116,high,1454538.0,4591,4591 Install Metal Roof Flashing,1
4552,13137,Marlin Chase,2330,medium,637264.0,4700,4700 Internal Framing Inspection,1
4553,13388,Marsh Island,5848,high,750956.0,4775,4775 Receive Hardwood Stairs,1
4554,13136,Marlin Chase,3170,medium,806102.0,4981,4981 Deliver Sinks,1
4555,13140,Marlin Chase,2824,medium,766881.0,5740,5740 Install Gas Lines,1
4556,13137,Marlin Chase,2330,medium,637264.0,5820,5820 Framing Inspection,1
4557,13032,Welches Pond,2812,medium,643995.0,5900,5900 Air Seal,1
4558,13113,Marlin Chase,2814,medium,750956.0,6300,6300 Energy Inspection,1
4559,13113,Marlin Chase,2814,medium,750956.0,6345,6345 Stock Drywall,1
4560,13145,Marlin Chase,3204,medium,841553.0,6380,6380 Install Drywall,10
4561,13092,Marlin Chase,2079,medium,433351.0,6885,6885 Install Screen Porch Enclosure,1
4562,13136,Marlin Chase,3170,medium,806102.0,7300,7300 Receive Interior Trim,1
4563,13136,Marlin Chase,3170,medium,806102.0,7304,7304 Receive Goodie Box,1
4564,13136,Marlin Chase,3170,medium,806102.0,7700,7700 Receive Interior Doors,1
4565,13136,Marlin Chase,3170,medium,806102.0,7862,7862 Receive Cabinet Hardware Allocation,1
4566,13136,Marlin Chase,3170,medium,806102.0,7866,7866 Receive Door Hardware,1
4567,13136,Marlin Chase,3170,medium,806102.0,7900,7900 Receive Cabinets Allocation,1
4568,13136,Marlin Chase,3170,medium,806102.0,7901,7901 Cabinet Delivery Charges,1
4569,13136,Marlin Chase,3170,medium,806102.0,7940,7940 Receive Vanity Tops,1
4570,12920,Peninsula,4116,high,1454538.0,9390,9390 Install Water Meter/Sewer Frame,1
4571,13440,Marlin Chase,3067,medium,714189.0,9460,9460 Attic Insulation,1
4572,13101,Marlin Chase,2461,medium,682900.0,9540,9540 Rec. GE Appliance Pkg1 Allocation,1
4573,12920,Peninsula,4116,high,1454538.0,9900,9900 Water Lateral,1
4574,13408,NewMarket,3940,medium,889253.0,9900,9900 Water Lateral,1
4575,13408,NewMarket,3940,medium,889253.0,9905,9905 Sewer Lateral,1
4576,13175,Peninsula Lakes,2245,low,567645.0,9905,9905 Sewer Lateral,2
4577,12920,Peninsula,4116,high,1454538.0,9905,9905 Sewer Lateral,1
4578,13240,Peninsula Lakes,1984,low,616419.0,9940,9940 Final Inspection,1
4579,13277,Mosaic,1704,medium,561869.0,100,100 Framing DRAW 1,1
4580,13339,Peninsula,5583,high,750956.0,100,100 Framing DRAW 1,1
4581,13476,Durham Farms,4277,medium,750956.0,1190,1190 Capillary Break,1
4582,13476,Durham Farms,4277,medium,750956.0,1195,1195 Pin Footings,1
4583,13476,Durham Farms,4277,medium,750956.0,1195,1195 Pin Footings,1
4584,13465,Cardinal Grove,1764,medium,569722.0,1580,1580 Form Foundation Walls,1
4585,13471,Cardinal Grove,2233,medium,517387.0,1580,1580 Form Foundation Walls,1
4586,13507,Welches Pond,2852,medium,845914.0,1580,1580 Form Foundation Walls,1
4587,13507,Welches Pond,2852,medium,845914.0,1820,1820 Foundation Wall Inspection,1
4588,13465,Cardinal Grove,1764,medium,569722.0,1820,1820 Foundation Wall Inspection,1
4589,13471,Cardinal Grove,2233,medium,517387.0,1820,1820 Foundation Wall Inspection,1
4590,13465,Cardinal Grove,1764,medium,569722.0,1860,1860 Foundation Wall Pour,1
4591,13471,Cardinal Grove,2233,medium,517387.0,1860,1860 Foundation Wall Pour,1
4592,13507,Welches Pond,2852,medium,845914.0,1860,1860 Foundation Wall Pour,1
4593,13349,Peninsula Lakes,2188,medium,442826.0,2140,2140 Underground Plumbing Inspection,1
4594,13394,Peninsula Lakes,2154,medium,474879.0,2140,2140 Underground Plumbing Inspection,1
4595,13137,Marlin Chase,2330,medium,637264.0,2344,2344 Meter Pit Install,1
4596,13442,Walden,4633,medium,656370.0,2344,2344 Meter Pit Install,1
4597,13091,Marlin Chase,2591,medium,562928.0,2440,2440 Receive Steel,1
4598,13091,Marlin Chase,2591,medium,562928.0,2460,2460 Receive Lumber Drop #1,1
4599,13442,Walden,4633,medium,656370.0,2460,2460 Receive Lumber Drop #1,1
4600,13442,Walden,4633,medium,656370.0,2540,2540 Receive 1st Floor Joists,1
4601,13442,Walden,4633,medium,656370.0,2700,2700 Pour Garage Slab,9
4602,13360,Peninsula Lakes,3496,medium,575090.0,2700,2700 Pour Garage Slab,1
4603,13360,Peninsula Lakes,3496,medium,575090.0,3300,3300 1st Floor Deck Framing,1
4604,13112,Marlin Chase,3171,medium,634940.0,3300,3300 1st Floor Deck Framing,1
4605,13258,River Mill,3064,medium,670416.0,3300,3300 1st Floor Deck Framing,1
4606,13477,Cardinal Grove,2589,medium,750956.0,3380,3380 1st Floor Wall Framing,1
4607,13360,Peninsula Lakes,3496,medium,575090.0,3380,3380 1st Floor Wall Framing,1
4608,13091,Marlin Chase,2591,medium,562928.0,3540,3540 Receive Lumber Drop #2,1
4609,13477,Cardinal Grove,2589,medium,750956.0,3700,3700 Receive Trusses,1
4610,13339,Peninsula,5583,high,750956.0,3820,3820 2nd Floor Wall Framing,2
4611,13091,Marlin Chase,2591,medium,562928.0,3900,3900 Receive Lumber Drop #3,1
4612,13112,Marlin Chase,3171,medium,634940.0,4070,4070 Receive Exterior Deck Material,1
4613,13258,River Mill,3064,medium,670416.0,4070,4070 Receive Exterior Deck Material,1
4614,13360,Peninsula Lakes,3496,medium,575090.0,4070,4070 Receive Exterior Deck Material,1
4615,13152,Marlin Chase,2710,medium,768496.0,4100,4100 Exterior Deck Framing,1
4616,13120,Marsh Island,4291,medium,851477.0,4230,4230 Receive Housewrap/Flashing,1
4617,13258,River Mill,3064,medium,670416.0,4230,4230 Receive Housewrap/Flashing,1
4618,13152,Marlin Chase,2710,medium,768496.0,4260,4260 Receive Windows,1
4619,13152,Marlin Chase,2710,medium,768496.0,4300,4300 Receive Window/Door Flashings,1
4620,13278,Mosaic,2320,medium,818814.0,4380,4380 Roof Sheathing,3
4621,13120,Marsh Island,4291,medium,851477.0,4380,4380 Roof Sheathing,2
4622,13152,Marlin Chase,2710,medium,768496.0,4390,4390 Receive Roofing Material,1
4623,13477,Cardinal Grove,2589,medium,750956.0,4460,4460 Schedule Gas Lateral Contractor,1
4624,13278,Mosaic,2320,medium,818814.0,4540,4540 Install Windows,1
4625,13388,Marsh Island,5848,high,750956.0,4585,4585 Install Membrane Roofing,1
4626,13388,Marsh Island,5848,high,750956.0,4591,4591 Install Metal Roof Flashing,1
4627,13339,Peninsula,5583,high,750956.0,4660,4660 Schedule Elevator Rough,1
4628,13032,Welches Pond,2812,medium,643995.0,4700,4700 Internal Framing Inspection,1
4629,13278,Mosaic,2320,medium,818814.0,4701,4701 Frame Check,1
4630,13144,Marlin Chase,3055,medium,740636.0,4980,4980 Plumbing Rough,2
4631,13035,Forest Hills,4024,medium,816522.0,5180,5180 Electric Rough,4
4632,13401,Welches Pond,2927,medium,731557.0,5260,5260 Mechanical Rough Inspection,1
4633,13175,Peninsula Lakes,2245,low,567645.0,5260,5260 Mechanical Rough Inspection,1
4634,13175,Peninsula Lakes,2245,low,567645.0,5580,5580 Structured Wiring Rough,1
4635,13401,Welches Pond,2927,medium,731557.0,5580,5580 Structured Wiring Rough,1
4636,13035,Forest Hills,4024,medium,816522.0,5740,5740 Install Gas Lines,1
4637,13035,Forest Hills,4024,medium,816522.0,5860,5860 Frame Stage Tour,1
4638,12920,Peninsula,4116,high,1454538.0,5860,5860 Frame Stage Tour,1
4639,13140,Marlin Chase,2824,medium,766881.0,5860,5860 Frame Stage Tour,1
4640,13112,Marlin Chase,3171,medium,634940.0,5940,5940 Order Cabinets,1
4641,13112,Marlin Chase,3171,medium,634940.0,5941,5941 Order Cabinet Hardware,1
4642,13137,Marlin Chase,2330,medium,637264.0,6180,6180 Install Insulation,2
4643,13401,Welches Pond,2927,medium,731557.0,6390,6390 Schedule Gas Meter,1
4644,13032,Welches Pond,2812,medium,643995.0,6390,6390 Schedule Gas Meter,1
4645,13113,Marlin Chase,2814,medium,750956.0,6620,6620 Receive Vinyl Siding,1
4646,13113,Marlin Chase,2814,medium,750956.0,6700,6700 Receive Composite Ext Trim,1
4647,13113,Marlin Chase,2814,medium,750956.0,6720,6720 Receive Siding Accents,1
4648,13113,Marlin Chase,2814,medium,750956.0,6725,6725 Receive Shutters,1
4649,13113,Marlin Chase,2814,medium,750956.0,6740,6740 Receive PVC Exterior Trim,1
4650,13113,Marlin Chase,2814,medium,750956.0,6781,6781 Receive Column Wrap/Flower Bx/Pediment,1
4651,13113,Marlin Chase,2814,medium,750956.0,6820,6820 Receive Deck Skirting,1
4652,13440,Marlin Chase,3067,medium,714189.0,7140,7140 Exterior Painting,1
4653,13136,Marlin Chase,3170,medium,806102.0,7860,7860 Install Interior Trim,2
4654,13440,Marlin Chase,3067,medium,714189.0,8380,8380 Template Countertops,1
4655,13139,Marlin Chase,2554,medium,704067.0,9140,9140 2nd Stage Air Seal,1
4656,13020,Peninsula Lakes,2100,low,578095.0,9140,9140 2nd Stage Air Seal,1
4657,13136,Marlin Chase,3170,medium,806102.0,9420,9420 Install Solar Panels,1
4658,13020,Peninsula Lakes,2100,low,578095.0,9460,9460 Attic Insulation,1
4659,13175,Peninsula Lakes,2245,low,567645.0,9900,9900 Water Lateral,1
4660,13408,NewMarket,3940,medium,889253.0,9910,9910 Utility Grade,1
4661,12850,Peninsula,5715,high,750956.0,9940,9940 Final Inspection,1
4662,13440,Marlin Chase,3067,medium,714189.0,10500,10500 Paint 2,3
4663,12671,Peninsula,5870,high,750956.0,10820,10820 Settlement,1
4664,13137,Marlin Chase,2330,medium,637264.0,10940,10940 Framing Retainage,1
4665,13501,Hailey's Glen,2736,medium,694771.0,0,00000 START,1
4666,13397,Peninsula,5533,high,750956.0,0,00000 START,1
4667,13397,Peninsula,5533,high,750956.0,1,1 START  CONSTRUCTION,1
4668,13501,Hailey's Glen,2736,medium,694771.0,1,1 START  CONSTRUCTION,1
4669,13030,Peninsula,5546,high,1768191.0,2,2 FRAMING START,1
4670,13442,Walden,4633,medium,656370.0,2,2 FRAMING START,1
4671,13278,Mosaic,2320,medium,818814.0,140,140 Framing DRAW 2,1
4672,13501,Hailey's Glen,2736,medium,694771.0,252,252 Site Plan,1
4673,13397,Peninsula,5533,high,750956.0,252,252 Site Plan,1
4674,13501,Hailey's Glen,2736,medium,694771.0,260,260 Plan Review/Permit Allocation,0
4675,13501,Hailey's Glen,2736,medium,694771.0,900,900 Bldg Stakeout,1
4676,13397,Peninsula,5533,high,750956.0,900,900 Bldg Stakeout,1
4677,13397,Peninsula,5533,high,750956.0,901,901 Engineering Allocation,0
4678,13501,Hailey's Glen,2736,medium,694771.0,901,901 Engineering Allocation,0
4679,13501,Hailey's Glen,2736,medium,694771.0,980,980 Install Silt Fence,1
4680,13397,Peninsula,5533,high,750956.0,980,980 Install Silt Fence,1
4681,13501,Hailey's Glen,2736,medium,694771.0,1020,1020 Install Construction Entrance,1
4682,13397,Peninsula,5533,high,750956.0,1020,1020 Install Construction Entrance,1
4683,13397,Peninsula,5533,high,750956.0,1780,1780 Order Steel,1
4684,13501,Hailey's Glen,2736,medium,694771.0,1780,1780 Order Steel,1
4685,13476,Durham Farms,4277,medium,750956.0,1840,1840 Install Block Foundation,3
4686,13507,Welches Pond,2852,medium,845914.0,1900,1900 Strip Foundation Forms,1
4687,13465,Cardinal Grove,1764,medium,569722.0,1900,1900 Strip Foundation Forms,1
4688,13471,Cardinal Grove,2233,medium,517387.0,1900,1900 Strip Foundation Forms,1
4689,13392,Marsh Island,2795,medium,771707.0,2140,2140 Underground Plumbing Inspection,1
4690,13397,Peninsula,5533,high,750956.0,2230,2230 Receive Dumpster Allocation,1
4691,13501,Hailey's Glen,2736,medium,694771.0,2230,2230 Receive Dumpster Allocation,1
4692,13501,Hailey's Glen,2736,medium,694771.0,2240,2240 Receive Portable Toilet Allocation,1
4693,13397,Peninsula,5533,high,750956.0,2240,2240 Receive Portable Toilet Allocation,1
4694,13349,Peninsula Lakes,2188,medium,442826.0,2250,2250 Slab Prep,1
4695,13394,Peninsula Lakes,2154,medium,474879.0,2250,2250 Slab Prep,1
4696,13394,Peninsula Lakes,2154,medium,474879.0,2420,2420 Slab Inspection,1
4697,13349,Peninsula Lakes,2188,medium,442826.0,2420,2420 Slab Inspection,1
4698,13442,Walden,4633,medium,656370.0,2440,2440 Receive Steel,1
4699,13091,Marlin Chase,2591,medium,562928.0,2540,2540 Receive 1st Floor Joists,1
4700,13175,Peninsula Lakes,2245,low,567645.0,3140,3140 Pour Porch Slab,1
4701,13112,Marlin Chase,3171,medium,634940.0,3380,3380 1st Floor Wall Framing,1
4702,13258,River Mill,3064,medium,670416.0,3380,3380 1st Floor Wall Framing,2
4703,13442,Walden,4633,medium,656370.0,3540,3540 Receive Lumber Drop #2,1
4704,13360,Peninsula Lakes,3496,medium,575090.0,3700,3700 Receive Trusses,1
4705,13277,Mosaic,1704,medium,561869.0,3700,3700 Receive Trusses,1
4706,13112,Marlin Chase,3171,medium,634940.0,3700,3700 Receive Trusses,1
4707,13442,Walden,4633,medium,656370.0,3740,3740 Receive 2nd Floor Joists,1
4708,13477,Cardinal Grove,2589,medium,750956.0,3780,3780 2nd Floor Deck Framing,1
4709,13360,Peninsula Lakes,3496,medium,575090.0,3780,3780 2nd Floor Deck Framing,1
4710,13442,Walden,4633,medium,656370.0,3900,3900 Receive Lumber Drop #3,1
4711,13091,Marlin Chase,2591,medium,562928.0,4070,4070 Receive Exterior Deck Material,1
4712,13152,Marlin Chase,2710,medium,768496.0,4071,4071 Receive Exterior Decking,1
4713,13088,Forest Hills,3580,medium,222544.0,4380,4380 Roof Sheathing,4
4714,13258,River Mill,3064,medium,670416.0,4460,4460 Schedule Gas Lateral Contractor,1
4715,13278,Mosaic,2320,medium,818814.0,4460,4460 Schedule Gas Lateral Contractor,1
4716,13112,Marlin Chase,3171,medium,634940.0,4460,4460 Schedule Gas Lateral Contractor,1
4717,13360,Peninsula Lakes,3496,medium,575090.0,4460,4460 Schedule Gas Lateral Contractor,1
4718,13175,Peninsula Lakes,2245,low,567645.0,4461,4461 Install Gas Lateral,1
4719,12920,Peninsula,4116,high,1454538.0,4461,4461 Install Gas Lateral,1
4720,13152,Marlin Chase,2710,medium,768496.0,4540,4540 Install Windows,1
4721,13440,Marlin Chase,3067,medium,714189.0,4542,4542 Measure/Order Window Coverings,1
4722,13152,Marlin Chase,2710,medium,768496.0,4580,4580 Install Roofing,2
4723,13152,Marlin Chase,2710,medium,768496.0,4701,4701 Frame Check,1
4724,13175,Peninsula Lakes,2245,low,567645.0,4940,4940 Install Fireplace,1
4725,13388,Marsh Island,5848,high,750956.0,5100,5100 HVAC Rough,3
4726,13140,Marlin Chase,2824,medium,766881.0,5260,5260 Mechanical Rough Inspection,1
4727,13401,Welches Pond,2927,medium,731557.0,5300,5300 Municipal Electric Inspection,1
4728,13175,Peninsula Lakes,2245,low,567645.0,5300,5300 Municipal Electric Inspection,1
4729,13140,Marlin Chase,2824,medium,766881.0,5580,5580 Structured Wiring Rough,1
4730,13032,Welches Pond,2812,medium,643995.0,5820,5820 Framing Inspection,1
4731,13278,Mosaic,2320,medium,818814.0,5825,5825 Frame Punch,1
4732,13175,Peninsula Lakes,2245,low,567645.0,5900,5900 Air Seal,1
4733,13401,Welches Pond,2927,medium,731557.0,5900,5900 Air Seal,1
4734,13120,Marsh Island,4291,medium,851477.0,5940,5940 Order Cabinets,1
4735,13091,Marlin Chase,2591,medium,562928.0,5940,5940 Order Cabinets,1
4736,13091,Marlin Chase,2591,medium,562928.0,5941,5941 Order Cabinet Hardware,1
4737,13113,Marlin Chase,2814,medium,750956.0,6380,6380 Install Drywall,9
4738,13175,Peninsula Lakes,2245,low,567645.0,6390,6390 Schedule Gas Meter,1
4739,13139,Marlin Chase,2554,medium,704067.0,6860,6860 Siding Installation,5
4740,13440,Marlin Chase,3067,medium,714189.0,7180,7180 Install Exterior Railings,1
4741,13136,Marlin Chase,3170,medium,806102.0,8300,8300 Install Cabinets,2
4742,13101,Marlin Chase,2461,medium,682900.0,8460,8460 Install Countertops,1
4743,13501,Hailey's Glen,2736,medium,694771.0,8500,8500 Order Appliance Pkg 1,1
4744,13397,Peninsula,5533,high,750956.0,8500,8500 Order Appliance Pkg 1,1
4745,13138,Marlin Chase,3171,medium,859133.0,9140,9140 2nd Stage Air Seal,1
4746,13101,Marlin Chase,2461,medium,682900.0,9620,9620 Install Appliances,1
4747,13136,Marlin Chase,3170,medium,806102.0,9620,9620 Install Appliances,1
4748,13501,Hailey's Glen,2736,medium,694771.0,9750,9750 Order Appliance Pkg 2,1
4749,13397,Peninsula,5533,high,750956.0,9750,9750 Order Appliance Pkg 2,1
4750,13090,Marsh Island,5603,high,1154185.0,9756,9756 Receive N/S Appliance Pkg 2,44
4751,13397,Peninsula,5533,high,750956.0,9860,9860 Final Utility Connection,0
4752,13501,Hailey's Glen,2736,medium,694771.0,9860,9860 Final Utility Connection,0
4753,13501,Hailey's Glen,2736,medium,694771.0,10300,10300.1 Driveway/Curb Repair Allowance,0
4754,13397,Peninsula,5533,high,750956.0,10300,10300.1 Driveway/Curb Repair Allowance,0
4755,13032,Welches Pond,2812,medium,643995.0,10940,10940 Framing Retainage,1
4756,13440,Marlin Chase,3067,medium,714189.0,0,vancheck Check Vanity Tops/Windows for Damage,1
4757,13091,Marlin Chase,2591,medium,562928.0,2,2 FRAMING START,1
4758,13278,Mosaic,2320,medium,818814.0,3,3 TRADES START,1
4759,13477,Cardinal Grove,2589,medium,750956.0,100,100 Framing DRAW 1,1
4760,13360,Peninsula Lakes,3496,medium,575090.0,100,100 Framing DRAW 1,1
4761,13152,Marlin Chase,2710,medium,768496.0,140,140 Framing DRAW 2,1
4762,13501,Hailey's Glen,2736,medium,694771.0,1060,1060 Foundation Excavation,1
4763,13397,Peninsula,5533,high,750956.0,1100,1100 Form Footings,1
4764,13397,Peninsula,5533,high,750956.0,1140,1140 Footing Inspection,1
4765,13397,Peninsula,5533,high,750956.0,1180,1180 Pour Footings,1
4766,13507,Welches Pond,2852,medium,845914.0,1940,1940 Install Perimeter Drain/Croc,1
4767,13465,Cardinal Grove,1764,medium,569722.0,1940,1940 Install Perimeter Drain/Croc,1
4768,13471,Cardinal Grove,2233,medium,517387.0,1940,1940 Install Perimeter Drain/Croc,1
4769,13465,Cardinal Grove,1764,medium,569722.0,2060,2060 Waterproof Foundation Walls,1
4770,13471,Cardinal Grove,2233,medium,517387.0,2060,2060 Waterproof Foundation Walls,1
4771,13507,Welches Pond,2852,medium,845914.0,2060,2060 Waterproof Foundation Walls,1
4772,13349,Peninsula Lakes,2188,medium,442826.0,2385,2385 Pour SOG Slab,1
4773,13394,Peninsula Lakes,2154,medium,474879.0,2385,2385 Pour SOG Slab,1
4774,13394,Peninsula Lakes,2154,medium,474879.0,2700,2700 Pour Garage Slab,1
4775,13349,Peninsula Lakes,2188,medium,442826.0,2700,2700 Pour Garage Slab,1
4776,13032,Welches Pond,2812,medium,643995.0,3140,3140 Pour Porch Slab,1
4777,13442,Walden,4633,medium,656370.0,3300,3300 1st Floor Deck Framing,1
4778,13091,Marlin Chase,2591,medium,562928.0,3300,3300 1st Floor Deck Framing,1
4779,13030,Peninsula,5546,high,1768191.0,3380,3380 1st Floor Wall Framing,1
4780,13030,Peninsula,5546,high,1768191.0,3700,3700 Receive Trusses,1
4781,13112,Marlin Chase,3171,medium,634940.0,3780,3780 2nd Floor Deck Framing,1
4782,13360,Peninsula Lakes,3496,medium,575090.0,3820,3820 2nd Floor Wall Framing,1
4783,13477,Cardinal Grove,2589,medium,750956.0,3820,3820 2nd Floor Wall Framing,1
4784,13339,Peninsula,5583,high,750956.0,3940,3940 3rd Floor Deck Framing,1
4785,13339,Peninsula,5583,high,750956.0,3980,3980 3rd Floor Wall Framing,2
4786,13277,Mosaic,1704,medium,561869.0,4020,4020 Set Trusses,3
4787,13442,Walden,4633,medium,656370.0,4070,4070 Receive Exterior Deck Material,1
4788,13120,Marsh Island,4291,medium,851477.0,4100,4100 Exterior Deck Framing,1
4789,13120,Marsh Island,4291,medium,851477.0,4390,4390 Receive Roofing Material,1
4790,13278,Mosaic,2320,medium,818814.0,4390,4390 Receive Roofing Material,1
4791,13277,Mosaic,1704,medium,561869.0,4460,4460 Schedule Gas Lateral Contractor,1
4792,13136,Marlin Chase,3170,medium,806102.0,4542,4542 Measure/Order Window Coverings,1
4793,13152,Marlin Chase,2710,medium,768496.0,4582,4582 Install Temp Poly,1
4794,13140,Marlin Chase,2824,medium,766881.0,4700,4700 Internal Framing Inspection,1
4795,13401,Welches Pond,2927,medium,731557.0,4700,4700 Internal Framing Inspection,1
4796,13120,Marsh Island,4291,medium,851477.0,4701,4701 Frame Check,1
4797,13144,Marlin Chase,3055,medium,740636.0,4940,4940 Install Fireplace,1
4798,13140,Marlin Chase,2824,medium,766881.0,5300,5300 Municipal Electric Inspection,1
4799,13144,Marlin Chase,3055,medium,740636.0,5740,5740 Install Gas Lines,1
4800,13401,Welches Pond,2927,medium,731557.0,5820,5820 Framing Inspection,1
4801,13152,Marlin Chase,2710,medium,768496.0,5825,5825 Frame Punch,1
4802,13140,Marlin Chase,2824,medium,766881.0,5900,5900 Air Seal,1
4803,13253,River Mill,2912,medium,692624.0,5940,5940 Order Cabinets,1
4804,13088,Forest Hills,3580,medium,222544.0,5940,5940 Order Cabinets,1
4805,13277,Mosaic,1704,medium,561869.0,5940,5940 Order Cabinets,1
4806,13277,Mosaic,1704,medium,561869.0,5941,5941 Order Cabinet Hardware,1
4807,13253,River Mill,2912,medium,692624.0,5941,5941 Order Cabinet Hardware,1
4808,13088,Forest Hills,3580,medium,222544.0,5941,5941 Order Cabinet Hardware,1
4809,13032,Welches Pond,2812,medium,643995.0,6180,6180 Install Insulation,2
4810,13137,Marlin Chase,2330,medium,637264.0,6300,6300 Energy Inspection,1
4811,13137,Marlin Chase,2330,medium,637264.0,6345,6345 Stock Drywall,1
4812,13101,Marlin Chase,2461,medium,682900.0,7180,7180 Install Exterior Railings,1
4813,13139,Marlin Chase,2554,medium,704067.0,8420,8420 1st Paint,1
4814,13020,Peninsula Lakes,2100,low,578095.0,8420,8420 1st Paint,1
4815,13101,Marlin Chase,2461,medium,682900.0,9820,9820 Install Gutters,1
4816,12850,Peninsula,5715,high,750956.0,9985,9985 Final Clean 2,1
4817,13136,Marlin Chase,3170,medium,806102.0,10460,10460 Drywall Touch Up,2
4818,13240,Peninsula Lakes,1984,low,616419.0,10780,10780 Customer Walk,1
4819,13152,Marlin Chase,2710,medium,768496.0,3,3 TRADES START,1
4820,13112,Marlin Chase,3171,medium,634940.0,100,100 Framing DRAW 1,1
4821,13120,Marsh Island,4291,medium,851477.0,140,140 Framing DRAW 2,1
4822,13501,Hailey's Glen,2736,medium,694771.0,1100,1100 Form Footings,1
4823,13501,Hailey's Glen,2736,medium,694771.0,1140,1140 Footing Inspection,1
4824,13501,Hailey's Glen,2736,medium,694771.0,1180,1180 Pour Footings,1
4825,13397,Peninsula,5533,high,750956.0,1190,1190 Capillary Break,1
4826,13349,Peninsula Lakes,2188,medium,442826.0,2460,2460 Receive Lumber Drop #1,1
4827,13394,Peninsula Lakes,2154,medium,474879.0,2460,2460 Receive Lumber Drop #1,1
4828,13507,Welches Pond,2852,medium,845914.0,3020,3020 Termite & Pest PreTreatment,1
4829,13465,Cardinal Grove,1764,medium,569722.0,3020,3020 Termite & Pest PreTreatment,1
4830,13471,Cardinal Grove,2233,medium,517387.0,3020,3020 Termite & Pest PreTreatment,1
4831,13465,Cardinal Grove,1764,medium,569722.0,3060,3060 Foundation Insulation-Crawl,1
4832,13471,Cardinal Grove,2233,medium,517387.0,3060,3060 Foundation Insulation-Crawl,1
4833,13507,Welches Pond,2852,medium,845914.0,3060,3060 Foundation Insulation-Crawl,1
4834,13137,Marlin Chase,2330,medium,637264.0,3140,3140 Pour Porch Slab,1
4835,13091,Marlin Chase,2591,medium,562928.0,3380,3380 1st Floor Wall Framing,1
4836,13442,Walden,4633,medium,656370.0,3380,3380 1st Floor Wall Framing,1
4837,13349,Peninsula Lakes,2188,medium,442826.0,3540,3540 Receive Lumber Drop #2,1
4838,13394,Peninsula Lakes,2154,medium,474879.0,3540,3540 Receive Lumber Drop #2,1
4839,13091,Marlin Chase,2591,medium,562928.0,3700,3700 Receive Trusses,1
4840,13442,Walden,4633,medium,656370.0,3700,3700 Receive Trusses,1
4841,13091,Marlin Chase,2591,medium,562928.0,3740,3740 Receive 2nd Floor Joists,1
4842,13258,River Mill,3064,medium,670416.0,3780,3780 2nd Floor Deck Framing,1
4843,13030,Peninsula,5546,high,1768191.0,3780,3780 2nd Floor Deck Framing,1
4844,13112,Marlin Chase,3171,medium,634940.0,3820,3820 2nd Floor Wall Framing,1
4845,13349,Peninsula Lakes,2188,medium,442826.0,3900,3900 Receive Lumber Drop #3,1
4846,13394,Peninsula Lakes,2154,medium,474879.0,3900,3900 Receive Lumber Drop #3,1
4847,13360,Peninsula Lakes,3496,medium,575090.0,4020,4020 Set Trusses,1
4848,13477,Cardinal Grove,2589,medium,750956.0,4020,4020 Set Trusses,3
4849,13120,Marsh Island,4291,medium,851477.0,4071,4071 Receive Exterior Decking,1
4850,13278,Mosaic,2320,medium,818814.0,4100,4100 Exterior Deck Framing,1
4851,13477,Cardinal Grove,2589,medium,750956.0,4230,4230 Receive Housewrap/Flashing,1
4852,13360,Peninsula Lakes,3496,medium,575090.0,4230,4230 Receive Housewrap/Flashing,1
4853,13339,Peninsula,5583,high,750956.0,4230,4230 Receive Housewrap/Flashing,1
4854,13253,River Mill,2912,medium,692624.0,4260,4260 Receive Windows,1
4855,13253,River Mill,2912,medium,692624.0,4380,4380 Roof Sheathing,3
4856,13091,Marlin Chase,2591,medium,562928.0,4460,4460 Schedule Gas Lateral Contractor,1
4857,13442,Walden,4633,medium,656370.0,4460,4460 Schedule Gas Lateral Contractor,1
4858,13278,Mosaic,2320,medium,818814.0,4580,4580 Install Roofing,2
4859,13120,Marsh Island,4291,medium,851477.0,4580,4580 Install Roofing,2
4860,13152,Marlin Chase,2710,medium,768496.0,4585,4585 Install Membrane Roofing,1
4861,13140,Marlin Chase,2824,medium,766881.0,4591,4591 Install Metal Roof Flashing,1
4862,13408,NewMarket,3940,medium,889253.0,4940,4940 Install Fireplace,1
4863,13152,Marlin Chase,2710,medium,768496.0,5100,5100 HVAC Rough,2
4864,13152,Marlin Chase,2710,medium,768496.0,5120,5120 HVAC Set Furnace,1
4865,13408,NewMarket,3940,medium,889253.0,5180,5180 Electric Rough,4
4866,12920,Peninsula,4116,high,1454538.0,5180,5180 Electric Rough,6
4867,13035,Forest Hills,4024,medium,816522.0,5260,5260 Mechanical Rough Inspection,1
4868,13035,Forest Hills,4024,medium,816522.0,5580,5580 Structured Wiring Rough,1
4869,13408,NewMarket,3940,medium,889253.0,5740,5740 Install Gas Lines,1
4870,13140,Marlin Chase,2824,medium,766881.0,5820,5820 Framing Inspection,1
4871,13120,Marsh Island,4291,medium,851477.0,5825,5825 Frame Punch,1
4872,13144,Marlin Chase,3055,medium,740636.0,5860,5860 Frame Stage Tour,1
4873,13120,Marsh Island,4291,medium,851477.0,5941,5941 Order Cabinet Hardware,1
4874,13137,Marlin Chase,2330,medium,637264.0,6380,6380 Install Drywall,8
4875,12920,Peninsula,4116,high,1454538.0,6390,6390 Schedule Gas Meter,1
4876,13136,Marlin Chase,3170,medium,806102.0,6391,6391 Install Gas Meter,1
4877,13137,Marlin Chase,2330,medium,637264.0,6620,6620 Receive Vinyl Siding,1
4878,13137,Marlin Chase,2330,medium,637264.0,6700,6700 Receive Composite Ext Trim,1
4879,13137,Marlin Chase,2330,medium,637264.0,6720,6720 Receive Siding Accents,1
4880,13137,Marlin Chase,2330,medium,637264.0,6725,6725 Receive Shutters,1
4881,13137,Marlin Chase,2330,medium,637264.0,6740,6740 Receive PVC Exterior Trim,1
4882,13137,Marlin Chase,2330,medium,637264.0,6781,6781 Receive Column Wrap/Flower Bx/Pediment,1
4883,13137,Marlin Chase,2330,medium,637264.0,6820,6820 Receive Deck Skirting,1
4884,13138,Marlin Chase,3171,medium,859133.0,6860,6860 Siding Installation,10
4885,13136,Marlin Chase,3170,medium,806102.0,6862,6862 Trellis Construction,1
4886,13136,Marlin Chase,3170,medium,806102.0,7220,7220 Install Deck Skirting/Flower Boxes,1
4887,13139,Marlin Chase,2554,medium,704067.0,7340,7340 Install Ceramic Tile,2
4888,13020,Peninsula Lakes,2100,low,578095.0,7340,7340 Install Ceramic Tile,2
4889,13020,Peninsula Lakes,2100,low,578095.0,7350,7350 Install Shower Tile,3
4890,13139,Marlin Chase,2554,medium,704067.0,7350,7350 Install Shower Tile,7
4891,13139,Marlin Chase,2554,medium,704067.0,8220,8220 Install Fireplace Surround/Mantel,1
4892,13136,Marlin Chase,3170,medium,806102.0,8380,8380 Template Countertops,1
4893,13136,Marlin Chase,3170,medium,806102.0,9541,9541 Receive N/S Appliance Pkg 1,1
4894,13136,Marlin Chase,3170,medium,806102.0,9820,9820 Install Gutters,1
4895,12850,Peninsula,5715,high,750956.0,10660,10660 Quality Inspection,1
4896,13401,Welches Pond,2927,medium,731557.0,10940,10940 Framing Retainage,1
4897,13140,Marlin Chase,2824,medium,766881.0,10940,10940 Framing Retainage,1
4898,13120,Marsh Island,4291,medium,851477.0,3,3 TRADES START,1
4899,13030,Peninsula,5546,high,1768191.0,100,100 Framing DRAW 1,1
4900,13258,River Mill,3064,medium,670416.0,100,100 Framing DRAW 1,1
4901,13501,Hailey's Glen,2736,medium,694771.0,1190,1190 Capillary Break,1
4902,13397,Peninsula,5533,high,750956.0,1580,1580 Form Foundation Walls,1
4903,13476,Durham Farms,4277,medium,750956.0,1580,1580 Form Foundation Walls,1
4904,13397,Peninsula,5533,high,750956.0,1820,1820 Foundation Wall Inspection,1
4905,13397,Peninsula,5533,high,750956.0,1860,1860 Foundation Wall Pour,1
4906,13145,Marlin Chase,3204,medium,841553.0,2344,2344 Meter Pit Install,1
4907,13032,Welches Pond,2812,medium,643995.0,2344,2344 Meter Pit Install,1
4908,13113,Marlin Chase,2814,medium,750956.0,2344,2344 Meter Pit Install,1
4909,13392,Marsh Island,2795,medium,771707.0,2440,2440 Receive Steel,1
4910,13349,Peninsula Lakes,2188,medium,442826.0,3740,3740 Receive 2nd Floor Joists,1
4911,13394,Peninsula Lakes,2154,medium,474879.0,3740,3740 Receive 2nd Floor Joists,1
4912,13091,Marlin Chase,2591,medium,562928.0,3780,3780 2nd Floor Deck Framing,1
4913,13442,Walden,4633,medium,656370.0,3780,3780 2nd Floor Deck Framing,1
4914,13258,River Mill,3064,medium,670416.0,3820,3820 2nd Floor Wall Framing,2
4915,13030,Peninsula,5546,high,1768191.0,3820,3820 2nd Floor Wall Framing,2
4916,13339,Peninsula,5583,high,750956.0,4020,4020 Set Trusses,3
4917,13112,Marlin Chase,3171,medium,634940.0,4020,4020 Set Trusses,3
4918,13349,Peninsula Lakes,2188,medium,442826.0,4070,4070 Receive Exterior Deck Material,1
4919,13394,Peninsula Lakes,2154,medium,474879.0,4070,4070 Receive Exterior Deck Material,1
4920,13112,Marlin Chase,3171,medium,634940.0,4230,4230 Receive Housewrap/Flashing,1
4921,13091,Marlin Chase,2591,medium,562928.0,4230,4230 Receive Housewrap/Flashing,1
4922,13030,Peninsula,5546,high,1768191.0,4230,4230 Receive Housewrap/Flashing,1
4923,13388,Marsh Island,5848,high,750956.0,4300,4300 Receive Window/Door Flashings,1
4924,13120,Marsh Island,4291,medium,851477.0,4300,4300 Receive Window/Door Flashings,1
4925,13120,Marsh Island,4291,medium,851477.0,4340,4340 Receive Exterior Doors,1
4926,13388,Marsh Island,5848,high,750956.0,4340,4340 Receive Exterior Doors,1
4927,13360,Peninsula Lakes,3496,medium,575090.0,4380,4380 Roof Sheathing,1
4928,13112,Marlin Chase,3171,medium,634940.0,4380,4380 Roof Sheathing,4
4929,13136,Marlin Chase,3170,medium,806102.0,4461,4461 Install Gas Lateral,1
4930,13253,River Mill,2912,medium,692624.0,4540,4540 Install Windows,1
4931,13175,Peninsula Lakes,2245,low,567645.0,4700,4700 Internal Framing Inspection,1
4932,13360,Peninsula Lakes,3496,medium,575090.0,4701,4701 Frame Check,1
4933,13120,Marsh Island,4291,medium,851477.0,4777,4777 Receive Box Stairs,1
4934,13388,Marsh Island,5848,high,750956.0,4940,4940 Install Fireplace,3
4935,13388,Marsh Island,5848,high,750956.0,4980,4980 Plumbing Rough,3
4936,13139,Marlin Chase,2554,medium,704067.0,4981,4981 Deliver Sinks,1
4937,13020,Peninsula Lakes,2100,low,578095.0,4981,4981 Deliver Sinks,1
4938,13120,Marsh Island,4291,medium,851477.0,5100,5100 HVAC Rough,2
4939,13120,Marsh Island,4291,medium,851477.0,5120,5120 HVAC Set Furnace,1
4940,13035,Forest Hills,4024,medium,816522.0,5300,5300 Municipal Electric Inspection,1
4941,13175,Peninsula Lakes,2245,low,567645.0,5820,5820 Framing Inspection,1
4942,13035,Forest Hills,4024,medium,816522.0,5900,5900 Air Seal,1
4943,13140,Marlin Chase,2824,medium,766881.0,6180,6180 Install Insulation,1
4944,13032,Welches Pond,2812,medium,643995.0,6300,6300 Energy Inspection,1
4945,13032,Welches Pond,2812,medium,643995.0,6345,6345 Stock Drywall,1
4946,13092,Marlin Chase,2079,medium,433351.0,6390,6390 Schedule Gas Meter,1
4947,13020,Peninsula Lakes,2100,low,578095.0,6391,6391 Install Gas Meter,1
4948,13388,Marsh Island,5848,high,750956.0,6900,6900 Schedule Septic Installation,1
4949,13136,Marlin Chase,3170,medium,806102.0,7140,7140 Exterior Painting,1
4950,13139,Marlin Chase,2554,medium,704067.0,7300,7300 Receive Interior Trim,1
4951,13020,Peninsula Lakes,2100,low,578095.0,7300,7300 Receive Interior Trim,1
4952,13020,Peninsula Lakes,2100,low,578095.0,7304,7304 Receive Goodie Box,1
4953,13139,Marlin Chase,2554,medium,704067.0,7304,7304 Receive Goodie Box,1
4954,13139,Marlin Chase,2554,medium,704067.0,7700,7700 Receive Interior Doors,1
4955,13020,Peninsula Lakes,2100,low,578095.0,7700,7700 Receive Interior Doors,1
4956,13020,Peninsula Lakes,2100,low,578095.0,7862,7862 Receive Cabinet Hardware Allocation,1
4957,13139,Marlin Chase,2554,medium,704067.0,7862,7862 Receive Cabinet Hardware Allocation,1
4958,13139,Marlin Chase,2554,medium,704067.0,7866,7866 Receive Door Hardware,1
4959,13020,Peninsula Lakes,2100,low,578095.0,7866,7866 Receive Door Hardware,1
4960,13020,Peninsula Lakes,2100,low,578095.0,7900,7900 Receive Cabinets Allocation,1
4961,13139,Marlin Chase,2554,medium,704067.0,7900,7900 Receive Cabinets Allocation,1
4962,13139,Marlin Chase,2554,medium,704067.0,7901,7901 Cabinet Delivery Charges,1
4963,13020,Peninsula Lakes,2100,low,578095.0,7901,7901 Cabinet Delivery Charges,1
4964,13020,Peninsula Lakes,2100,low,578095.0,7940,7940 Receive Vanity Tops,1
4965,13139,Marlin Chase,2554,medium,704067.0,7940,7940 Receive Vanity Tops,1
4966,13020,Peninsula Lakes,2100,low,578095.0,8020,8020 Receive Interior Railing,1
4967,13139,Marlin Chase,2554,medium,704067.0,8260,8260 Install Interior Railing,1
4968,13138,Marlin Chase,3171,medium,859133.0,8420,8420 1st Paint,1
4969,13388,Marsh Island,5848,high,750956.0,8820,8820 Schedule Irrigation Well,1
4970,13092,Marlin Chase,2079,medium,433351.0,8920,8920 Install Water Heater/1st Trim,1
4971,13092,Marlin Chase,2079,medium,433351.0,9020,9020 Electric Trim,2
4972,13175,Peninsula Lakes,2245,low,567645.0,9390,9390 Install Water Meter/Sewer Frame,1
4973,13136,Marlin Chase,3170,medium,806102.0,9460,9460 Attic Insulation,1
4974,13020,Peninsula Lakes,2100,low,578095.0,9820,9820 Install Gutters,1
4975,13101,Marlin Chase,2461,medium,682900.0,10301,10301 Driveway Apron,1
4976,12850,Peninsula,5715,high,750956.0,10420,10420 Powerwash,1
4977,13136,Marlin Chase,3170,medium,806102.0,10500,10500 Paint 2,3
4978,12673,Peninsula,5996,high,750956.0,10780,10780 Customer Walk,1
4979,13423,Governors,2974,medium,884692.0,0,00000 START,1
4980,13423,Governors,2974,medium,884692.0,1,1 START  CONSTRUCTION,1
4981,13091,Marlin Chase,2591,medium,562928.0,100,100 Framing DRAW 1,1
4982,13442,Walden,4633,medium,656370.0,100,100 Framing DRAW 1,1
4983,13253,River Mill,2912,medium,692624.0,140,140 Framing DRAW 2,1
4984,13360,Peninsula Lakes,3496,medium,575090.0,140,140 Framing DRAW 2,1
4985,13423,Governors,2974,medium,884692.0,252,252 Site Plan,1
4986,13423,Governors,2974,medium,884692.0,260,260 Plan Review/Permit Allocation,0
4987,13423,Governors,2974,medium,884692.0,900,900 Bldg Stakeout,1
4988,13423,Governors,2974,medium,884692.0,901,901 Engineering Allocation,0
4989,13423,Governors,2974,medium,884692.0,980,980 Install Silt Fence,1
4990,13423,Governors,2974,medium,884692.0,1020,1020 Install Construction Entrance,1
4991,13501,Hailey's Glen,2736,medium,694771.0,1580,1580 Form Foundation Walls,1
4992,13423,Governors,2974,medium,884692.0,1780,1780 Order Steel,1
4993,13501,Hailey's Glen,2736,medium,694771.0,1820,1820 Foundation Wall Inspection,1
4994,13476,Durham Farms,4277,medium,750956.0,1820,1820 Foundation Wall Inspection,1
4995,13501,Hailey's Glen,2736,medium,694771.0,1860,1860 Foundation Wall Pour,1
4996,13476,Durham Farms,4277,medium,750956.0,1900,1900 Strip Foundation Forms,1
4997,13397,Peninsula,5533,high,750956.0,1900,1900 Strip Foundation Forms,1
4998,13423,Governors,2974,medium,884692.0,2230,2230 Receive Dumpster Allocation,1
4999,13423,Governors,2974,medium,884692.0,2240,2240 Receive Portable Toilet Allocation,1
5000,13507,Welches Pond,2852,medium,845914.0,2260,2260 Crawl Stone/Sand,1
5001,13465,Cardinal Grove,1764,medium,569722.0,2260,2260 Crawl Stone/Sand,1
5002,13471,Cardinal Grove,2233,medium,517387.0,2260,2260 Crawl Stone/Sand,1
5003,13476,Durham Farms,4277,medium,750956.0,2260,2260 Crawl Stone/Sand,1
5004,13476,Durham Farms,4277,medium,750956.0,2340,2340 Backfill & Compact,1
5005,13507,Welches Pond,2852,medium,845914.0,2340,2340 Backfill & Compact,1
5006,13465,Cardinal Grove,1764,medium,569722.0,2340,2340 Backfill & Compact,1
5007,13471,Cardinal Grove,2233,medium,517387.0,2340,2340 Backfill & Compact,1
5008,13397,Peninsula,5533,high,750956.0,2344,2344 Meter Pit Install,1
5009,13476,Durham Farms,4277,medium,750956.0,2440,2440 Receive Steel,6
5010,13392,Marsh Island,2795,medium,771707.0,2460,2460 Receive Lumber Drop #1,1
5011,13392,Marsh Island,2795,medium,771707.0,2540,2540 Receive 1st Floor Joists,1
5012,13392,Marsh Island,2795,medium,771707.0,3540,3540 Receive Lumber Drop #2,1
5013,13392,Marsh Island,2795,medium,771707.0,3740,3740 Receive 2nd Floor Joists,1
5014,13442,Walden,4633,medium,656370.0,3820,3820 2nd Floor Wall Framing,1
5015,13392,Marsh Island,2795,medium,771707.0,3900,3900 Receive Lumber Drop #3,1
5016,13477,Cardinal Grove,2589,medium,750956.0,4260,4260 Receive Windows,1
5017,13088,Forest Hills,3580,medium,222544.0,4260,4260 Receive Windows,20
5018,13088,Forest Hills,3580,medium,222544.0,4340,4340 Receive Exterior Doors,1
5019,13277,Mosaic,1704,medium,561869.0,4380,4380 Roof Sheathing,2
5020,13088,Forest Hills,3580,medium,222544.0,4390,4390 Receive Roofing Material,1
5021,13030,Peninsula,5546,high,1768191.0,4460,4460 Schedule Gas Lateral Contractor,1
5022,13477,Cardinal Grove,2589,medium,750956.0,4580,4580 Install Roofing,2
5023,13144,Marlin Chase,3055,medium,740636.0,4585,4585 Install Membrane Roofing,1
5024,13120,Marsh Island,4291,medium,851477.0,4591,4591 Install Metal Roof Flashing,1
5025,13278,Mosaic,2320,medium,818814.0,4591,4591 Install Metal Roof Flashing,1
5026,13088,Forest Hills,3580,medium,222544.0,4701,4701 Frame Check,1
5027,13253,River Mill,2912,medium,692624.0,4701,4701 Frame Check,1
5028,13112,Marlin Chase,3171,medium,634940.0,4775,4775 Receive Hardwood Stairs,1
5029,13152,Marlin Chase,2710,medium,768496.0,4980,4980 Plumbing Rough,2
5030,13278,Mosaic,2320,medium,818814.0,5100,5100 HVAC Rough,3
5031,13144,Marlin Chase,3055,medium,740636.0,5180,5180 Electric Rough,4
5032,13253,River Mill,2912,medium,692624.0,5825,5825 Frame Punch,1
5033,13360,Peninsula Lakes,3496,medium,575090.0,5825,5825 Frame Punch,1
5034,13442,Walden,4633,medium,656370.0,5940,5940 Order Cabinets,1
5035,13465,Cardinal Grove,1764,medium,569722.0,5940,5940 Order Cabinets,1
5036,13442,Walden,4633,medium,656370.0,5941,5941 Order Cabinet Hardware,1
5037,13465,Cardinal Grove,1764,medium,569722.0,5941,5941 Order Cabinet Hardware,1
5038,13401,Welches Pond,2927,medium,731557.0,6180,6180 Install Insulation,2
5039,12832,Peninsula,4562,high,1090397.0,6180,6180 Install Insulation,2
5040,13140,Marlin Chase,2824,medium,766881.0,6300,6300 Energy Inspection,1
5041,13136,Marlin Chase,3170,medium,806102.0,6390,6390 Schedule Gas Meter,1
5042,13278,Mosaic,2320,medium,818814.0,6390,6390 Schedule Gas Meter,1
5043,13032,Welches Pond,2812,medium,643995.0,6620,6620 Receive Vinyl Siding,1
5044,13032,Welches Pond,2812,medium,643995.0,6700,6700 Receive Composite Ext Trim,1
5045,13032,Welches Pond,2812,medium,643995.0,6705,6705 Receive Trellis Material,1
5046,13032,Welches Pond,2812,medium,643995.0,6720,6720 Receive Siding Accents,1
5047,13032,Welches Pond,2812,medium,643995.0,6721,6721 Receive Brackets,1
5048,13032,Welches Pond,2812,medium,643995.0,6725,6725 Receive Shutters,1
5049,13032,Welches Pond,2812,medium,643995.0,6740,6740 Receive PVC Exterior Trim,1
5050,13032,Welches Pond,2812,medium,643995.0,6781,6781 Receive Column Wrap/Flower Bx/Pediment,1
5051,13032,Welches Pond,2812,medium,643995.0,6820,6820 Receive Deck Skirting,1
5052,13145,Marlin Chase,3204,medium,841553.0,6860,6860 Siding Installation,10
5053,13138,Marlin Chase,3171,medium,859133.0,7340,7340 Install Ceramic Tile,2
5054,13138,Marlin Chase,3171,medium,859133.0,7350,7350 Install Shower Tile,8
5055,13139,Marlin Chase,2554,medium,704067.0,7860,7860 Install Interior Trim,2
5056,13020,Peninsula Lakes,2100,low,578095.0,7860,7860 Install Interior Trim,2
5057,13139,Marlin Chase,2554,medium,704067.0,8020,8020 Receive Interior Railing,1
5058,13138,Marlin Chase,3171,medium,859133.0,8220,8220 Install Fireplace Surround/Mantel,1
5059,13440,Marlin Chase,3067,medium,714189.0,8460,8460 Install Countertops,1
5060,13423,Governors,2974,medium,884692.0,8500,8500 Order Appliance Pkg 1,1
5061,13136,Marlin Chase,3170,medium,806102.0,8579,8579 Template Shower Enclosure,1
5062,13113,Marlin Chase,2814,medium,750956.0,9140,9140 2nd Stage Air Seal,1
5063,13388,Marsh Island,5848,high,750956.0,9390,9390 Install Water Meter/Sewer Frame,42
5064,13423,Governors,2974,medium,884692.0,9750,9750 Order Appliance Pkg 2,1
5065,13423,Governors,2974,medium,884692.0,9860,9860 Final Utility Connection,0
5066,13388,Marsh Island,5848,high,750956.0,9900,9900 Water Lateral,30
5067,13388,Marsh Island,5848,high,750956.0,9905,9905 Sewer Lateral,6
5068,13090,Marsh Island,5603,high,1154185.0,10180,10180 Shrub Installation,1
5069,13101,Marlin Chase,2461,medium,682900.0,10300,10300 Install Driveway,10
5070,13423,Governors,2974,medium,884692.0,10300,10300.1 Driveway/Curb Repair Allowance,0
5071,13175,Peninsula Lakes,2245,low,567645.0,10940,10940 Framing Retainage,1
5072,13281,Marlin Chase,3558,medium,786910.0,0,00000 START,1
5073,13281,Marlin Chase,3558,medium,786910.0,1,1 START  CONSTRUCTION,1
5074,13281,Marlin Chase,3558,medium,786910.0,252,252 Site Plan,1
5075,13281,Marlin Chase,3558,medium,786910.0,260,260 Plan Review/Permit Allocation,0
5076,13281,Marlin Chase,3558,medium,786910.0,900,900 Bldg Stakeout,1
5077,13281,Marlin Chase,3558,medium,786910.0,901,901 Engineering Allocation,0
5078,13281,Marlin Chase,3558,medium,786910.0,980,980 Install Silt Fence,1
5079,13281,Marlin Chase,3558,medium,786910.0,1020,1020 Install Construction Entrance,1
5080,13281,Marlin Chase,3558,medium,786910.0,1060,1060 Foundation Excavation,1
5081,13423,Governors,2974,medium,884692.0,1060,1060 Foundation Excavation,1
5082,13281,Marlin Chase,3558,medium,786910.0,1780,1780 Order Steel,1
5083,13501,Hailey's Glen,2736,medium,694771.0,1900,1900 Strip Foundation Forms,1
5084,13476,Durham Farms,4277,medium,750956.0,1940,1940 Install Perimeter Drain/Croc,1
5085,13476,Durham Farms,4277,medium,750956.0,2060,2060 Waterproof Foundation Walls,1
5086,13281,Marlin Chase,3558,medium,786910.0,2230,2230 Receive Dumpster Allocation,1
5087,13281,Marlin Chase,3558,medium,786910.0,2240,2240 Receive Portable Toilet Allocation,1
5088,13397,Peninsula,5533,high,750956.0,2340,2340 Backfill & Compact,1
5089,13465,Cardinal Grove,1764,medium,569722.0,2344,2344 Meter Pit Install,1
5090,13471,Cardinal Grove,2233,medium,517387.0,2344,2344 Meter Pit Install,1
5091,13476,Durham Farms,4277,medium,750956.0,2344,2344 Meter Pit Install,1
5092,13507,Welches Pond,2852,medium,845914.0,2344,2344 Meter Pit Install,10
5093,13392,Marsh Island,2795,medium,771707.0,2380,2380 Pour Basement Slab,3
5094,13397,Peninsula,5533,high,750956.0,2382,2382 Slab Insulation,1
5095,13465,Cardinal Grove,1764,medium,569722.0,2460,2460 Receive Lumber Drop #1,1
5096,13465,Cardinal Grove,1764,medium,569722.0,2700,2700 Pour Garage Slab,1
5097,13471,Cardinal Grove,2233,medium,517387.0,2700,2700 Pour Garage Slab,1
5098,13507,Welches Pond,2852,medium,845914.0,2700,2700 Pour Garage Slab,7
5099,13476,Durham Farms,4277,medium,750956.0,2700,2700 Pour Garage Slab,1
5100,13397,Peninsula,5533,high,750956.0,3020,3020 Termite & Pest PreTreatment,1
5101,13465,Cardinal Grove,1764,medium,569722.0,3100,3100 Foundation Survey,1
5102,13507,Welches Pond,2852,medium,845914.0,3100,3100 Foundation Survey,4
5103,13394,Peninsula Lakes,2154,medium,474879.0,3380,3380 1st Floor Wall Framing,2
5104,13030,Peninsula,5546,high,1768191.0,3940,3940 3rd Floor Deck Framing,1
5105,13030,Peninsula,5546,high,1768191.0,3980,3980 3rd Floor Wall Framing,2
5106,13442,Walden,4633,medium,656370.0,4020,4020 Set Trusses,3
5107,13258,River Mill,3064,medium,670416.0,4020,4020 Set Trusses,4
5108,13392,Marsh Island,2795,medium,771707.0,4070,4070 Receive Exterior Deck Material,1
5109,13360,Peninsula Lakes,3496,medium,575090.0,4100,4100 Exterior Deck Framing,1
5110,13253,River Mill,2912,medium,692624.0,4100,4100 Exterior Deck Framing,1
5111,13442,Walden,4633,medium,656370.0,4230,4230 Receive Housewrap/Flashing,1
5112,13277,Mosaic,1704,medium,561869.0,4260,4260 Receive Windows,1
5113,13277,Mosaic,1704,medium,561869.0,4300,4300 Receive Window/Door Flashings,1
5114,13253,River Mill,2912,medium,692624.0,4300,4300 Receive Window/Door Flashings,1
5115,13253,River Mill,2912,medium,692624.0,4340,4340 Receive Exterior Doors,1
5116,13477,Cardinal Grove,2589,medium,750956.0,4340,4340 Receive Exterior Doors,1
5117,13277,Mosaic,1704,medium,561869.0,4340,4340 Receive Exterior Doors,1
5118,13477,Cardinal Grove,2589,medium,750956.0,4380,4380 Roof Sheathing,3
5119,13253,River Mill,2912,medium,692624.0,4390,4390 Receive Roofing Material,1
5120,13360,Peninsula Lakes,3496,medium,575090.0,4390,4390 Receive Roofing Material,1
5121,13477,Cardinal Grove,2589,medium,750956.0,4540,4540 Install Windows,1
5122,13088,Forest Hills,3580,medium,222544.0,4580,4580 Install Roofing,2
5123,13360,Peninsula Lakes,3496,medium,575090.0,4580,4580 Install Roofing,2
5124,13120,Marsh Island,4291,medium,851477.0,4585,4585 Install Membrane Roofing,1
5125,13477,Cardinal Grove,2589,medium,750956.0,4585,4585 Install Membrane Roofing,1
5126,13136,Marlin Chase,3170,medium,806102.0,4590,4590 Install Metal Roofing,1
5127,13035,Forest Hills,4024,medium,816522.0,4700,4700 Internal Framing Inspection,1
5128,13477,Cardinal Grove,2589,medium,750956.0,4701,4701 Frame Check,1
5129,13477,Cardinal Grove,2589,medium,750956.0,4775,4775 Receive Hardwood Stairs,5
5130,13360,Peninsula Lakes,3496,medium,575090.0,4775,4775 Receive Hardwood Stairs,1
5131,13253,River Mill,2912,medium,692624.0,4777,4777 Receive Box Stairs,1
5132,13120,Marsh Island,4291,medium,851477.0,4980,4980 Plumbing Rough,2
5133,13138,Marlin Chase,3171,medium,859133.0,4981,4981 Deliver Sinks,1
5134,13408,NewMarket,3940,medium,889253.0,5260,5260 Mechanical Rough Inspection,1
5135,13408,NewMarket,3940,medium,889253.0,5580,5580 Structured Wiring Rough,1
5136,13088,Forest Hills,3580,medium,222544.0,5825,5825 Frame Punch,1
5137,13175,Peninsula Lakes,2245,low,567645.0,6180,6180 Install Insulation,1
5138,13140,Marlin Chase,2824,medium,766881.0,6345,6345 Stock Drywall,1
5139,13032,Welches Pond,2812,medium,643995.0,6380,6380 Install Drywall,9
5140,13032,Welches Pond,2812,medium,643995.0,6860,6860 Siding Installation,9
5141,13139,Marlin Chase,2554,medium,704067.0,6884,6884 Measure Screen Porch Enclosure,1
5142,13101,Marlin Chase,2461,medium,682900.0,6885,6885 Install Screen Porch Enclosure,1
5143,13138,Marlin Chase,3171,medium,859133.0,7300,7300 Receive Interior Trim,1
5144,13138,Marlin Chase,3171,medium,859133.0,7304,7304 Receive Goodie Box,1
5145,13138,Marlin Chase,3171,medium,859133.0,7700,7700 Receive Interior Doors,1
5146,13138,Marlin Chase,3171,medium,859133.0,7862,7862 Receive Cabinet Hardware Allocation,1
5147,13138,Marlin Chase,3171,medium,859133.0,7866,7866 Receive Door Hardware,1
5148,13138,Marlin Chase,3171,medium,859133.0,7900,7900 Receive Cabinets Allocation,1
5149,13138,Marlin Chase,3171,medium,859133.0,7901,7901 Cabinet Delivery Charges,1
5150,13138,Marlin Chase,3171,medium,859133.0,7940,7940 Receive Vanity Tops,1
5151,13138,Marlin Chase,3171,medium,859133.0,8020,8020 Receive Interior Railing,1
5152,13138,Marlin Chase,3171,medium,859133.0,8260,8260 Install Interior Railing,1
5153,13139,Marlin Chase,2554,medium,704067.0,8300,8300 Install Cabinets,2
5154,13020,Peninsula Lakes,2100,low,578095.0,8300,8300 Install Cabinets,2
5155,13281,Marlin Chase,3558,medium,786910.0,8500,8500 Order Appliance Pkg 1,1
5156,13020,Peninsula Lakes,2100,low,578095.0,8579,8579 Template Shower Enclosure,1
5157,13120,Marsh Island,4291,medium,851477.0,8820,8820 Schedule Irrigation Well,1
5158,13145,Marlin Chase,3204,medium,841553.0,9140,9140 2nd Stage Air Seal,1
5159,13139,Marlin Chase,2554,medium,704067.0,9540,9540 Rec. GE Appliance Pkg1 Allocation,1
5160,13139,Marlin Chase,2554,medium,704067.0,9541,9541 Receive N/S Appliance Pkg 1,1
5161,13281,Marlin Chase,3558,medium,786910.0,9750,9750 Order Appliance Pkg 2,1
5162,13440,Marlin Chase,3067,medium,714189.0,9820,9820 Install Gutters,1
5163,13281,Marlin Chase,3558,medium,786910.0,10300,10300.1 Driveway/Curb Repair Allowance,0
5164,13092,Marlin Chase,2079,medium,433351.0,10301,10301 Driveway Apron,1
5165,13090,Marsh Island,5603,high,1154185.0,10660,10660 Quality Inspection,1
5166,13465,Cardinal Grove,1764,medium,569722.0,2,2 FRAMING START,1
5167,13471,Cardinal Grove,2233,medium,517387.0,2,2 FRAMING START,1
5168,13507,Welches Pond,2852,medium,845914.0,2,2 FRAMING START,1
5169,13477,Cardinal Grove,2589,medium,750956.0,140,140 Framing DRAW 2,1
5170,13442,Walden,4633,medium,656370.0,140,140 Framing DRAW 2,1
5171,13281,Marlin Chase,3558,medium,786910.0,1100,1100 Form Footings,1
5172,13423,Governors,2974,medium,884692.0,1100,1100 Form Footings,1
5173,13423,Governors,2974,medium,884692.0,1140,1140 Footing Inspection,1
5174,13281,Marlin Chase,3558,medium,786910.0,1140,1140 Footing Inspection,1
5175,13281,Marlin Chase,3558,medium,786910.0,1180,1180 Pour Footings,1
5176,13423,Governors,2974,medium,884692.0,1180,1180 Pour Footings,1
5177,13423,Governors,2974,medium,884692.0,1580,1580 Form Foundation Walls,1
5178,13423,Governors,2974,medium,884692.0,1820,1820 Foundation Wall Inspection,1
5179,13423,Governors,2974,medium,884692.0,1900,1900 Strip Foundation Forms,1
5180,13501,Hailey's Glen,2736,medium,694771.0,1940,1940 Install Perimeter Drain/Croc,1
5181,13501,Hailey's Glen,2736,medium,694771.0,2060,2060 Waterproof Foundation Walls,1
5182,13091,Marlin Chase,2591,medium,562928.0,2344,2344 Meter Pit Install,1
5183,13392,Marsh Island,2795,medium,771707.0,2344,2344 Meter Pit Install,9
5184,13465,Cardinal Grove,1764,medium,569722.0,2440,2440 Receive Steel,1
5185,13471,Cardinal Grove,2233,medium,517387.0,2440,2440 Receive Steel,1
5186,13507,Welches Pond,2852,medium,845914.0,2440,2440 Receive Steel,1
5187,13507,Welches Pond,2852,medium,845914.0,2460,2460 Receive Lumber Drop #1,1
5188,13476,Durham Farms,4277,medium,750956.0,2460,2460 Receive Lumber Drop #1,1
5189,13471,Cardinal Grove,2233,medium,517387.0,2460,2460 Receive Lumber Drop #1,1
5190,13465,Cardinal Grove,1764,medium,569722.0,2540,2540 Receive 1st Floor Joists,1
5191,13471,Cardinal Grove,2233,medium,517387.0,2540,2540 Receive 1st Floor Joists,1
5192,13507,Welches Pond,2852,medium,845914.0,2540,2540 Receive 1st Floor Joists,1
5193,13476,Durham Farms,4277,medium,750956.0,2540,2540 Receive 1st Floor Joists,1
5194,13397,Peninsula,5533,high,750956.0,3100,3100 Foundation Survey,1
5195,13140,Marlin Chase,2824,medium,766881.0,3140,3140 Pour Porch Slab,1
5196,13507,Welches Pond,2852,medium,845914.0,3540,3540 Receive Lumber Drop #2,1
5197,13476,Durham Farms,4277,medium,750956.0,3540,3540 Receive Lumber Drop #2,1
5198,13465,Cardinal Grove,1764,medium,569722.0,3540,3540 Receive Lumber Drop #2,1
5199,13471,Cardinal Grove,2233,medium,517387.0,3540,3540 Receive Lumber Drop #2,1
5200,13471,Cardinal Grove,2233,medium,517387.0,3740,3740 Receive 2nd Floor Joists,1
5201,13476,Durham Farms,4277,medium,750956.0,3740,3740 Receive 2nd Floor Joists,1
5202,13507,Welches Pond,2852,medium,845914.0,3740,3740 Receive 2nd Floor Joists,1
5203,13507,Welches Pond,2852,medium,845914.0,3900,3900 Receive Lumber Drop #3,1
5204,13476,Durham Farms,4277,medium,750956.0,3900,3900 Receive Lumber Drop #3,1
5205,13465,Cardinal Grove,1764,medium,569722.0,3900,3900 Receive Lumber Drop #3,1
5206,13471,Cardinal Grove,2233,medium,517387.0,3900,3900 Receive Lumber Drop #3,1
5207,13091,Marlin Chase,2591,medium,562928.0,4020,4020 Set Trusses,2
5208,13277,Mosaic,1704,medium,561869.0,4100,4100 Exterior Deck Framing,1
5209,13152,Marlin Chase,2710,medium,768496.0,4340,4340 Receive Exterior Doors,1
5210,13339,Peninsula,5583,high,750956.0,4380,4380 Roof Sheathing,3
5211,13277,Mosaic,1704,medium,561869.0,4390,4390 Receive Roofing Material,1
5212,13277,Mosaic,1704,medium,561869.0,4540,4540 Install Windows,1
5213,13253,River Mill,2912,medium,692624.0,4580,4580 Install Roofing,3
5214,13477,Cardinal Grove,2589,medium,750956.0,4582,4582 Install Temp Poly,0
5215,13088,Forest Hills,3580,medium,222544.0,4582,4582 Install Temp Poly,1
5216,13360,Peninsula Lakes,3496,medium,575090.0,4582,4582 Install Temp Poly,1
5217,13477,Cardinal Grove,2589,medium,750956.0,4591,4591 Install Metal Roof Flashing,1
5218,13277,Mosaic,1704,medium,561869.0,4701,4701 Frame Check,1
5219,13088,Forest Hills,3580,medium,222544.0,4775,4775 Receive Hardwood Stairs,1
5220,13408,NewMarket,3940,medium,889253.0,5300,5300 Municipal Electric Inspection,1
5221,13388,Marsh Island,5848,high,750956.0,5740,5740 Install Gas Lines,1
5222,13477,Cardinal Grove,2589,medium,750956.0,5825,5825 Frame Punch,1
5223,13408,NewMarket,3940,medium,889253.0,5900,5900 Air Seal,1
5224,13401,Welches Pond,2927,medium,731557.0,6300,6300 Energy Inspection,1
5225,12832,Peninsula,4562,high,1090397.0,6300,6300 Energy Inspection,1
5226,12832,Peninsula,4562,high,1090397.0,6345,6345 Stock Drywall,1
5227,13175,Peninsula Lakes,2245,low,567645.0,6345,6345 Stock Drywall,1
5228,13401,Welches Pond,2927,medium,731557.0,6345,6345 Stock Drywall,1
5229,13140,Marlin Chase,2824,medium,766881.0,6380,6380 Install Drywall,9
5230,13140,Marlin Chase,2824,medium,766881.0,6620,6620 Receive Vinyl Siding,1
5231,13140,Marlin Chase,2824,medium,766881.0,6700,6700 Receive Composite Ext Trim,1
5232,13140,Marlin Chase,2824,medium,766881.0,6720,6720 Receive Siding Accents,1
5233,13140,Marlin Chase,2824,medium,766881.0,6740,6740 Receive PVC Exterior Trim,1
5234,13140,Marlin Chase,2824,medium,766881.0,6781,6781 Receive Column Wrap/Flower Bx/Pediment,1
5235,13140,Marlin Chase,2824,medium,766881.0,6820,6820 Receive Deck Skirting,1
5236,13138,Marlin Chase,3171,medium,859133.0,7860,7860 Install Interior Trim,3
5237,13020,Peninsula Lakes,2100,low,578095.0,8220,8220 Install Fireplace Surround/Mantel,1
5238,13101,Marlin Chase,2461,medium,682900.0,8920,8920 Install Water Heater/1st Trim,1
5239,12993,Peninsula,5996,high,750956.0,9140,9140 2nd Stage Air Seal,1
5240,13092,Marlin Chase,2079,medium,433351.0,10300,10300 Install Driveway,1
5241,13139,Marlin Chase,2554,medium,704067.0,10460,10460 Drywall Touch Up,2
5242,13020,Peninsula Lakes,2100,low,578095.0,10460,10460 Drywall Touch Up,2
5243,13240,Peninsula Lakes,1984,low,616419.0,10820,10820 Settlement,1
5244,13240,Peninsula Lakes,1984,low,616419.0,10888,10888 Release All Retainage,1
5245,13240,Peninsula Lakes,1984,low,616419.0,11585,11585 Exterior Paint Retainage,1
5246,13240,Peninsula Lakes,1984,low,616419.0,11980,11980 Sod Retainage,1
5247,13240,Peninsula Lakes,1984,low,616419.0,12060,12060 Irrigation Retainage,1
5248,13240,Peninsula Lakes,1984,low,616419.0,12100,12100 Shrub Retainage,1
5249,13240,Peninsula Lakes,1984,low,616419.0,12180,12180 Driveway Retainage,1
5250,13240,Peninsula Lakes,1984,low,616419.0,12180,12180.1 Driveway Top Coat Allocation,0
5251,13394,Peninsula Lakes,2154,medium,474879.0,2,2 FRAMING START,1
5252,13349,Peninsula Lakes,2188,medium,442826.0,2,2 FRAMING START,1
5253,13477,Cardinal Grove,2589,medium,750956.0,3,3 TRADES START,1
5254,13360,Peninsula Lakes,3496,medium,575090.0,3,3 TRADES START,1
5255,13277,Mosaic,1704,medium,561869.0,140,140 Framing DRAW 2,1
5256,13423,Governors,2974,medium,884692.0,1190,1190 Capillary Break,1
5257,13281,Marlin Chase,3558,medium,786910.0,1190,1190 Capillary Break,1
5258,13281,Marlin Chase,3558,medium,786910.0,1195,1195 Pin Footings,1
5259,13423,Governors,2974,medium,884692.0,1195,1195 Pin Footings,1
5260,13423,Governors,2974,medium,884692.0,1860,1860 Foundation Wall Pour,1
5261,13423,Governors,2974,medium,884692.0,1940,1940 Install Perimeter Drain/Croc,1
5262,13397,Peninsula,5533,high,750956.0,2020,2020 Install Underground Plumbing,1
5263,13423,Governors,2974,medium,884692.0,2060,2060 Waterproof Foundation Walls,1
5264,13501,Hailey's Glen,2736,medium,694771.0,3020,3020 Termite & Pest PreTreatment,1
5265,13501,Hailey's Glen,2736,medium,694771.0,3060,3060 Foundation Insulation-Crawl,1
5266,13401,Welches Pond,2927,medium,731557.0,3140,3140 Pour Porch Slab,1
5267,13507,Welches Pond,2852,medium,845914.0,3300,3300 1st Floor Deck Framing,1
5268,13465,Cardinal Grove,1764,medium,569722.0,3300,3300 1st Floor Deck Framing,1
5269,13471,Cardinal Grove,2233,medium,517387.0,3300,3300 1st Floor Deck Framing,1
5270,13030,Peninsula,5546,high,1768191.0,4020,4020 Set Trusses,3
5271,13465,Cardinal Grove,1764,medium,569722.0,4070,4070 Receive Exterior Deck Material,1
5272,13471,Cardinal Grove,2233,medium,517387.0,4070,4070 Receive Exterior Deck Material,1
5273,13507,Welches Pond,2852,medium,845914.0,4070,4070 Receive Exterior Deck Material,1
5274,13477,Cardinal Grove,2589,medium,750956.0,4071,4071 Receive Exterior Decking,1
5275,13112,Marlin Chase,3171,medium,634940.0,4100,4100 Exterior Deck Framing,1
5276,13120,Marsh Island,4291,medium,851477.0,4260,4260 Receive Windows,1
5277,13088,Forest Hills,3580,medium,222544.0,4300,4300 Receive Window/Door Flashings,1
5278,13112,Marlin Chase,3171,medium,634940.0,4390,4390 Receive Roofing Material,1
5279,13339,Peninsula,5583,high,750956.0,4460,4460 Schedule Gas Lateral Contractor,1
5280,13139,Marlin Chase,2554,medium,704067.0,4461,4461 Install Gas Lateral,1
5281,13120,Marsh Island,4291,medium,851477.0,4540,4540 Install Windows,1
5282,13088,Forest Hills,3580,medium,222544.0,4540,4540 Install Windows,3
5283,13277,Mosaic,1704,medium,561869.0,4580,4580 Install Roofing,2
5284,12920,Peninsula,4116,high,1454538.0,4700,4700 Internal Framing Inspection,1
5285,13408,NewMarket,3940,medium,889253.0,4700,4700 Internal Framing Inspection,1
5286,13278,Mosaic,2320,medium,818814.0,4940,4940 Install Fireplace,1
5287,13278,Mosaic,2320,medium,818814.0,4980,4980 Plumbing Rough,5
5288,13477,Cardinal Grove,2589,medium,750956.0,5100,5100 HVAC Rough,4
5289,13477,Cardinal Grove,2589,medium,750956.0,5120,5120 HVAC Set Furnace,1
5290,13278,Mosaic,2320,medium,818814.0,5120,5120 HVAC Set Furnace,1
5291,13360,Peninsula Lakes,3496,medium,575090.0,5120,5120 HVAC Set Furnace,1
5292,13144,Marlin Chase,3055,medium,740636.0,5580,5580 Structured Wiring Rough,1
5293,13152,Marlin Chase,2710,medium,768496.0,5740,5740 Install Gas Lines,1
5294,13120,Marsh Island,4291,medium,851477.0,5740,5740 Install Gas Lines,1
5295,13277,Mosaic,1704,medium,561869.0,5825,5825 Frame Punch,1
5296,13392,Marsh Island,2795,medium,771707.0,5940,5940 Order Cabinets,1
5297,13471,Cardinal Grove,2233,medium,517387.0,5940,5940 Order Cabinets,1
5298,13471,Cardinal Grove,2233,medium,517387.0,5941,5941 Order Cabinet Hardware,1
5299,13392,Marsh Island,2795,medium,771707.0,5941,5941 Order Cabinet Hardware,1
5300,13175,Peninsula Lakes,2245,low,567645.0,6300,6300 Energy Inspection,1
5301,13401,Welches Pond,2927,medium,731557.0,6380,6380 Install Drywall,12
5302,12832,Peninsula,4562,high,1090397.0,6380,6380 Install Drywall,12
5303,13088,Forest Hills,3580,medium,222544.0,6390,6390 Schedule Gas Meter,1
5304,12832,Peninsula,4562,high,1090397.0,6620,6620 Receive Vinyl Siding,1
5305,13401,Welches Pond,2927,medium,731557.0,6620,6620 Receive Vinyl Siding,1
5306,12832,Peninsula,4562,high,1090397.0,6660,6660 Receive Fiber Cement Siding,1
5307,12832,Peninsula,4562,high,1090397.0,6700,6700 Receive Composite Ext Trim,1
5308,13401,Welches Pond,2927,medium,731557.0,6700,6700 Receive Composite Ext Trim,1
5309,13401,Welches Pond,2927,medium,731557.0,6705,6705 Receive Trellis Material,1
5310,13401,Welches Pond,2927,medium,731557.0,6720,6720 Receive Siding Accents,1
5311,12832,Peninsula,4562,high,1090397.0,6720,6720 Receive Siding Accents,1
5312,13401,Welches Pond,2927,medium,731557.0,6721,6721 Receive Brackets,1
5313,13401,Welches Pond,2927,medium,731557.0,6725,6725 Receive Shutters,1
5314,13401,Welches Pond,2927,medium,731557.0,6740,6740 Receive PVC Exterior Trim,1
5315,12832,Peninsula,4562,high,1090397.0,6740,6740 Receive PVC Exterior Trim,1
5316,12832,Peninsula,4562,high,1090397.0,6781,6781 Receive Column Wrap/Flower Bx/Pediment,1
5317,13401,Welches Pond,2927,medium,731557.0,6781,6781 Receive Column Wrap/Flower Bx/Pediment,1
5318,13020,Peninsula Lakes,2100,low,578095.0,8380,8380 Template Countertops,1
5319,13092,Marlin Chase,2079,medium,433351.0,8465,8465 Install Tiled Backsplash,1
5320,13440,Marlin Chase,3067,medium,714189.0,8465,8465 Install Tiled Backsplash,1
5321,13101,Marlin Chase,2461,medium,682900.0,8579,8579 Template Shower Enclosure,1
5322,13137,Marlin Chase,2330,medium,637264.0,9140,9140 2nd Stage Air Seal,1
5323,12993,Peninsula,5996,high,750956.0,9460,9460 Attic Insulation,1
5324,13020,Peninsula Lakes,2100,low,578095.0,9540,9540 Rec. GE Appliance Pkg1 Allocation,1
5325,13440,Marlin Chase,3067,medium,714189.0,10345,10345 Pour Concrete Steps,1
5326,13401,Welches Pond,2927,medium,731557.0,10345,10345 Pour Concrete Steps,1
5327,12850,Peninsula,5715,high,750956.0,10780,10780 Customer Walk,1
5328,13240,Peninsula Lakes,1984,low,616419.0,99999,99999 HOME COMPLETE,1
5329,13476,Durham Farms,4277,medium,750956.0,2,2 FRAMING START,1
5330,13392,Marsh Island,2795,medium,771707.0,2,2 FRAMING START,1
5331,13277,Mosaic,1704,medium,561869.0,3,3 TRADES START,1
5332,13253,River Mill,2912,medium,692624.0,3,3 TRADES START,1
5333,13088,Forest Hills,3580,medium,222544.0,3,3 TRADES START,1
5334,13281,Marlin Chase,3558,medium,786910.0,1580,1580 Form Foundation Walls,1
5335,13281,Marlin Chase,3558,medium,786910.0,1820,1820 Foundation Wall Inspection,1
5336,13281,Marlin Chase,3558,medium,786910.0,1860,1860 Foundation Wall Pour,1
5337,13281,Marlin Chase,3558,medium,786910.0,1900,1900 Strip Foundation Forms,1
5338,13397,Peninsula,5533,high,750956.0,1980,1980 Install Underground Electric,1
5339,13423,Governors,2974,medium,884692.0,3020,3020 Termite & Pest PreTreatment,1
5340,13423,Governors,2974,medium,884692.0,3060,3060 Foundation Insulation-Crawl,1
5341,13507,Welches Pond,2852,medium,845914.0,3380,3380 1st Floor Wall Framing,2
5342,13349,Peninsula Lakes,2188,medium,442826.0,3380,3380 1st Floor Wall Framing,2
5343,13465,Cardinal Grove,1764,medium,569722.0,3380,3380 1st Floor Wall Framing,1
5344,13471,Cardinal Grove,2233,medium,517387.0,3380,3380 1st Floor Wall Framing,1
5345,13465,Cardinal Grove,1764,medium,569722.0,3700,3700 Receive Trusses,1
5346,13471,Cardinal Grove,2233,medium,517387.0,3700,3700 Receive Trusses,1
5347,13507,Welches Pond,2852,medium,845914.0,3700,3700 Receive Trusses,1
5348,13477,Cardinal Grove,2589,medium,750956.0,4100,4100 Exterior Deck Framing,1
5349,13112,Marlin Chase,3171,medium,634940.0,4260,4260 Receive Windows,1
5350,13112,Marlin Chase,3171,medium,634940.0,4300,4300 Receive Window/Door Flashings,1
5351,13477,Cardinal Grove,2589,medium,750956.0,4300,4300 Receive Window/Door Flashings,1
5352,13112,Marlin Chase,3171,medium,634940.0,4340,4340 Receive Exterior Doors,1
5353,13091,Marlin Chase,2591,medium,562928.0,4380,4380 Roof Sheathing,2
5354,13442,Walden,4633,medium,656370.0,4380,4380 Roof Sheathing,3
5355,13477,Cardinal Grove,2589,medium,750956.0,4390,4390 Receive Roofing Material,1
5356,13465,Cardinal Grove,1764,medium,569722.0,4460,4460 Schedule Gas Lateral Contractor,1
5357,13471,Cardinal Grove,2233,medium,517387.0,4460,4460 Schedule Gas Lateral Contractor,1
5358,13507,Welches Pond,2852,medium,845914.0,4460,4460 Schedule Gas Lateral Contractor,1
5359,13349,Peninsula Lakes,2188,medium,442826.0,4460,4460 Schedule Gas Lateral Contractor,1
5360,13112,Marlin Chase,3171,medium,634940.0,4580,4580 Install Roofing,2
5361,13120,Marsh Island,4291,medium,851477.0,4940,4940 Install Fireplace,1
5362,13360,Peninsula Lakes,3496,medium,575090.0,4980,4980 Plumbing Rough,1
5363,13360,Peninsula Lakes,3496,medium,575090.0,5100,5100 HVAC Rough,1
5364,13088,Forest Hills,3580,medium,222544.0,5100,5100 HVAC Rough,3
5365,13277,Mosaic,1704,medium,561869.0,5100,5100 HVAC Rough,3
5366,13277,Mosaic,1704,medium,561869.0,5120,5120 HVAC Set Furnace,1
5367,13088,Forest Hills,3580,medium,222544.0,5120,5120 HVAC Set Furnace,4
5368,13035,Forest Hills,4024,medium,816522.0,5177,5177 Electric Meter Connection,1
5369,13152,Marlin Chase,2710,medium,768496.0,5180,5180 Electric Rough,3
5370,13144,Marlin Chase,3055,medium,740636.0,5260,5260 Mechanical Rough Inspection,1
5371,12920,Peninsula,4116,high,1454538.0,5260,5260 Mechanical Rough Inspection,1
5372,12920,Peninsula,4116,high,1454538.0,5300,5300 Municipal Electric Inspection,1
5373,13144,Marlin Chase,3055,medium,740636.0,5300,5300 Municipal Electric Inspection,1
5374,13120,Marsh Island,4291,medium,851477.0,5860,5860 Frame Stage Tour,1
5375,12920,Peninsula,4116,high,1454538.0,5900,5900 Air Seal,1
5376,13144,Marlin Chase,3055,medium,740636.0,5900,5900 Air Seal,1
5377,13507,Welches Pond,2852,medium,845914.0,5940,5940 Order Cabinets,1
5378,13258,River Mill,3064,medium,670416.0,5940,5940 Order Cabinets,1
5379,13258,River Mill,3064,medium,670416.0,5941,5941 Order Cabinet Hardware,1
5380,13175,Peninsula Lakes,2245,low,567645.0,6380,6380 Install Drywall,10
5381,13175,Peninsula Lakes,2245,low,567645.0,6781,6781 Receive Column Wrap/Flower Bx/Pediment,1
5382,13175,Peninsula Lakes,2245,low,567645.0,6860,6860 Siding Installation,2
5383,13401,Welches Pond,2927,medium,731557.0,6860,6860 Siding Installation,5
5384,12832,Peninsula,4562,high,1090397.0,6860,6860 Siding Installation,30
5385,13020,Peninsula Lakes,2100,low,578095.0,7140,7140 Exterior Painting,1
5386,12993,Peninsula,5996,high,750956.0,7304,7304 Receive Goodie Box,1
5387,13092,Marlin Chase,2079,medium,433351.0,7861,7861 Interior Trim Punch,1
5388,12993,Peninsula,5996,high,750956.0,7866,7866 Receive Door Hardware,1
5389,12993,Peninsula,5996,high,750956.0,7901,7901 Cabinet Delivery Charges,1
5390,13138,Marlin Chase,3171,medium,859133.0,8300,8300 Install Cabinets,2
5391,13139,Marlin Chase,2554,medium,704067.0,8380,8380 Template Countertops,1
5392,13145,Marlin Chase,3204,medium,841553.0,8420,8420 1st Paint,1
5393,13136,Marlin Chase,3170,medium,806102.0,8460,8460 Install Countertops,1
5394,13360,Peninsula Lakes,3496,medium,575090.0,8820,8820 Schedule Irrigation Well,1
5395,13120,Marsh Island,4291,medium,851477.0,9390,9390 Install Water Meter/Sewer Frame,1
5396,13139,Marlin Chase,2554,medium,704067.0,9460,9460 Attic Insulation,1
5397,13136,Marlin Chase,3170,medium,806102.0,9540,9540 Rec. GE Appliance Pkg1 Allocation,1
5398,13120,Marsh Island,4291,medium,851477.0,9900,9900 Water Lateral,1
5399,13278,Mosaic,2320,medium,818814.0,9900,9900 Water Lateral,1
5400,13278,Mosaic,2320,medium,818814.0,9905,9905 Sewer Lateral,1
5401,13120,Marsh Island,4291,medium,851477.0,9905,9905 Sewer Lateral,1
5402,13440,Marlin Chase,3067,medium,714189.0,10340,10340 Install Leadwalk & Comm. Sidewalk,1
5403,13020,Peninsula Lakes,2100,low,578095.0,10345,10345 Pour Concrete Steps,1
5404,13020,Peninsula Lakes,2100,low,578095.0,10500,10500 Paint 2,3
5405,13139,Marlin Chase,2554,medium,704067.0,10500,10500 Paint 2,4
5406,12673,Peninsula,5996,high,750956.0,10820,10820 Settlement,1
5407,12673,Peninsula,5996,high,750956.0,10888,10888 Release All Retainage,1
5408,12920,Peninsula,4116,high,1454538.0,10940,10940 Framing Retainage,1
5409,12673,Peninsula,5996,high,750956.0,11585,11585 Exterior Paint Retainage,1
5410,12673,Peninsula,5996,high,750956.0,12180,12180 Driveway Retainage,1
5411,12673,Peninsula,5996,high,750956.0,12180,12180.1 Driveway Top Coat Allocation,0
5412,13020,Peninsula Lakes,2100,low,578095.0,0,vancheck Check Vanity Tops/Windows for Damage,1
5413,13468,Governors,2977,medium,869889.0,0,00000 START,1
5414,13485,Peninsula,4241,medium,706147.0,0,00000 START,1
5415,13485,Peninsula,4241,medium,706147.0,1,1 START  CONSTRUCTION,1
5416,13468,Governors,2977,medium,869889.0,1,1 START  CONSTRUCTION,1
5417,13465,Cardinal Grove,1764,medium,569722.0,100,100 Framing DRAW 1,1
5418,13485,Peninsula,4241,medium,706147.0,252,252 Site Plan,1
5419,13468,Governors,2977,medium,869889.0,252,252 Site Plan,1
5420,13468,Governors,2977,medium,869889.0,260,260 Plan Review/Permit Allocation,0
5421,13485,Peninsula,4241,medium,706147.0,260,260 Plan Review/Permit Allocation,0
5422,13485,Peninsula,4241,medium,706147.0,900,900 Bldg Stakeout,1
5423,13468,Governors,2977,medium,869889.0,900,900 Bldg Stakeout,1
5424,13468,Governors,2977,medium,869889.0,901,901 Engineering Allocation,0
5425,13485,Peninsula,4241,medium,706147.0,901,901 Engineering Allocation,0
5426,13485,Peninsula,4241,medium,706147.0,980,980 Install Silt Fence,1
5427,13468,Governors,2977,medium,869889.0,980,980 Install Silt Fence,1
5428,13468,Governors,2977,medium,869889.0,1020,1020 Install Construction Entrance,1
5429,13485,Peninsula,4241,medium,706147.0,1020,1020 Install Construction Entrance,1
5430,13485,Peninsula,4241,medium,706147.0,1060,1060 Foundation Excavation,1
5431,13485,Peninsula,4241,medium,706147.0,1780,1780 Order Steel,1
5432,13468,Governors,2977,medium,869889.0,1780,1780 Order Steel,1
5433,13281,Marlin Chase,3558,medium,786910.0,1940,1940 Install Perimeter Drain/Croc,1
5434,13281,Marlin Chase,3558,medium,786910.0,2060,2060 Waterproof Foundation Walls,1
5435,13485,Peninsula,4241,medium,706147.0,2230,2230 Receive Dumpster Allocation,1
5436,13468,Governors,2977,medium,869889.0,2230,2230 Receive Dumpster Allocation,1
5437,13468,Governors,2977,medium,869889.0,2240,2240 Receive Portable Toilet Allocation,1
5438,13485,Peninsula,4241,medium,706147.0,2240,2240 Receive Portable Toilet Allocation,1
5439,13501,Hailey's Glen,2736,medium,694771.0,2260,2260 Crawl Stone/Sand,1
5440,13501,Hailey's Glen,2736,medium,694771.0,2340,2340 Backfill & Compact,1
5441,13392,Marsh Island,2795,medium,771707.0,2700,2700 Pour Garage Slab,1
5442,13035,Forest Hills,4024,medium,816522.0,3140,3140 Pour Porch Slab,1
5443,13392,Marsh Island,2795,medium,771707.0,3300,3300 1st Floor Deck Framing,1
5444,13471,Cardinal Grove,2233,medium,517387.0,3780,3780 2nd Floor Deck Framing,1
5445,13465,Cardinal Grove,1764,medium,569722.0,4020,4020 Set Trusses,2
5446,13112,Marlin Chase,3171,medium,634940.0,4071,4071 Receive Exterior Decking,1
5447,13360,Peninsula Lakes,3496,medium,575090.0,4071,4071 Receive Exterior Decking,1
5448,13035,Forest Hills,4024,medium,816522.0,4071,4071 Receive Exterior Decking,1
5449,13339,Peninsula,5583,high,750956.0,4100,4100 Exterior Deck Framing,1
5450,13392,Marsh Island,2795,medium,771707.0,4230,4230 Receive Housewrap/Flashing,1
5451,13476,Durham Farms,4277,medium,750956.0,4230,4230 Receive Housewrap/Flashing,4
5452,13465,Cardinal Grove,1764,medium,569722.0,4230,4230 Receive Housewrap/Flashing,1
5453,13442,Walden,4633,medium,656370.0,4260,4260 Receive Windows,1
5454,13360,Peninsula Lakes,3496,medium,575090.0,4260,4260 Receive Windows,1
5455,13360,Peninsula Lakes,3496,medium,575090.0,4300,4300 Receive Window/Door Flashings,1
5456,13442,Walden,4633,medium,656370.0,4300,4300 Receive Window/Door Flashings,1
5457,13442,Walden,4633,medium,656370.0,4340,4340 Receive Exterior Doors,5
5458,13258,River Mill,3064,medium,670416.0,4380,4380 Roof Sheathing,3
5459,13442,Walden,4633,medium,656370.0,4390,4390 Receive Roofing Material,1
5460,13339,Peninsula,5583,high,750956.0,4390,4390 Receive Roofing Material,1
5461,13394,Peninsula Lakes,2154,medium,474879.0,4460,4460 Schedule Gas Lateral Contractor,1
5462,13112,Marlin Chase,3171,medium,634940.0,4461,4461 Install Gas Lateral,1
5463,13112,Marlin Chase,3171,medium,634940.0,4540,4540 Install Windows,1
5464,13138,Marlin Chase,3171,medium,859133.0,4542,4542 Measure/Order Window Coverings,1
5465,13253,River Mill,2912,medium,692624.0,4582,4582 Install Temp Poly,1
5466,13112,Marlin Chase,3171,medium,634940.0,4582,4582 Install Temp Poly,1
5467,13253,River Mill,2912,medium,692624.0,4591,4591 Install Metal Roof Flashing,1
5468,13277,Mosaic,1704,medium,561869.0,4591,4591 Install Metal Roof Flashing,1
5469,13360,Peninsula Lakes,3496,medium,575090.0,4591,4591 Install Metal Roof Flashing,1
5470,13030,Peninsula,5546,high,1768191.0,4660,4660 Schedule Elevator Rough,1
5471,13144,Marlin Chase,3055,medium,740636.0,4700,4700 Internal Framing Inspection,1
5472,13112,Marlin Chase,3171,medium,634940.0,4701,4701 Frame Check,1
5473,13442,Walden,4633,medium,656370.0,4777,4777 Receive Box Stairs,3
5474,13477,Cardinal Grove,2589,medium,750956.0,4940,4940 Install Fireplace,1
5475,13152,Marlin Chase,2710,medium,768496.0,4940,4940 Install Fireplace,1
5476,13388,Marsh Island,5848,high,750956.0,5180,5180 Electric Rough,4
5477,13120,Marsh Island,4291,medium,851477.0,5180,5180 Electric Rough,3
5478,13360,Peninsula Lakes,3496,medium,575090.0,5740,5740 Install Gas Lines,1
5479,13476,Durham Farms,4277,medium,750956.0,5940,5940 Order Cabinets,5
5480,13030,Peninsula,5546,high,1768191.0,5940,5940 Order Cabinets,1
5481,13030,Peninsula,5546,high,1768191.0,5941,5941 Order Cabinet Hardware,1
5482,13476,Durham Farms,4277,medium,750956.0,5941,5941 Order Cabinet Hardware,3
5483,13092,Marlin Chase,2079,medium,433351.0,6340,6340 Install Overhead Door,1
5484,13277,Mosaic,1704,medium,561869.0,6390,6390 Schedule Gas Meter,1
5485,12993,Peninsula,5996,high,750956.0,6391,6391 Install Gas Meter,1
5486,12920,Peninsula,4116,high,1454538.0,6391,6391 Install Gas Meter,1
5487,13113,Marlin Chase,2814,medium,750956.0,6860,6860 Siding Installation,8
5488,12993,Peninsula,5996,high,750956.0,7220,7220 Install Deck Skirting/Flower Boxes,1
5489,13145,Marlin Chase,3204,medium,841553.0,7340,7340 Install Ceramic Tile,2
5490,13145,Marlin Chase,3204,medium,841553.0,7350,7350 Install Shower Tile,9
5491,13145,Marlin Chase,3204,medium,841553.0,8020,8020 Receive Interior Railing,1
5492,12993,Peninsula,5996,high,750956.0,8420,8420 1st Paint,1
5493,13113,Marlin Chase,2814,medium,750956.0,8420,8420 1st Paint,1
5494,13485,Peninsula,4241,medium,706147.0,8500,8500 Order Appliance Pkg 1,1
5495,13468,Governors,2977,medium,869889.0,8500,8500 Order Appliance Pkg 1,1
5496,13139,Marlin Chase,2554,medium,704067.0,8579,8579 Template Shower Enclosure,1
5497,13138,Marlin Chase,3171,medium,859133.0,9460,9460 Attic Insulation,1
5498,13468,Governors,2977,medium,869889.0,9750,9750 Order Appliance Pkg 2,1
5499,13485,Peninsula,4241,medium,706147.0,9750,9750 Order Appliance Pkg 2,1
5500,12850,Peninsula,5715,high,750956.0,9756,9756 Receive N/S Appliance Pkg 2,1
5501,13485,Peninsula,4241,medium,706147.0,9860,9860 Final Utility Connection,0
5502,13468,Governors,2977,medium,869889.0,9860,9860 Final Utility Connection,0
5503,13120,Marsh Island,4291,medium,851477.0,9910,9910 Utility Grade,1
5504,13468,Governors,2977,medium,869889.0,10300,10300.1 Driveway/Curb Repair Allowance,0
5505,13485,Peninsula,4241,medium,706147.0,10300,10300.1 Driveway/Curb Repair Allowance,0
5506,13136,Marlin Chase,3170,medium,806102.0,10301,10301 Driveway Apron,1
5507,13101,Marlin Chase,2461,medium,682900.0,10345,10345 Pour Concrete Steps,1
5508,13035,Forest Hills,4024,medium,816522.0,10345,10345 Pour Concrete Steps,1
5509,13138,Marlin Chase,3171,medium,859133.0,10460,10460 Drywall Touch Up,2
5510,12673,Peninsula,5996,high,750956.0,99999,99999 HOME COMPLETE,1
5511,13496,Hailey's Glen,3443,medium,316917.0,0,00000 START,1
5512,13496,Hailey's Glen,3443,medium,316917.0,1,1 START  CONSTRUCTION,1
5513,13112,Marlin Chase,3171,medium,634940.0,3,3 TRADES START,1
5514,13471,Cardinal Grove,2233,medium,517387.0,100,100 Framing DRAW 1,1
5515,13088,Forest Hills,3580,medium,222544.0,140,140 Framing DRAW 2,1
5516,13112,Marlin Chase,3171,medium,634940.0,140,140 Framing DRAW 2,1
5517,13496,Hailey's Glen,3443,medium,316917.0,252,252 Site Plan,1
5518,13496,Hailey's Glen,3443,medium,316917.0,260,260 Plan Review/Permit Allocation,0
5519,13496,Hailey's Glen,3443,medium,316917.0,900,900 Bldg Stakeout,1
5520,13496,Hailey's Glen,3443,medium,316917.0,901,901 Engineering Allocation,0
5521,13496,Hailey's Glen,3443,medium,316917.0,980,980 Install Silt Fence,1
5522,13496,Hailey's Glen,3443,medium,316917.0,1020,1020 Install Construction Entrance,1
5523,13468,Governors,2977,medium,869889.0,1060,1060 Foundation Excavation,1
5524,13468,Governors,2977,medium,869889.0,1100,1100 Form Footings,1
5525,13485,Peninsula,4241,medium,706147.0,1100,1100 Form Footings,1
5526,13485,Peninsula,4241,medium,706147.0,1140,1140 Footing Inspection,1
5527,13468,Governors,2977,medium,869889.0,1140,1140 Footing Inspection,1
5528,13468,Governors,2977,medium,869889.0,1180,1180 Pour Footings,1
5529,13485,Peninsula,4241,medium,706147.0,1180,1180 Pour Footings,1
5530,13496,Hailey's Glen,3443,medium,316917.0,1180,1180 Pour Footings,1
5531,13496,Hailey's Glen,3443,medium,316917.0,1780,1780 Order Steel,1
5532,13496,Hailey's Glen,3443,medium,316917.0,2230,2230 Receive Dumpster Allocation,1
5533,13496,Hailey's Glen,3443,medium,316917.0,2240,2240 Receive Portable Toilet Allocation,1
5534,13501,Hailey's Glen,2736,medium,694771.0,2344,2344 Meter Pit Install,1
5535,13349,Peninsula Lakes,2188,medium,442826.0,2344,2344 Meter Pit Install,1
5536,13394,Peninsula Lakes,2154,medium,474879.0,2344,2344 Meter Pit Install,1
5537,13501,Hailey's Glen,2736,medium,694771.0,2700,2700 Pour Garage Slab,1
5538,13281,Marlin Chase,3558,medium,786910.0,3020,3020 Termite & Pest PreTreatment,1
5539,13281,Marlin Chase,3558,medium,786910.0,3060,3060 Foundation Insulation-Crawl,1
5540,13392,Marsh Island,2795,medium,771707.0,3380,3380 1st Floor Wall Framing,1
5541,13392,Marsh Island,2795,medium,771707.0,3700,3700 Receive Trusses,1
5542,13476,Durham Farms,4277,medium,750956.0,3700,3700 Receive Trusses,1
5543,13394,Peninsula Lakes,2154,medium,474879.0,3780,3780 2nd Floor Deck Framing,1
5544,13507,Welches Pond,2852,medium,845914.0,3780,3780 2nd Floor Deck Framing,1
5545,13349,Peninsula Lakes,2188,medium,442826.0,3780,3780 2nd Floor Deck Framing,1
5546,13471,Cardinal Grove,2233,medium,517387.0,4020,4020 Set Trusses,2
5547,13442,Walden,4633,medium,656370.0,4071,4071 Receive Exterior Decking,1
5548,13339,Peninsula,5583,high,750956.0,4071,4071 Receive Exterior Decking,1
5549,13091,Marlin Chase,2591,medium,562928.0,4100,4100 Exterior Deck Framing,1
5550,13471,Cardinal Grove,2233,medium,517387.0,4230,4230 Receive Housewrap/Flashing,1
5551,13258,River Mill,3064,medium,670416.0,4260,4260 Receive Windows,1
5552,13091,Marlin Chase,2591,medium,562928.0,4260,4260 Receive Windows,1
5553,13091,Marlin Chase,2591,medium,562928.0,4300,4300 Receive Window/Door Flashings,1
5554,13091,Marlin Chase,2591,medium,562928.0,4340,4340 Receive Exterior Doors,1
5555,13465,Cardinal Grove,1764,medium,569722.0,4340,4340 Receive Exterior Doors,1
5556,13030,Peninsula,5546,high,1768191.0,4380,4380 Roof Sheathing,3
5557,13091,Marlin Chase,2591,medium,562928.0,4390,4390 Receive Roofing Material,1
5558,13392,Marsh Island,2795,medium,771707.0,4460,4460 Schedule Gas Lateral Contractor,1
5559,13035,Forest Hills,4024,medium,816522.0,4460,4460 Schedule Gas Lateral Contractor,1
5560,13360,Peninsula Lakes,3496,medium,575090.0,4461,4461 Install Gas Lateral,1
5561,13360,Peninsula Lakes,3496,medium,575090.0,4540,4540 Install Windows,1
5562,13442,Walden,4633,medium,656370.0,4540,4540 Install Windows,1
5563,13442,Walden,4633,medium,656370.0,4580,4580 Install Roofing,2
5564,13339,Peninsula,5583,high,750956.0,4580,4580 Install Roofing,3
5565,13339,Peninsula,5583,high,750956.0,4701,4701 Frame Check,1
5566,13442,Walden,4633,medium,656370.0,4701,4701 Frame Check,1
5567,13145,Marlin Chase,3204,medium,841553.0,4981,4981 Deliver Sinks,1
5568,13112,Marlin Chase,3171,medium,634940.0,5100,5100 HVAC Rough,2
5569,13152,Marlin Chase,2710,medium,768496.0,5260,5260 Mechanical Rough Inspection,1
5570,13152,Marlin Chase,2710,medium,768496.0,5580,5580 Structured Wiring Rough,1
5571,13144,Marlin Chase,3055,medium,740636.0,5820,5820 Framing Inspection,1
5572,12920,Peninsula,4116,high,1454538.0,5820,5820 Framing Inspection,1
5573,13112,Marlin Chase,3171,medium,634940.0,5825,5825 Frame Punch,1
5574,13152,Marlin Chase,2710,medium,768496.0,5860,5860 Frame Stage Tour,1
5575,13388,Marsh Island,5848,high,750956.0,5860,5860 Frame Stage Tour,1
5576,13101,Marlin Chase,2461,medium,682900.0,6391,6391 Install Gas Meter,1
5577,13175,Peninsula Lakes,2245,low,567645.0,6620,6620 Receive Vinyl Siding,1
5578,13175,Peninsula Lakes,2245,low,567645.0,6700,6700 Receive Composite Ext Trim,1
5579,13175,Peninsula Lakes,2245,low,567645.0,6720,6720 Receive Siding Accents,1
5580,13175,Peninsula Lakes,2245,low,567645.0,6725,6725 Receive Shutters,1
5581,13175,Peninsula Lakes,2245,low,567645.0,6740,6740 Receive PVC Exterior Trim,1
5582,13175,Peninsula Lakes,2245,low,567645.0,6820,6820 Receive Deck Skirting,1
5583,12993,Peninsula,5996,high,750956.0,7140,7140 Exterior Painting,9
5584,13175,Peninsula Lakes,2245,low,567645.0,7180,7180 Install Exterior Railings,1
5585,13175,Peninsula Lakes,2245,low,567645.0,7220,7220 Install Deck Skirting/Flower Boxes,1
5586,13145,Marlin Chase,3204,medium,841553.0,7300,7300 Receive Interior Trim,1
5587,13145,Marlin Chase,3204,medium,841553.0,7304,7304 Receive Goodie Box,1
5588,13113,Marlin Chase,2814,medium,750956.0,7340,7340 Install Ceramic Tile,2
5589,12993,Peninsula,5996,high,750956.0,7340,7340 Install Ceramic Tile,8
5590,12993,Peninsula,5996,high,750956.0,7350,7350 Install Shower Tile,8
5591,12993,Peninsula,5996,high,750956.0,7380,7380 Install Vinyl Floors,1
5592,13113,Marlin Chase,2814,medium,750956.0,7380,7380 Install Vinyl Floors,1
5593,13145,Marlin Chase,3204,medium,841553.0,7700,7700 Receive Interior Doors,1
5594,13145,Marlin Chase,3204,medium,841553.0,7862,7862 Receive Cabinet Hardware Allocation,1
5595,13145,Marlin Chase,3204,medium,841553.0,7866,7866 Receive Door Hardware,1
5596,13145,Marlin Chase,3204,medium,841553.0,7900,7900 Receive Cabinets Allocation,1
5597,13145,Marlin Chase,3204,medium,841553.0,7901,7901 Cabinet Delivery Charges,1
5598,13145,Marlin Chase,3204,medium,841553.0,7940,7940 Receive Vanity Tops,1
5599,13113,Marlin Chase,2814,medium,750956.0,8020,8020 Receive Interior Railing,1
5600,12993,Peninsula,5996,high,750956.0,8220,8220 Install Fireplace Surround/Mantel,1
5601,13145,Marlin Chase,3204,medium,841553.0,8260,8260 Install Interior Railing,1
5602,13138,Marlin Chase,3171,medium,859133.0,8380,8380 Template Countertops,1
5603,13137,Marlin Chase,2330,medium,637264.0,8420,8420 1st Paint,1
5604,13101,Marlin Chase,2461,medium,682900.0,8465,8465 Install Tiled Backsplash,1
5605,13496,Hailey's Glen,3443,medium,316917.0,8500,8500 Order Appliance Pkg 1,1
5606,13440,Marlin Chase,3067,medium,714189.0,8920,8920 Install Water Heater/1st Trim,1
5607,13496,Hailey's Glen,3443,medium,316917.0,9750,9750 Order Appliance Pkg 2,1
5608,13496,Hailey's Glen,3443,medium,316917.0,9860,9860 Final Utility Connection,0
5609,13496,Hailey's Glen,3443,medium,316917.0,10300,10300.1 Driveway/Curb Repair Allowance,0
5610,13175,Peninsula Lakes,2245,low,567645.0,10340,10340 Install Leadwalk & Comm. Sidewalk,1
5611,13175,Peninsula Lakes,2245,low,567645.0,10345,10345 Pour Concrete Steps,1
5612,13092,Marlin Chase,2079,medium,433351.0,10345,10345 Pour Concrete Steps,1
5613,13090,Marsh Island,5603,high,1154185.0,10780,10780 Customer Walk,1
5614,13144,Marlin Chase,3055,medium,740636.0,10940,10940 Framing Retainage,1
5615,13503,Marsh Island,4307,medium,892519.0,0,00000 START,1
5616,13503,Marsh Island,4307,medium,892519.0,1,1 START  CONSTRUCTION,1
5617,13501,Hailey's Glen,2736,medium,694771.0,2,2 FRAMING START,1
5618,13507,Welches Pond,2852,medium,845914.0,100,100 Framing DRAW 1,1
5619,13349,Peninsula Lakes,2188,medium,442826.0,100,100 Framing DRAW 1,1
5620,13394,Peninsula Lakes,2154,medium,474879.0,100,100 Framing DRAW 1,1
5621,13503,Marsh Island,4307,medium,892519.0,252,252 Site Plan,1
5622,13503,Marsh Island,4307,medium,892519.0,260,260 Plan Review/Permit Allocation,0
5623,13503,Marsh Island,4307,medium,892519.0,900,900 Bldg Stakeout,1
5624,13503,Marsh Island,4307,medium,892519.0,901,901 Engineering Allocation,0
5625,13503,Marsh Island,4307,medium,892519.0,980,980 Install Silt Fence,1
5626,13112,Marlin Chase,3171,medium,634940.0,980,980 Install Silt Fence,1
5627,13503,Marsh Island,4307,medium,892519.0,1020,1020 Install Construction Entrance,1
5628,13496,Hailey's Glen,3443,medium,316917.0,1060,1060 Foundation Excavation,1
5629,13485,Peninsula,4241,medium,706147.0,1190,1190 Capillary Break,1
5630,13468,Governors,2977,medium,869889.0,1190,1190 Capillary Break,1
5631,13468,Governors,2977,medium,869889.0,1195,1195 Pin Footings,1
5632,13503,Marsh Island,4307,medium,892519.0,1780,1780 Order Steel,1
5633,13397,Peninsula,5533,high,750956.0,2140,2140 Underground Plumbing Inspection,1
5634,13503,Marsh Island,4307,medium,892519.0,2230,2230 Receive Dumpster Allocation,1
5635,13503,Marsh Island,4307,medium,892519.0,2240,2240 Receive Portable Toilet Allocation,1
5636,13281,Marlin Chase,3558,medium,786910.0,2260,2260 Crawl Stone/Sand,1
5637,13281,Marlin Chase,3558,medium,786910.0,2340,2340 Backfill & Compact,1
5638,13501,Hailey's Glen,2736,medium,694771.0,2440,2440 Receive Steel,1
5639,13501,Hailey's Glen,2736,medium,694771.0,2460,2460 Receive Lumber Drop #1,1
5640,13501,Hailey's Glen,2736,medium,694771.0,2540,2540 Receive 1st Floor Joists,1
5641,13501,Hailey's Glen,2736,medium,694771.0,3540,3540 Receive Lumber Drop #2,1
5642,13349,Peninsula Lakes,2188,medium,442826.0,3700,3700 Receive Trusses,1
5643,13394,Peninsula Lakes,2154,medium,474879.0,3700,3700 Receive Trusses,1
5644,13501,Hailey's Glen,2736,medium,694771.0,3740,3740 Receive 2nd Floor Joists,1
5645,13392,Marsh Island,2795,medium,771707.0,3780,3780 2nd Floor Deck Framing,1
5646,13507,Welches Pond,2852,medium,845914.0,3820,3820 2nd Floor Wall Framing,1
5647,13349,Peninsula Lakes,2188,medium,442826.0,3820,3820 2nd Floor Wall Framing,2
5648,13394,Peninsula Lakes,2154,medium,474879.0,3820,3820 2nd Floor Wall Framing,2
5649,13501,Hailey's Glen,2736,medium,694771.0,3900,3900 Receive Lumber Drop #3,1
5650,13091,Marlin Chase,2591,medium,562928.0,4071,4071 Receive Exterior Decking,1
5651,13442,Walden,4633,medium,656370.0,4100,4100 Exterior Deck Framing,1
5652,13465,Cardinal Grove,1764,medium,569722.0,4380,4380 Roof Sheathing,2
5653,13465,Cardinal Grove,1764,medium,569722.0,4390,4390 Receive Roofing Material,1
5654,13101,Marlin Chase,2461,medium,682900.0,4461,4461 Install Gas Lateral,1
5655,13258,River Mill,3064,medium,670416.0,4540,4540 Install Windows,1
5656,13091,Marlin Chase,2591,medium,562928.0,4540,4540 Install Windows,1
5657,13091,Marlin Chase,2591,medium,562928.0,4580,4580 Install Roofing,4
5658,13442,Walden,4633,medium,656370.0,4582,4582 Install Temp Poly,1
5659,13144,Marlin Chase,3055,medium,740636.0,4591,4591 Install Metal Roof Flashing,1
5660,13091,Marlin Chase,2591,medium,562928.0,4701,4701 Frame Check,1
5661,13258,River Mill,3064,medium,670416.0,4701,4701 Frame Check,1
5662,13339,Peninsula,5583,high,750956.0,4775,4775 Receive Hardwood Stairs,1
5663,13277,Mosaic,1704,medium,561869.0,4940,4940 Install Fireplace,1
5664,13088,Forest Hills,3580,medium,222544.0,4940,4940 Install Fireplace,1
5665,13477,Cardinal Grove,2589,medium,750956.0,4980,4980 Plumbing Rough,2
5666,13088,Forest Hills,3580,medium,222544.0,4980,4980 Plumbing Rough,10
5667,13277,Mosaic,1704,medium,561869.0,4980,4980 Plumbing Rough,5
5668,13113,Marlin Chase,2814,medium,750956.0,4981,4981 Deliver Sinks,1
5669,12993,Peninsula,5996,high,750956.0,4981,4981 Deliver Sinks,1
5670,13112,Marlin Chase,3171,medium,634940.0,5120,5120 HVAC Set Furnace,1
5671,13401,Welches Pond,2927,medium,731557.0,5177,5177 Electric Meter Connection,51
5672,13360,Peninsula Lakes,3496,medium,575090.0,5180,5180 Electric Rough,3
5673,13120,Marsh Island,4291,medium,851477.0,5260,5260 Mechanical Rough Inspection,1
5674,13152,Marlin Chase,2710,medium,768496.0,5300,5300 Municipal Electric Inspection,1
5675,13120,Marsh Island,4291,medium,851477.0,5580,5580 Structured Wiring Rough,1
5676,13442,Walden,4633,medium,656370.0,5825,5825 Frame Punch,1
5677,13339,Peninsula,5583,high,750956.0,5825,5825 Frame Punch,1
5678,13152,Marlin Chase,2710,medium,768496.0,5900,5900 Air Seal,1
5679,13507,Welches Pond,2852,medium,845914.0,5941,5941 Order Cabinet Hardware,1
5680,13144,Marlin Chase,3055,medium,740636.0,6180,6180 Install Insulation,2
5681,12920,Peninsula,4116,high,1454538.0,6180,6180 Install Insulation,2
5682,13360,Peninsula Lakes,3496,medium,575090.0,6390,6390 Schedule Gas Meter,1
5683,12993,Peninsula,5996,high,750956.0,7300,7300 Receive Interior Trim,1
5684,13113,Marlin Chase,2814,medium,750956.0,7300,7300 Receive Interior Trim,1
5685,13113,Marlin Chase,2814,medium,750956.0,7304,7304 Receive Goodie Box,1
5686,13137,Marlin Chase,2330,medium,637264.0,7340,7340 Install Ceramic Tile,2
5687,13113,Marlin Chase,2814,medium,750956.0,7700,7700 Receive Interior Doors,1
5688,12993,Peninsula,5996,high,750956.0,7700,7700 Receive Interior Doors,1
5689,12993,Peninsula,5996,high,750956.0,7862,7862 Receive Cabinet Hardware Allocation,1
5690,13113,Marlin Chase,2814,medium,750956.0,7862,7862 Receive Cabinet Hardware Allocation,1
5691,12993,Peninsula,5996,high,750956.0,7865,7865 Receive Door Hardware Allocation,0
5692,13113,Marlin Chase,2814,medium,750956.0,7866,7866 Receive Door Hardware,1
5693,13113,Marlin Chase,2814,medium,750956.0,7900,7900 Receive Cabinets Allocation,1
5694,12993,Peninsula,5996,high,750956.0,7900,7900 Receive Cabinets Allocation,1
5695,13113,Marlin Chase,2814,medium,750956.0,7901,7901 Cabinet Delivery Charges,1
5696,13113,Marlin Chase,2814,medium,750956.0,7940,7940 Receive Vanity Tops,1
5697,13137,Marlin Chase,2330,medium,637264.0,8020,8020 Receive Interior Railing,1
5698,13503,Marsh Island,4307,medium,892519.0,8500,8500 Order Appliance Pkg 1,1
5699,13137,Marlin Chase,2330,medium,637264.0,8579,8579 Template Shower Enclosure,1
5700,13477,Cardinal Grove,2589,medium,750956.0,8820,8820 Schedule Irrigation Well,1
5701,13136,Marlin Chase,3170,medium,806102.0,8920,8920 Install Water Heater/1st Trim,1
5702,13136,Marlin Chase,3170,medium,806102.0,9020,9020 Electric Trim,5
5703,13032,Welches Pond,2812,medium,643995.0,9140,9140 2nd Stage Air Seal,1
5704,13090,Marsh Island,5603,high,1154185.0,9500,9500 Blower Door/Ductblaster,1
5705,13503,Marsh Island,4307,medium,892519.0,9750,9750 Order Appliance Pkg 2,1
5706,13175,Peninsula Lakes,2245,low,567645.0,9820,9820 Install Gutters,1
5707,13139,Marlin Chase,2554,medium,704067.0,9820,9820 Install Gutters,1
5708,13503,Marsh Island,4307,medium,892519.0,9860,9860 Final Utility Connection,0
5709,13020,Peninsula Lakes,2100,low,578095.0,10220,10220 Install Mailbox,1
5710,13503,Marsh Island,4307,medium,892519.0,10300,10300.1 Driveway/Curb Repair Allowance,0
5711,13092,Marlin Chase,2079,medium,433351.0,10340,10340 Install Leadwalk & Comm. Sidewalk,4
5712,13138,Marlin Chase,3171,medium,859133.0,10500,10500 Paint 2,4
5713,13442,Walden,4633,medium,656370.0,3,3 TRADES START,1
5714,13392,Marsh Island,2795,medium,771707.0,100,100 Framing DRAW 1,1
5715,13258,River Mill,3064,medium,670416.0,140,140 Framing DRAW 2,1
5716,13091,Marlin Chase,2591,medium,562928.0,140,140 Framing DRAW 2,1
5717,13503,Marsh Island,4307,medium,892519.0,1060,1060 Foundation Excavation,1
5718,13503,Marsh Island,4307,medium,892519.0,1100,1100 Form Footings,1
5719,13496,Hailey's Glen,3443,medium,316917.0,1100,1100 Form Footings,1
5720,13496,Hailey's Glen,3443,medium,316917.0,1140,1140 Footing Inspection,1
5721,13503,Marsh Island,4307,medium,892519.0,1140,1140 Footing Inspection,1
5722,13503,Marsh Island,4307,medium,892519.0,1180,1180 Pour Footings,1
5723,13485,Peninsula,4241,medium,706147.0,1580,1580 Form Foundation Walls,1
5724,13468,Governors,2977,medium,869889.0,1580,1580 Form Foundation Walls,1
5725,13468,Governors,2977,medium,869889.0,1820,1820 Foundation Wall Inspection,1
5726,13485,Peninsula,4241,medium,706147.0,1820,1820 Foundation Wall Inspection,1
5727,13485,Peninsula,4241,medium,706147.0,1860,1860 Foundation Wall Pour,1
5728,13468,Governors,2977,medium,869889.0,1860,1860 Foundation Wall Pour,1
5729,13397,Peninsula,5533,high,750956.0,2250,2250 Slab Prep,1
5730,13423,Governors,2974,medium,884692.0,2260,2260 Crawl Stone/Sand,1
5731,13423,Governors,2974,medium,884692.0,2340,2340 Backfill & Compact,1
5732,13397,Peninsula,5533,high,750956.0,2420,2420 Slab Inspection,1
5733,13281,Marlin Chase,3558,medium,786910.0,2700,2700 Pour Garage Slab,1
5734,13035,Forest Hills,4024,medium,816522.0,3020,3020 Termite & Pest PreTreatment,1
5735,13281,Marlin Chase,3558,medium,786910.0,3100,3100 Foundation Survey,1
5736,13392,Marsh Island,2795,medium,771707.0,3820,3820 2nd Floor Wall Framing,1
5737,13507,Welches Pond,2852,medium,845914.0,4020,4020 Set Trusses,3
5738,13501,Hailey's Glen,2736,medium,694771.0,4070,4070 Receive Exterior Deck Material,1
5739,13465,Cardinal Grove,1764,medium,569722.0,4071,4071 Receive Exterior Decking,1
5740,13258,River Mill,3064,medium,670416.0,4100,4100 Exterior Deck Framing,1
5741,13507,Welches Pond,2852,medium,845914.0,4230,4230 Receive Housewrap/Flashing,1
5742,13258,River Mill,3064,medium,670416.0,4300,4300 Receive Window/Door Flashings,1
5743,13258,River Mill,3064,medium,670416.0,4340,4340 Receive Exterior Doors,1
5744,13471,Cardinal Grove,2233,medium,517387.0,4380,4380 Roof Sheathing,2
5745,13392,Marsh Island,2795,medium,771707.0,4380,4380 Roof Sheathing,2
5746,13258,River Mill,3064,medium,670416.0,4390,4390 Receive Roofing Material,1
5747,13465,Cardinal Grove,1764,medium,569722.0,4580,4580 Install Roofing,2
5748,13091,Marlin Chase,2591,medium,562928.0,4582,4582 Install Temp Poly,1
5749,13339,Peninsula,5583,high,750956.0,4585,4585 Install Membrane Roofing,5
5750,13139,Marlin Chase,2554,medium,704067.0,4590,4590 Install Metal Roofing,1
5751,13138,Marlin Chase,3171,medium,859133.0,4590,4590 Install Metal Roofing,1
5752,13152,Marlin Chase,2710,medium,768496.0,4591,4591 Install Metal Roof Flashing,1
5753,13442,Walden,4633,medium,656370.0,4591,4591 Install Metal Roof Flashing,1
5754,13091,Marlin Chase,2591,medium,562928.0,4775,4775 Receive Hardwood Stairs,1
5755,13112,Marlin Chase,3171,medium,634940.0,4940,4940 Install Fireplace,1
5756,13442,Walden,4633,medium,656370.0,4940,4940 Install Fireplace,4
5757,13442,Walden,4633,medium,656370.0,4980,4980 Plumbing Rough,3
5758,13112,Marlin Chase,3171,medium,634940.0,4980,4980 Plumbing Rough,2
5759,13137,Marlin Chase,2330,medium,637264.0,4981,4981 Deliver Sinks,1
5760,13442,Walden,4633,medium,656370.0,5100,5100 HVAC Rough,7
5761,13253,River Mill,2912,medium,692624.0,5100,5100 HVAC Rough,3
5762,13253,River Mill,2912,medium,692624.0,5120,5120 HVAC Set Furnace,1
5763,13442,Walden,4633,medium,656370.0,5120,5120 HVAC Set Furnace,1
5764,13278,Mosaic,2320,medium,818814.0,5180,5180 Electric Rough,4
5765,13088,Forest Hills,3580,medium,222544.0,5260,5260 Mechanical Rough Inspection,1
5766,13120,Marsh Island,4291,medium,851477.0,5300,5300 Municipal Electric Inspection,1
5767,13388,Marsh Island,5848,high,750956.0,5580,5580 Structured Wiring Rough,1
5768,13278,Mosaic,2320,medium,818814.0,5740,5740 Install Gas Lines,1
5769,13091,Marlin Chase,2591,medium,562928.0,5825,5825 Frame Punch,1
5770,13120,Marsh Island,4291,medium,851477.0,5900,5900 Air Seal,1
5771,13394,Peninsula Lakes,2154,medium,474879.0,5940,5940 Order Cabinets,1
5772,13349,Peninsula Lakes,2188,medium,442826.0,5940,5940 Order Cabinets,1
5773,13349,Peninsula Lakes,2188,medium,442826.0,5941,5941 Order Cabinet Hardware,1
5774,13394,Peninsula Lakes,2154,medium,474879.0,5941,5941 Order Cabinet Hardware,1
5775,13138,Marlin Chase,3171,medium,859133.0,6884,6884 Measure Screen Porch Enclosure,1
5776,13139,Marlin Chase,2554,medium,704067.0,7220,7220 Install Deck Skirting/Flower Boxes,1
5777,13137,Marlin Chase,2330,medium,637264.0,7300,7300 Receive Interior Trim,1
5778,13137,Marlin Chase,2330,medium,637264.0,7304,7304 Receive Goodie Box,1
5779,13020,Peninsula Lakes,2100,low,578095.0,7380,7380 Install Vinyl Floors,1
5780,13137,Marlin Chase,2330,medium,637264.0,7700,7700 Receive Interior Doors,1
5781,12993,Peninsula,5996,high,750956.0,7860,7860 Install Interior Trim,6
5782,13145,Marlin Chase,3204,medium,841553.0,7860,7860 Install Interior Trim,2
5783,13137,Marlin Chase,2330,medium,637264.0,7862,7862 Receive Cabinet Hardware Allocation,1
5784,13137,Marlin Chase,2330,medium,637264.0,7866,7866 Receive Door Hardware,1
5785,13137,Marlin Chase,2330,medium,637264.0,7900,7900 Receive Cabinets Allocation,1
5786,13137,Marlin Chase,2330,medium,637264.0,7901,7901 Cabinet Delivery Charges,1
5787,12993,Peninsula,5996,high,750956.0,8020,8020 Receive Interior Railing,1
5788,13137,Marlin Chase,2330,medium,637264.0,8260,8260 Install Interior Railing,1
5789,13113,Marlin Chase,2814,medium,750956.0,8260,8260 Install Interior Railing,1
5790,12993,Peninsula,5996,high,750956.0,8300,8300 Install Cabinets,2
5791,13145,Marlin Chase,3204,medium,841553.0,8300,8300 Install Cabinets,2
5792,13020,Peninsula Lakes,2100,low,578095.0,8460,8460 Install Countertops,1
5793,13138,Marlin Chase,3171,medium,859133.0,8579,8579 Template Shower Enclosure,1
5794,13440,Marlin Chase,3067,medium,714189.0,9020,9020 Electric Trim,4
5795,13020,Peninsula Lakes,2100,low,578095.0,9100,9100 HVAC Trim / Set Unit,12
5796,13140,Marlin Chase,2824,medium,766881.0,9140,9140 2nd Stage Air Seal,1
5797,13477,Cardinal Grove,2589,medium,750956.0,9390,9390 Install Water Meter/Sewer Frame,1
5798,13138,Marlin Chase,3171,medium,859133.0,9820,9820 Install Gutters,1
5799,13277,Mosaic,1704,medium,561869.0,9900,9900 Water Lateral,1
5800,13360,Peninsula Lakes,3496,medium,575090.0,9900,9900 Water Lateral,1
5801,13477,Cardinal Grove,2589,medium,750956.0,9900,9900 Water Lateral,1
5802,13477,Cardinal Grove,2589,medium,750956.0,9905,9905 Sewer Lateral,1
5803,13277,Mosaic,1704,medium,561869.0,9905,9905 Sewer Lateral,1
5804,13360,Peninsula Lakes,3496,medium,575090.0,9905,9905 Sewer Lateral,1
5805,13101,Marlin Chase,2461,medium,682900.0,9910,9910 Utility Grade,1
5806,13090,Marsh Island,5603,high,1154185.0,9985,9985 Final Clean 2,1
5807,12850,Peninsula,5715,high,750956.0,10888,10888 Release All Retainage,1
5808,12850,Peninsula,5715,high,750956.0,11585,11585 Exterior Paint Retainage,1
5809,12850,Peninsula,5715,high,750956.0,12180,12180 Driveway Retainage,1
5810,12850,Peninsula,5715,high,750956.0,12180,12180.1 Driveway Top Coat Allocation,0
5811,13281,Marlin Chase,3558,medium,786910.0,2,2 FRAMING START,1
5812,13503,Marsh Island,4307,medium,892519.0,1190,1190 Capillary Break,1
5813,13496,Hailey's Glen,3443,medium,316917.0,1190,1190 Capillary Break,1
5814,13503,Marsh Island,4307,medium,892519.0,1195,1195 Pin Footings,1
5815,13485,Peninsula,4241,medium,706147.0,1900,1900 Strip Foundation Forms,1
5816,13468,Governors,2977,medium,869889.0,1900,1900 Strip Foundation Forms,1
5817,13423,Governors,2974,medium,884692.0,2344,2344 Meter Pit Install,1
5818,13397,Peninsula,5533,high,750956.0,2385,2385 Pour SOG Slab,1
5819,13281,Marlin Chase,3558,medium,786910.0,2440,2440 Receive Steel,1
5820,13281,Marlin Chase,3558,medium,786910.0,2460,2460 Receive Lumber Drop #1,1
5821,13281,Marlin Chase,3558,medium,786910.0,2540,2540 Receive 1st Floor Joists,1
5822,13258,River Mill,3064,medium,670416.0,2700,2700 Pour Garage Slab,1
5823,13397,Peninsula,5533,high,750956.0,2700,2700 Pour Garage Slab,1
5824,13253,River Mill,2912,medium,692624.0,2700,2700 Pour Garage Slab,1
5825,13423,Governors,2974,medium,884692.0,3100,3100 Foundation Survey,1
5826,13501,Hailey's Glen,2736,medium,694771.0,3300,3300 1st Floor Deck Framing,1
5827,13281,Marlin Chase,3558,medium,786910.0,3540,3540 Receive Lumber Drop #2,1
5828,13281,Marlin Chase,3558,medium,786910.0,3740,3740 Receive 2nd Floor Joists,1
5829,13281,Marlin Chase,3558,medium,786910.0,3900,3900 Receive Lumber Drop #3,1
5830,13349,Peninsula Lakes,2188,medium,442826.0,4020,4020 Set Trusses,3
5831,13394,Peninsula Lakes,2154,medium,474879.0,4020,4020 Set Trusses,3
5832,13392,Marsh Island,2795,medium,771707.0,4020,4020 Set Trusses,3
5833,13030,Peninsula,5546,high,1768191.0,4100,4100 Exterior Deck Framing,1
5834,13465,Cardinal Grove,1764,medium,569722.0,4100,4100 Exterior Deck Framing,1
5835,13349,Peninsula Lakes,2188,medium,442826.0,4230,4230 Receive Housewrap/Flashing,1
5836,13394,Peninsula Lakes,2154,medium,474879.0,4230,4230 Receive Housewrap/Flashing,1
5837,13465,Cardinal Grove,1764,medium,569722.0,4260,4260 Receive Windows,1
5838,13030,Peninsula,5546,high,1768191.0,4260,4260 Receive Windows,1
5839,13030,Peninsula,5546,high,1768191.0,4300,4300 Receive Window/Door Flashings,1
5840,13465,Cardinal Grove,1764,medium,569722.0,4300,4300 Receive Window/Door Flashings,1
5841,13030,Peninsula,5546,high,1768191.0,4340,4340 Receive Exterior Doors,1
5842,13360,Peninsula Lakes,3496,medium,575090.0,4340,4340 Receive Exterior Doors,1
5843,13030,Peninsula,5546,high,1768191.0,4390,4390 Receive Roofing Material,1
5844,13152,Marlin Chase,2710,medium,768496.0,4461,4461 Install Gas Lateral,1
5845,13258,River Mill,3064,medium,670416.0,4580,4580 Install Roofing,2
5846,13465,Cardinal Grove,1764,medium,569722.0,4582,4582 Install Temp Poly,1
5847,13401,Welches Pond,2927,medium,731557.0,4590,4590 Install Metal Roofing,6
5848,13120,Marsh Island,4291,medium,851477.0,4700,4700 Internal Framing Inspection,1
5849,13152,Marlin Chase,2710,medium,768496.0,4700,4700 Internal Framing Inspection,1
5850,13253,River Mill,2912,medium,692624.0,4940,4940 Install Fireplace,1
5851,13360,Peninsula Lakes,3496,medium,575090.0,4940,4940 Install Fireplace,1
5852,13360,Peninsula Lakes,3496,medium,575090.0,5260,5260 Mechanical Rough Inspection,1
5853,13388,Marsh Island,5848,high,750956.0,5260,5260 Mechanical Rough Inspection,1
5854,13388,Marsh Island,5848,high,750956.0,5300,5300 Municipal Electric Inspection,1
5855,13477,Cardinal Grove,2589,medium,750956.0,5740,5740 Install Gas Lines,1
5856,13152,Marlin Chase,2710,medium,768496.0,5820,5820 Framing Inspection,1
5857,13120,Marsh Island,4291,medium,851477.0,5820,5820 Framing Inspection,1
5858,13360,Peninsula Lakes,3496,medium,575090.0,5860,5860 Frame Stage Tour,1
5859,13477,Cardinal Grove,2589,medium,750956.0,5860,5860 Frame Stage Tour,1
5860,13278,Mosaic,2320,medium,818814.0,5860,5860 Frame Stage Tour,1
5861,12920,Peninsula,4116,high,1454538.0,6300,6300 Energy Inspection,1
5862,13144,Marlin Chase,3055,medium,740636.0,6300,6300 Energy Inspection,1
5863,13144,Marlin Chase,3055,medium,740636.0,6345,6345 Stock Drywall,1
5864,12920,Peninsula,4116,high,1454538.0,6345,6345 Stock Drywall,1
5865,13401,Welches Pond,2927,medium,731557.0,6391,6391 Install Gas Meter,11
5866,13035,Forest Hills,4024,medium,816522.0,6620,6620 Receive Vinyl Siding,1
5867,13035,Forest Hills,4024,medium,816522.0,6660,6660 Receive Fiber Cement Siding,1
5868,13035,Forest Hills,4024,medium,816522.0,6700,6700 Receive Composite Ext Trim,1
5869,13035,Forest Hills,4024,medium,816522.0,6720,6720 Receive Siding Accents,1
5870,13035,Forest Hills,4024,medium,816522.0,6721,6721 Receive Brackets,33
5871,13035,Forest Hills,4024,medium,816522.0,6725,6725 Receive Shutters,1
5872,13035,Forest Hills,4024,medium,816522.0,6740,6740 Receive PVC Exterior Trim,1
5873,13140,Marlin Chase,2824,medium,766881.0,6860,6860 Siding Installation,11
5874,13401,Welches Pond,2927,medium,731557.0,6862,6862 Trellis Construction,1
5875,13401,Welches Pond,2927,medium,731557.0,7060,7060 Exterior Masonry Installation,6
5876,13175,Peninsula Lakes,2245,low,567645.0,7140,7140 Exterior Painting,1
5877,13401,Welches Pond,2927,medium,731557.0,7220,7220 Install Deck Skirting/Flower Boxes,1
5878,13137,Marlin Chase,2330,medium,637264.0,7860,7860 Install Interior Trim,2
5879,13113,Marlin Chase,2814,medium,750956.0,7860,7860 Install Interior Trim,2
5880,12993,Peninsula,5996,high,750956.0,8260,8260 Install Interior Railing,1
5881,13113,Marlin Chase,2814,medium,750956.0,8300,8300 Install Cabinets,2
5882,13139,Marlin Chase,2554,medium,704067.0,8460,8460 Install Countertops,1
5883,13020,Peninsula Lakes,2100,low,578095.0,8920,8920 Install Water Heater/1st Trim,1
5884,13401,Welches Pond,2927,medium,731557.0,9380,9380 Install Irrigation Well,15
5885,13442,Walden,4633,medium,656370.0,9390,9390 Install Water Meter/Sewer Frame,1
5886,13145,Marlin Chase,3204,medium,841553.0,9620,9620 Install Appliances,1
5887,13401,Welches Pond,2927,medium,731557.0,9820,9820 Install Gutters,6
5888,13442,Walden,4633,medium,656370.0,9900,9900 Water Lateral,4
5889,13442,Walden,4633,medium,656370.0,9905,9905 Sewer Lateral,4
5890,13477,Cardinal Grove,2589,medium,750956.0,9910,9910 Utility Grade,1
5891,13277,Mosaic,1704,medium,561869.0,9910,9910 Utility Grade,1
5892,12850,Peninsula,5715,high,750956.0,99999,99999 HOME COMPLETE,1
5893,13138,Marlin Chase,3171,medium,859133.0,0,vancheck Check Vanity Tops/Windows for Damage,1
5894,13423,Governors,2974,medium,884692.0,2,2 FRAMING START,1
5895,13397,Peninsula,5533,high,750956.0,2,2 FRAMING START,1
5896,13091,Marlin Chase,2591,medium,562928.0,3,3 TRADES START,1
5897,13496,Hailey's Glen,3443,medium,316917.0,1580,1580 Form Foundation Walls,1
5898,13503,Marsh Island,4307,medium,892519.0,1580,1580 Form Foundation Walls,1
5899,13503,Marsh Island,4307,medium,892519.0,1820,1820 Foundation Wall Inspection,1
5900,13496,Hailey's Glen,3443,medium,316917.0,1820,1820 Foundation Wall Inspection,1
5901,13496,Hailey's Glen,3443,medium,316917.0,1860,1860 Foundation Wall Pour,1
5902,13503,Marsh Island,4307,medium,892519.0,1860,1860 Foundation Wall Pour,1
5903,13485,Peninsula,4241,medium,706147.0,1940,1940 Install Perimeter Drain/Croc,2
5904,13468,Governors,2977,medium,869889.0,1940,1940 Install Perimeter Drain/Croc,1
5905,13468,Governors,2977,medium,869889.0,2060,2060 Waterproof Foundation Walls,1
5906,13485,Peninsula,4241,medium,706147.0,2060,2060 Waterproof Foundation Walls,2
5907,13423,Governors,2974,medium,884692.0,2440,2440 Receive Steel,1
5908,13397,Peninsula,5533,high,750956.0,2440,2440 Receive Steel,1
5909,13397,Peninsula,5533,high,750956.0,2460,2460 Receive Lumber Drop #1,1
5910,13423,Governors,2974,medium,884692.0,2460,2460 Receive Lumber Drop #1,1
5911,13423,Governors,2974,medium,884692.0,2540,2540 Receive 1st Floor Joists,1
5912,13423,Governors,2974,medium,884692.0,2700,2700 Pour Garage Slab,1
5913,13281,Marlin Chase,3558,medium,786910.0,3300,3300 1st Floor Deck Framing,1
5914,13501,Hailey's Glen,2736,medium,694771.0,3380,3380 1st Floor Wall Framing,1
5915,13423,Governors,2974,medium,884692.0,3540,3540 Receive Lumber Drop #2,1
5916,13397,Peninsula,5533,high,750956.0,3540,3540 Receive Lumber Drop #2,1
5917,13501,Hailey's Glen,2736,medium,694771.0,3700,3700 Receive Trusses,1
5918,13423,Governors,2974,medium,884692.0,3740,3740 Receive 2nd Floor Joists,1
5919,13397,Peninsula,5533,high,750956.0,3740,3740 Receive 2nd Floor Joists,1
5920,13397,Peninsula,5533,high,750956.0,3900,3900 Receive Lumber Drop #3,1
5921,13423,Governors,2974,medium,884692.0,3900,3900 Receive Lumber Drop #3,1
5922,13397,Peninsula,5533,high,750956.0,3990,3990 Receive 3nd Floor Joists,1
5923,13281,Marlin Chase,3558,medium,786910.0,4070,4070 Receive Exterior Deck Material,1
5924,13030,Peninsula,5546,high,1768191.0,4071,4071 Receive Exterior Decking,1
5925,13392,Marsh Island,2795,medium,771707.0,4100,4100 Exterior Deck Framing,1
5926,13471,Cardinal Grove,2233,medium,517387.0,4100,4100 Exterior Deck Framing,1
5927,13471,Cardinal Grove,2233,medium,517387.0,4260,4260 Receive Windows,1
5928,13471,Cardinal Grove,2233,medium,517387.0,4300,4300 Receive Window/Door Flashings,1
5929,13471,Cardinal Grove,2233,medium,517387.0,4340,4340 Receive Exterior Doors,1
5930,13471,Cardinal Grove,2233,medium,517387.0,4390,4390 Receive Roofing Material,1
5931,13501,Hailey's Glen,2736,medium,694771.0,4460,4460 Schedule Gas Lateral Contractor,1
5932,13477,Cardinal Grove,2589,medium,750956.0,4461,4461 Install Gas Lateral,1
5933,13465,Cardinal Grove,1764,medium,569722.0,4540,4540 Install Windows,1
5934,13030,Peninsula,5546,high,1768191.0,4540,4540 Install Windows,2
5935,13030,Peninsula,5546,high,1768191.0,4580,4580 Install Roofing,2
5936,13258,River Mill,3064,medium,670416.0,4582,4582 Install Temp Poly,1
5937,13465,Cardinal Grove,1764,medium,569722.0,4591,4591 Install Metal Roof Flashing,1
5938,13360,Peninsula Lakes,3496,medium,575090.0,4700,4700 Internal Framing Inspection,1
5939,13465,Cardinal Grove,1764,medium,569722.0,4701,4701 Frame Check,1
5940,13030,Peninsula,5546,high,1768191.0,4701,4701 Frame Check,1
5941,13258,River Mill,3064,medium,670416.0,4775,4775 Receive Hardwood Stairs,1
5942,13471,Cardinal Grove,2233,medium,517387.0,4777,4777 Receive Box Stairs,1
5943,13465,Cardinal Grove,1764,medium,569722.0,5100,5100 HVAC Rough,2
5944,13091,Marlin Chase,2591,medium,562928.0,5100,5100 HVAC Rough,3
5945,13091,Marlin Chase,2591,medium,562928.0,5120,5120 HVAC Set Furnace,1
5946,13465,Cardinal Grove,1764,medium,569722.0,5120,5120 HVAC Set Furnace,1
5947,13477,Cardinal Grove,2589,medium,750956.0,5180,5180 Electric Rough,3
5948,13112,Marlin Chase,3171,medium,634940.0,5180,5180 Electric Rough,5
5949,13360,Peninsula Lakes,3496,medium,575090.0,5300,5300 Municipal Electric Inspection,1
5950,13360,Peninsula Lakes,3496,medium,575090.0,5580,5580 Structured Wiring Rough,1
5951,13112,Marlin Chase,3171,medium,634940.0,5740,5740 Install Gas Lines,1
5952,13442,Walden,4633,medium,656370.0,5860,5860 Frame Stage Tour,1
5953,13408,NewMarket,3940,medium,889253.0,5860,5860 Frame Stage Tour,1
5954,13360,Peninsula Lakes,3496,medium,575090.0,5900,5900 Air Seal,2
5955,13501,Hailey's Glen,2736,medium,694771.0,5940,5940 Order Cabinets,1
5956,13501,Hailey's Glen,2736,medium,694771.0,5941,5941 Order Cabinet Hardware,1
5957,13152,Marlin Chase,2710,medium,768496.0,6180,6180 Install Insulation,2
5958,13144,Marlin Chase,3055,medium,740636.0,6380,6380 Install Drywall,10
5959,12920,Peninsula,4116,high,1454538.0,6380,6380 Install Drywall,12
5960,13152,Marlin Chase,2710,medium,768496.0,6390,6390 Schedule Gas Meter,1
5961,13113,Marlin Chase,2814,medium,750956.0,6390,6390 Schedule Gas Meter,1
5962,13145,Marlin Chase,3204,medium,841553.0,6391,6391 Install Gas Meter,1
5963,13144,Marlin Chase,3055,medium,740636.0,6620,6620 Receive Vinyl Siding,1
5964,12920,Peninsula,4116,high,1454538.0,6620,6620 Receive Vinyl Siding,1
5965,12920,Peninsula,4116,high,1454538.0,6660,6660 Receive Fiber Cement Siding,1
5966,12920,Peninsula,4116,high,1454538.0,6700,6700 Receive Composite Ext Trim,1
5967,13144,Marlin Chase,3055,medium,740636.0,6700,6700 Receive Composite Ext Trim,1
5968,13144,Marlin Chase,3055,medium,740636.0,6720,6720 Receive Siding Accents,1
5969,12920,Peninsula,4116,high,1454538.0,6720,6720 Receive Siding Accents,1
5970,12920,Peninsula,4116,high,1454538.0,6725,6725 Receive Shutters,1
5971,12920,Peninsula,4116,high,1454538.0,6740,6740 Receive PVC Exterior Trim,1
5972,13144,Marlin Chase,3055,medium,740636.0,6740,6740 Receive PVC Exterior Trim,1
5973,13144,Marlin Chase,3055,medium,740636.0,6781,6781 Receive Column Wrap/Flower Bx/Pediment,1
5974,12920,Peninsula,4116,high,1454538.0,6781,6781 Receive Column Wrap/Flower Bx/Pediment,1
5975,12920,Peninsula,4116,high,1454538.0,6820,6820 Receive Deck Skirting,1
5976,13144,Marlin Chase,3055,medium,740636.0,6820,6820 Receive Deck Skirting,1
5977,13035,Forest Hills,4024,medium,816522.0,6860,6860 Siding Installation,10
5978,13145,Marlin Chase,3204,medium,841553.0,6884,6884 Measure Screen Porch Enclosure,1
5979,13401,Welches Pond,2927,medium,731557.0,7140,7140 Exterior Painting,1
5980,13145,Marlin Chase,3204,medium,841553.0,7220,7220 Install Deck Skirting/Flower Boxes,1
5981,13032,Welches Pond,2812,medium,643995.0,7220,7220 Install Deck Skirting/Flower Boxes,1
5982,13113,Marlin Chase,2814,medium,750956.0,7350,7350 Install Shower Tile,6
5983,13137,Marlin Chase,2330,medium,637264.0,8220,8220 Install Fireplace Surround/Mantel,1
5984,13137,Marlin Chase,2330,medium,637264.0,8300,8300 Install Cabinets,2
5985,12993,Peninsula,5996,high,750956.0,8380,8380 Template Countertops,1
5986,13032,Welches Pond,2812,medium,643995.0,8420,8420 1st Paint,1
5987,13442,Walden,4633,medium,656370.0,8820,8820 Schedule Irrigation Well,1
5988,13401,Welches Pond,2927,medium,731557.0,9140,9140 2nd Stage Air Seal,1
5989,13144,Marlin Chase,3055,medium,740636.0,9390,9390 Install Water Meter/Sewer Frame,1
5990,13145,Marlin Chase,3204,medium,841553.0,9420,9420 Install Solar Panels,1
5991,13138,Marlin Chase,3171,medium,859133.0,9620,9620 Install Appliances,1
5992,13113,Marlin Chase,2814,medium,750956.0,9620,9620 Install Appliances,1
5993,13032,Welches Pond,2812,medium,643995.0,9820,9820 Install Gutters,1
5994,13144,Marlin Chase,3055,medium,740636.0,9900,9900 Water Lateral,1
5995,13144,Marlin Chase,3055,medium,740636.0,9905,9905 Sewer Lateral,1
5996,13090,Marsh Island,5603,high,1154185.0,9940,9940 Final Inspection,1
5997,13440,Marlin Chase,3067,medium,714189.0,10301,10301 Driveway Apron,1
5998,13139,Marlin Chase,2554,medium,704067.0,10301,10301 Driveway Apron,1
5999,13145,Marlin Chase,3204,medium,841553.0,10460,10460 Drywall Touch Up,2
6000,13120,Marsh Island,4291,medium,851477.0,10940,10940 Framing Retainage,1
6001,13152,Marlin Chase,2710,medium,768496.0,10940,10940 Framing Retainage,1
6002,13408,NewMarket,3940,medium,889253.0,10940,10940 Framing Retainage,1
6003,13264,Welches Pond,3905,medium,915363.0,0,00000 START,1
6004,13520,Hailey's Glen,2792,medium,606920.0,0,00000 START,1
6005,13264,Welches Pond,3905,medium,915363.0,1,1 START  CONSTRUCTION,1
6006,13520,Hailey's Glen,2792,medium,606920.0,1,1 START  CONSTRUCTION,1
6007,13258,River Mill,3064,medium,670416.0,3,3 TRADES START,1
6008,13465,Cardinal Grove,1764,medium,569722.0,140,140 Framing DRAW 2,1
6009,13030,Peninsula,5546,high,1768191.0,140,140 Framing DRAW 2,1
6010,13264,Welches Pond,3905,medium,915363.0,252,252 Site Plan,1
6011,13520,Hailey's Glen,2792,medium,606920.0,252,252 Site Plan,1
6012,13264,Welches Pond,3905,medium,915363.0,260,260 Plan Review/Permit Allocation,0
6013,13520,Hailey's Glen,2792,medium,606920.0,260,260 Plan Review/Permit Allocation,0
6014,13264,Welches Pond,3905,medium,915363.0,900,900 Bldg Stakeout,1
6015,13520,Hailey's Glen,2792,medium,606920.0,900,900 Bldg Stakeout,1
6016,13264,Welches Pond,3905,medium,915363.0,901,901 Engineering Allocation,0
6017,13520,Hailey's Glen,2792,medium,606920.0,901,901 Engineering Allocation,0
6018,13264,Welches Pond,3905,medium,915363.0,980,980 Install Silt Fence,1
6019,13520,Hailey's Glen,2792,medium,606920.0,980,980 Install Silt Fence,1
6020,13264,Welches Pond,3905,medium,915363.0,1020,1020 Install Construction Entrance,1
6021,13520,Hailey's Glen,2792,medium,606920.0,1020,1020 Install Construction Entrance,1
6022,13264,Welches Pond,3905,medium,915363.0,1780,1780 Order Steel,1
6023,13520,Hailey's Glen,2792,medium,606920.0,1780,1780 Order Steel,1
6024,13496,Hailey's Glen,3443,medium,316917.0,1900,1900 Strip Foundation Forms,1
6025,13503,Marsh Island,4307,medium,892519.0,1900,1900 Strip Foundation Forms,1
6026,13485,Peninsula,4241,medium,706147.0,2020,2020 Install Underground Plumbing,1
6027,13264,Welches Pond,3905,medium,915363.0,2230,2230 Receive Dumpster Allocation,1
6028,13520,Hailey's Glen,2792,medium,606920.0,2230,2230 Receive Dumpster Allocation,1
6029,13264,Welches Pond,3905,medium,915363.0,2240,2240 Receive Portable Toilet Allocation,1
6030,13520,Hailey's Glen,2792,medium,606920.0,2240,2240 Receive Portable Toilet Allocation,1
6031,13408,NewMarket,3940,medium,889253.0,3020,3020 Termite & Pest PreTreatment,1
6032,13278,Mosaic,2320,medium,818814.0,3020,3020 Termite & Pest PreTreatment,1
6033,13468,Governors,2977,medium,869889.0,3020,3020 Termite & Pest PreTreatment,1
6034,13468,Governors,2977,medium,869889.0,3060,3060 Foundation Insulation-Crawl,1
6035,13423,Governors,2974,medium,884692.0,3300,3300 1st Floor Deck Framing,1
6036,13281,Marlin Chase,3558,medium,786910.0,3380,3380 1st Floor Wall Framing,1
6037,13397,Peninsula,5533,high,750956.0,3380,3380 1st Floor Wall Framing,1
6038,13397,Peninsula,5533,high,750956.0,3700,3700 Receive Trusses,1
6039,13281,Marlin Chase,3558,medium,786910.0,3700,3700 Receive Trusses,1
6040,13501,Hailey's Glen,2736,medium,694771.0,3780,3780 2nd Floor Deck Framing,1
6041,13423,Governors,2974,medium,884692.0,4070,4070 Receive Exterior Deck Material,1
6042,13397,Peninsula,5533,high,750956.0,4070,4070 Receive Exterior Deck Material,1
6043,13471,Cardinal Grove,2233,medium,517387.0,4071,4071 Receive Exterior Decking,1
6044,13507,Welches Pond,2852,medium,845914.0,4260,4260 Receive Windows,1
6045,13507,Welches Pond,2852,medium,845914.0,4300,4300 Receive Window/Door Flashings,1
6046,13507,Welches Pond,2852,medium,845914.0,4340,4340 Receive Exterior Doors,1
6047,13507,Welches Pond,2852,medium,845914.0,4380,4380 Roof Sheathing,3
6048,13507,Welches Pond,2852,medium,845914.0,4390,4390 Receive Roofing Material,1
6049,13392,Marsh Island,2795,medium,771707.0,4390,4390 Receive Roofing Material,1
6050,13281,Marlin Chase,3558,medium,786910.0,4460,4460 Schedule Gas Lateral Contractor,1
6051,13471,Cardinal Grove,2233,medium,517387.0,4540,4540 Install Windows,1
6052,13471,Cardinal Grove,2233,medium,517387.0,4580,4580 Install Roofing,2
6053,13112,Marlin Chase,3171,medium,634940.0,4585,4585 Install Membrane Roofing,1
6054,13175,Peninsula Lakes,2245,low,567645.0,4590,4590 Install Metal Roofing,1
6055,13258,River Mill,3064,medium,670416.0,4591,4591 Install Metal Roof Flashing,1
6056,13471,Cardinal Grove,2233,medium,517387.0,4701,4701 Frame Check,1
6057,13030,Peninsula,5546,high,1768191.0,4775,4775 Receive Hardwood Stairs,1
6058,13507,Welches Pond,2852,medium,845914.0,4777,4777 Receive Box Stairs,1
6059,13253,River Mill,2912,medium,692624.0,4980,4980 Plumbing Rough,5
6060,13258,River Mill,3064,medium,670416.0,5100,5100 HVAC Rough,3
6061,13258,River Mill,3064,medium,670416.0,5120,5120 HVAC Set Furnace,1
6062,13442,Walden,4633,medium,656370.0,5180,5180 Electric Rough,6
6063,13278,Mosaic,2320,medium,818814.0,5580,5580 Structured Wiring Rough,1
6064,13442,Walden,4633,medium,656370.0,5740,5740 Install Gas Lines,1
6065,13408,NewMarket,3940,medium,889253.0,5820,5820 Framing Inspection,6
6066,13465,Cardinal Grove,1764,medium,569722.0,5825,5825 Frame Punch,1
6067,13030,Peninsula,5546,high,1768191.0,5825,5825 Frame Punch,1
6068,13281,Marlin Chase,3558,medium,786910.0,5940,5940 Order Cabinets,1
6069,13423,Governors,2974,medium,884692.0,5940,5940 Order Cabinets,1
6070,13423,Governors,2974,medium,884692.0,5941,5941 Order Cabinet Hardware,1
6071,13281,Marlin Chase,3558,medium,786910.0,5941,5941 Order Cabinet Hardware,1
6072,13120,Marsh Island,4291,medium,851477.0,6180,6180 Install Insulation,2
6073,13477,Cardinal Grove,2589,medium,750956.0,6390,6390 Schedule Gas Meter,1
6074,12920,Peninsula,4116,high,1454538.0,6860,6860 Siding Installation,11
6075,13145,Marlin Chase,3204,medium,841553.0,7140,7140 Exterior Painting,1
6076,13136,Marlin Chase,3170,medium,806102.0,7180,7180 Install Exterior Railings,1
6077,13032,Welches Pond,2812,medium,643995.0,7340,7340 Install Ceramic Tile,4
6078,13032,Welches Pond,2812,medium,643995.0,7350,7350 Install Shower Tile,4
6079,13101,Marlin Chase,2461,medium,682900.0,7861,7861 Interior Trim Punch,1
6080,13032,Welches Pond,2812,medium,643995.0,8020,8020 Receive Interior Railing,1
6081,13032,Welches Pond,2812,medium,643995.0,8220,8220 Install Fireplace Surround/Mantel,2
6082,13113,Marlin Chase,2814,medium,750956.0,8380,8380 Template Countertops,1
6083,13145,Marlin Chase,3204,medium,841553.0,8380,8380 Template Countertops,1
6084,13140,Marlin Chase,2824,medium,766881.0,8420,8420 1st Paint,1
6085,13138,Marlin Chase,3171,medium,859133.0,8460,8460 Install Countertops,1
6086,13264,Welches Pond,3905,medium,915363.0,8500,8500 Order Appliance Pkg 1,1
6087,13520,Hailey's Glen,2792,medium,606920.0,8500,8500 Order Appliance Pkg 1,1
6088,13175,Peninsula Lakes,2245,low,567645.0,9140,9140 2nd Stage Air Seal,1
6089,13020,Peninsula Lakes,2100,low,578095.0,9260,9260 Structured Wiring Trim,1
6090,13138,Marlin Chase,3171,medium,859133.0,9260,9260 Structured Wiring Trim,1
6091,13401,Welches Pond,2927,medium,731557.0,9460,9460 Attic Insulation,1
6092,13138,Marlin Chase,3171,medium,859133.0,9540,9540 Rec. GE Appliance Pkg1 Allocation,1
6093,13020,Peninsula Lakes,2100,low,578095.0,9620,9620 Install Appliances,1
6094,13139,Marlin Chase,2554,medium,704067.0,9620,9620 Install Appliances,1
6095,13264,Welches Pond,3905,medium,915363.0,9750,9750 Order Appliance Pkg 2,1
6096,13520,Hailey's Glen,2792,medium,606920.0,9750,9750 Order Appliance Pkg 2,1
6097,13264,Welches Pond,3905,medium,915363.0,9860,9860 Final Utility Connection,33
6098,13520,Hailey's Glen,2792,medium,606920.0,9860,9860 Final Utility Connection,0
6099,13092,Marlin Chase,2079,medium,433351.0,9990,9990 2nd Stage Termite Treatment,1
6100,13264,Welches Pond,3905,medium,915363.0,10300,10300.1 Driveway/Curb Repair Allowance,0
6101,13520,Hailey's Glen,2792,medium,606920.0,10300,10300.1 Driveway/Curb Repair Allowance,0
6102,13101,Marlin Chase,2461,medium,682900.0,10340,10340 Install Leadwalk & Comm. Sidewalk,1
6103,13090,Marsh Island,5603,high,1154185.0,10820,10820 Settlement,1
6104,13090,Marsh Island,5603,high,1154185.0,10888,10888 Release All Retainage,1
6105,13090,Marsh Island,5603,high,1154185.0,11585,11585 Exterior Paint Retainage,1
6106,13090,Marsh Island,5603,high,1154185.0,11980,11980 Sod Retainage,1
6107,13090,Marsh Island,5603,high,1154185.0,12060,12060 Irrigation Retainage,1
6108,13090,Marsh Island,5603,high,1154185.0,12100,12100 Shrub Retainage,1
6109,13090,Marsh Island,5603,high,1154185.0,12180,12180 Driveway Retainage,1
6110,13090,Marsh Island,5603,high,1154185.0,12180,12180.1 Driveway Top Coat Allocation,0
6111,13465,Cardinal Grove,1764,medium,569722.0,3,3 TRADES START,1
6112,13501,Hailey's Glen,2736,medium,694771.0,100,100 Framing DRAW 1,1
6113,13471,Cardinal Grove,2233,medium,517387.0,140,140 Framing DRAW 2,1
6114,13392,Marsh Island,2795,medium,771707.0,140,140 Framing DRAW 2,1
6115,13264,Welches Pond,3905,medium,915363.0,1060,1060 Foundation Excavation,1
6116,13520,Hailey's Glen,2792,medium,606920.0,1060,1060 Foundation Excavation,1
6117,13496,Hailey's Glen,3443,medium,316917.0,1940,1940 Install Perimeter Drain/Croc,1
6118,13503,Marsh Island,4307,medium,892519.0,1940,1940 Install Perimeter Drain/Croc,1
6119,13503,Marsh Island,4307,medium,892519.0,2060,2060 Waterproof Foundation Walls,1
6120,13496,Hailey's Glen,3443,medium,316917.0,2060,2060 Waterproof Foundation Walls,1
6121,13144,Marlin Chase,3055,medium,740636.0,3140,3140 Pour Porch Slab,1
6122,13423,Governors,2974,medium,884692.0,3380,3380 1st Floor Wall Framing,1
6123,13423,Governors,2974,medium,884692.0,3700,3700 Receive Trusses,1
6124,13397,Peninsula,5533,high,750956.0,3780,3780 2nd Floor Deck Framing,1
6125,13281,Marlin Chase,3558,medium,786910.0,3780,3780 2nd Floor Deck Framing,1
6126,13501,Hailey's Glen,2736,medium,694771.0,3820,3820 2nd Floor Wall Framing,1
6127,13476,Durham Farms,4277,medium,750956.0,4070,4070 Receive Exterior Deck Material,1
6128,13392,Marsh Island,2795,medium,771707.0,4071,4071 Receive Exterior Decking,1
6129,13507,Welches Pond,2852,medium,845914.0,4071,4071 Receive Exterior Decking,1
6130,13501,Hailey's Glen,2736,medium,694771.0,4230,4230 Receive Housewrap/Flashing,1
6131,13476,Durham Farms,4277,medium,750956.0,4260,4260 Receive Windows,1
6132,13392,Marsh Island,2795,medium,771707.0,4260,4260 Receive Windows,1
6133,13392,Marsh Island,2795,medium,771707.0,4300,4300 Receive Window/Door Flashings,1
6134,13476,Durham Farms,4277,medium,750956.0,4300,4300 Receive Window/Door Flashings,1
6135,13476,Durham Farms,4277,medium,750956.0,4340,4340 Receive Exterior Doors,1
6136,13392,Marsh Island,2795,medium,771707.0,4340,4340 Receive Exterior Doors,1
6137,13349,Peninsula Lakes,2188,medium,442826.0,4380,4380 Roof Sheathing,1
6138,13394,Peninsula Lakes,2154,medium,474879.0,4380,4380 Roof Sheathing,1
6139,13476,Durham Farms,4277,medium,750956.0,4390,4390 Receive Roofing Material,1
6140,13423,Governors,2974,medium,884692.0,4460,4460 Schedule Gas Lateral Contractor,1
6141,13442,Walden,4633,medium,656370.0,4461,4461 Install Gas Lateral,13
6142,13507,Welches Pond,2852,medium,845914.0,4540,4540 Install Windows,1
6143,13507,Welches Pond,2852,medium,845914.0,4580,4580 Install Roofing,2
6144,13392,Marsh Island,2795,medium,771707.0,4580,4580 Install Roofing,2
6145,13471,Cardinal Grove,2233,medium,517387.0,4582,4582 Install Temp Poly,1
6146,13030,Peninsula,5546,high,1768191.0,4585,4585 Install Membrane Roofing,2
6147,13253,River Mill,2912,medium,692624.0,4585,4585 Install Membrane Roofing,1
6148,13032,Welches Pond,2812,medium,643995.0,4590,4590 Install Metal Roofing,3
6149,13507,Welches Pond,2852,medium,845914.0,4701,4701 Frame Check,1
6150,13392,Marsh Island,2795,medium,771707.0,4777,4777 Receive Box Stairs,1
6151,13465,Cardinal Grove,1764,medium,569722.0,4940,4940 Install Fireplace,1
6152,13465,Cardinal Grove,1764,medium,569722.0,4980,4980 Plumbing Rough,2
6153,13032,Welches Pond,2812,medium,643995.0,4981,4981 Deliver Sinks,1
6154,12993,Peninsula,5996,high,750956.0,5120,5120 HVAC Set Furnace,1
6155,13088,Forest Hills,3580,medium,222544.0,5180,5180 Electric Rough,4
6156,13277,Mosaic,1704,medium,561869.0,5180,5180 Electric Rough,4
6157,13477,Cardinal Grove,2589,medium,750956.0,5260,5260 Mechanical Rough Inspection,1
6158,13477,Cardinal Grove,2589,medium,750956.0,5580,5580 Structured Wiring Rough,1
6159,13088,Forest Hills,3580,medium,222544.0,5740,5740 Install Gas Lines,1
6160,13277,Mosaic,1704,medium,561869.0,5740,5740 Install Gas Lines,1
6161,13360,Peninsula Lakes,3496,medium,575090.0,5820,5820 Framing Inspection,1
6162,13035,Forest Hills,4024,medium,816522.0,5820,5820 Framing Inspection,1
6163,13471,Cardinal Grove,2233,medium,517387.0,5825,5825 Frame Punch,1
6164,13112,Marlin Chase,3171,medium,634940.0,5860,5860 Frame Stage Tour,1
6165,13277,Mosaic,1704,medium,561869.0,5860,5860 Frame Stage Tour,1
6166,13152,Marlin Chase,2710,medium,768496.0,6300,6300 Energy Inspection,1
6167,13101,Marlin Chase,2461,medium,682900.0,6340,6340 Install Overhead Door,1
6168,13152,Marlin Chase,2710,medium,768496.0,6345,6345 Stock Drywall,1
6169,13139,Marlin Chase,2554,medium,704067.0,6885,6885 Install Screen Porch Enclosure,1
6170,13032,Welches Pond,2812,medium,643995.0,7300,7300 Receive Interior Trim,1
6171,13032,Welches Pond,2812,medium,643995.0,7304,7304 Receive Goodie Box,1
6172,13140,Marlin Chase,2824,medium,766881.0,7340,7340 Install Ceramic Tile,2
6173,13140,Marlin Chase,2824,medium,766881.0,7350,7350 Install Shower Tile,9
6174,13032,Welches Pond,2812,medium,643995.0,7700,7700 Receive Interior Doors,1
6175,13032,Welches Pond,2812,medium,643995.0,7862,7862 Receive Cabinet Hardware Allocation,1
6176,13032,Welches Pond,2812,medium,643995.0,7866,7866 Receive Door Hardware,1
6177,13032,Welches Pond,2812,medium,643995.0,7900,7900 Receive Cabinets Allocation,1
6178,13032,Welches Pond,2812,medium,643995.0,7901,7901 Cabinet Delivery Charges,1
6179,12993,Peninsula,5996,high,750956.0,7940,7940 Receive Vanity Tops,1
6180,13032,Welches Pond,2812,medium,643995.0,7940,7940 Receive Vanity Tops,1
6181,13140,Marlin Chase,2824,medium,766881.0,8020,8020 Receive Interior Railing,1
6182,13140,Marlin Chase,2824,medium,766881.0,8260,8260 Install Interior Railing,1
6183,13137,Marlin Chase,2330,medium,637264.0,8380,8380 Template Countertops,1
6184,13139,Marlin Chase,2554,medium,704067.0,8465,8465 Install Tiled Backsplash,4
6185,13465,Cardinal Grove,1764,medium,569722.0,8820,8820 Schedule Irrigation Well,1
6186,13020,Peninsula Lakes,2100,low,578095.0,9020,9020 Electric Trim,5
6187,12832,Peninsula,4562,high,1090397.0,9140,9140 2nd Stage Air Seal,1
6188,13440,Marlin Chase,3067,medium,714189.0,9260,9260 Structured Wiring Trim,1
6189,13136,Marlin Chase,3170,medium,806102.0,9260,9260 Structured Wiring Trim,1
6190,13113,Marlin Chase,2814,medium,750956.0,9460,9460 Attic Insulation,1
6191,13175,Peninsula Lakes,2245,low,567645.0,9460,9460 Attic Insulation,1
6192,13113,Marlin Chase,2814,medium,750956.0,9540,9540 Rec. GE Appliance Pkg1 Allocation,1
6193,13253,River Mill,2912,medium,692624.0,9900,9900 Water Lateral,1
6194,13253,River Mill,2912,medium,692624.0,9905,9905 Sewer Lateral,1
6195,13138,Marlin Chase,3171,medium,859133.0,10301,10301 Driveway Apron,1
6196,13145,Marlin Chase,3204,medium,841553.0,10345,10345 Pour Concrete Steps,1
6197,13137,Marlin Chase,2330,medium,637264.0,10460,10460 Drywall Touch Up,2
6198,13113,Marlin Chase,2814,medium,750956.0,10460,10460 Drywall Touch Up,2
6199,13145,Marlin Chase,3204,medium,841553.0,10500,10500 Paint 2,4
6200,13090,Marsh Island,5603,high,1154185.0,99999,99999 HOME COMPLETE,1
6201,13471,Cardinal Grove,2233,medium,517387.0,3,3 TRADES START,1
6202,13281,Marlin Chase,3558,medium,786910.0,100,100 Framing DRAW 1,1
6203,13397,Peninsula,5533,high,750956.0,100,100 Framing DRAW 1,1
6204,13507,Welches Pond,2852,medium,845914.0,140,140 Framing DRAW 2,1
6205,13264,Welches Pond,3905,medium,915363.0,1100,1100 Form Footings,1
6206,13520,Hailey's Glen,2792,medium,606920.0,1100,1100 Form Footings,1
6207,13264,Welches Pond,3905,medium,915363.0,1140,1140 Footing Inspection,1
6208,13520,Hailey's Glen,2792,medium,606920.0,1140,1140 Footing Inspection,1
6209,13264,Welches Pond,3905,medium,915363.0,1180,1180 Pour Footings,1
6210,13520,Hailey's Glen,2792,medium,606920.0,1180,1180 Pour Footings,1
6211,13503,Marsh Island,4307,medium,892519.0,2020,2020 Install Underground Plumbing,1
6212,13468,Governors,2977,medium,869889.0,2260,2260 Crawl Stone/Sand,1
6213,13468,Governors,2977,medium,869889.0,2340,2340 Backfill & Compact,1
6214,13503,Marsh Island,4307,medium,892519.0,3020,3020 Termite & Pest PreTreatment,1
6215,13485,Peninsula,4241,medium,706147.0,3020,3020 Termite & Pest PreTreatment,1
6216,13496,Hailey's Glen,3443,medium,316917.0,3060,3060 Foundation Insulation-Crawl,1
6217,13152,Marlin Chase,2710,medium,768496.0,3140,3140 Pour Porch Slab,1
6218,13423,Governors,2974,medium,884692.0,3780,3780 2nd Floor Deck Framing,1
6219,13397,Peninsula,5533,high,750956.0,3820,3820 2nd Floor Wall Framing,2
6220,13281,Marlin Chase,3558,medium,786910.0,3820,3820 2nd Floor Wall Framing,1
6221,13501,Hailey's Glen,2736,medium,694771.0,4020,4020 Set Trusses,2
6222,13476,Durham Farms,4277,medium,750956.0,4100,4100 Exterior Deck Framing,55
6223,13394,Peninsula Lakes,2154,medium,474879.0,4390,4390 Receive Roofing Material,1
6224,13349,Peninsula Lakes,2188,medium,442826.0,4390,4390 Receive Roofing Material,1
6225,13392,Marsh Island,2795,medium,771707.0,4540,4540 Install Windows,1
6226,13476,Durham Farms,4277,medium,750956.0,4580,4580 Install Roofing,3
6227,13507,Welches Pond,2852,medium,845914.0,4582,4582 Install Temp Poly,1
6228,13113,Marlin Chase,2814,medium,750956.0,4590,4590 Install Metal Roofing,1
6229,13112,Marlin Chase,3171,medium,634940.0,4591,4591 Install Metal Roof Flashing,1
6230,13471,Cardinal Grove,2233,medium,517387.0,4591,4591 Install Metal Roof Flashing,1
6231,13476,Durham Farms,4277,medium,750956.0,4775,4775 Receive Hardwood Stairs,1
6232,13091,Marlin Chase,2591,medium,562928.0,4980,4980 Plumbing Rough,2
6233,13140,Marlin Chase,2824,medium,766881.0,4981,4981 Deliver Sinks,1
6234,13471,Cardinal Grove,2233,medium,517387.0,5100,5100 HVAC Rough,2
6235,13471,Cardinal Grove,2233,medium,517387.0,5120,5120 HVAC Set Furnace,1
6236,13408,NewMarket,3940,medium,889253.0,5177,5177 Electric Meter Connection,1
6237,13477,Cardinal Grove,2589,medium,750956.0,5300,5300 Municipal Electric Inspection,1
6238,13507,Welches Pond,2852,medium,845914.0,5825,5825 Frame Punch,1
6239,13477,Cardinal Grove,2589,medium,750956.0,5900,5900 Air Seal,1
6240,13468,Governors,2977,medium,869889.0,5940,5940 Order Cabinets,1
6241,13468,Governors,2977,medium,869889.0,5941,5941 Order Cabinet Hardware,1
6242,13035,Forest Hills,4024,medium,816522.0,6180,6180 Install Insulation,3
6243,13120,Marsh Island,4291,medium,851477.0,6300,6300 Energy Inspection,1
6244,13120,Marsh Island,4291,medium,851477.0,6345,6345 Stock Drywall,1
6245,13152,Marlin Chase,2710,medium,768496.0,6380,6380 Install Drywall,8
6246,13152,Marlin Chase,2710,medium,768496.0,6620,6620 Receive Vinyl Siding,1
6247,13152,Marlin Chase,2710,medium,768496.0,6700,6700 Receive Composite Ext Trim,1
6248,13152,Marlin Chase,2710,medium,768496.0,6720,6720 Receive Siding Accents,1
6249,13152,Marlin Chase,2710,medium,768496.0,6725,6725 Receive Shutters,1
6250,13152,Marlin Chase,2710,medium,768496.0,6740,6740 Receive PVC Exterior Trim,1
6251,13152,Marlin Chase,2710,medium,768496.0,6781,6781 Receive Column Wrap/Flower Bx/Pediment,1
6252,13152,Marlin Chase,2710,medium,768496.0,6820,6820 Receive Deck Skirting,1
6253,13137,Marlin Chase,2330,medium,637264.0,6860,6860 Siding Installation,5
6254,13113,Marlin Chase,2814,medium,750956.0,7220,7220 Install Deck Skirting/Flower Boxes,1
6255,13140,Marlin Chase,2824,medium,766881.0,7300,7300 Receive Interior Trim,1
6256,13140,Marlin Chase,2824,medium,766881.0,7304,7304 Receive Goodie Box,1
6257,13140,Marlin Chase,2824,medium,766881.0,7700,7700 Receive Interior Doors,1
6258,13032,Welches Pond,2812,medium,643995.0,7860,7860 Install Interior Trim,2
6259,13140,Marlin Chase,2824,medium,766881.0,7862,7862 Receive Cabinet Hardware Allocation,1
6260,13140,Marlin Chase,2824,medium,766881.0,7866,7866 Receive Door Hardware,1
6261,13140,Marlin Chase,2824,medium,766881.0,7900,7900 Receive Cabinets Allocation,1
6262,13140,Marlin Chase,2824,medium,766881.0,7901,7901 Cabinet Delivery Charges,1
6263,13140,Marlin Chase,2824,medium,766881.0,7940,7940 Receive Vanity Tops,1
6264,13032,Welches Pond,2812,medium,643995.0,8260,8260 Install Interior Railing,1
6265,13175,Peninsula Lakes,2245,low,567645.0,8420,8420 1st Paint,1
6266,13465,Cardinal Grove,1764,medium,569722.0,9390,9390 Install Water Meter/Sewer Frame,1
6267,13032,Welches Pond,2812,medium,643995.0,9460,9460 Attic Insulation,1
6268,13145,Marlin Chase,3204,medium,841553.0,9460,9460 Attic Insulation,1
6269,12832,Peninsula,4562,high,1090397.0,9460,9460 Attic Insulation,1
6270,12993,Peninsula,5996,high,750956.0,9540,9540 Rec. GE Appliance Pkg1 Allocation,1
6271,13145,Marlin Chase,3204,medium,841553.0,9540,9540 Rec. GE Appliance Pkg1 Allocation,1
6272,12993,Peninsula,5996,high,750956.0,9541,9541 Receive N/S Appliance Pkg 1,1
6273,12993,Peninsula,5996,high,750956.0,9620,9620 Install Appliances,1
6274,13465,Cardinal Grove,1764,medium,569722.0,9900,9900 Water Lateral,1
6275,13465,Cardinal Grove,1764,medium,569722.0,9905,9905 Sewer Lateral,1
6276,13442,Walden,4633,medium,656370.0,9910,9910 Utility Grade,1
6277,12850,Peninsula,5715,high,750956.0,10820,10820 Settlement,1
6278,13360,Peninsula Lakes,3496,medium,575090.0,10940,10940 Framing Retainage,1
6279,13507,Welches Pond,2852,medium,845914.0,3,3 TRADES START,1
6280,13030,Peninsula,5546,high,1768191.0,3,3 TRADES START,1
6281,13423,Governors,2974,medium,884692.0,100,100 Framing DRAW 1,1
6282,13264,Welches Pond,3905,medium,915363.0,1190,1190 Capillary Break,1
6283,13520,Hailey's Glen,2792,medium,606920.0,1190,1190 Capillary Break,1
6284,13264,Welches Pond,3905,medium,915363.0,1195,1195 Pin Footings,1
6285,13468,Governors,2977,medium,869889.0,2344,2344 Meter Pit Install,1
6286,13468,Governors,2977,medium,869889.0,2700,2700 Pour Garage Slab,1
6287,13468,Governors,2977,medium,869889.0,3100,3100 Foundation Survey,1
6288,13423,Governors,2974,medium,884692.0,3820,3820 2nd Floor Wall Framing,1
6289,13281,Marlin Chase,3558,medium,786910.0,4020,4020 Set Trusses,1
6290,13507,Welches Pond,2852,medium,845914.0,4100,4100 Exterior Deck Framing,1
6291,13281,Marlin Chase,3558,medium,786910.0,4230,4230 Receive Housewrap/Flashing,1
6292,13144,Marlin Chase,3055,medium,740636.0,4461,4461 Install Gas Lateral,1
6293,13476,Durham Farms,4277,medium,750956.0,4582,4582 Install Temp Poly,1
6294,13507,Welches Pond,2852,medium,845914.0,4585,4585 Install Membrane Roofing,1
6295,12993,Peninsula,5996,high,750956.0,4590,4590 Install Metal Roofing,1
6296,13507,Welches Pond,2852,medium,845914.0,4591,4591 Install Metal Roof Flashing,1
6297,13477,Cardinal Grove,2589,medium,750956.0,4700,4700 Internal Framing Inspection,1
6298,13476,Durham Farms,4277,medium,750956.0,4701,4701 Frame Check,5
6299,13258,River Mill,3064,medium,670416.0,4980,4980 Plumbing Rough,11
6300,13507,Welches Pond,2852,medium,845914.0,5100,5100 HVAC Rough,2
6301,13030,Peninsula,5546,high,1768191.0,5100,5100 HVAC Rough,3
6302,13507,Welches Pond,2852,medium,845914.0,5120,5120 HVAC Set Furnace,1
6303,12920,Peninsula,4116,high,1454538.0,5177,5177 Electric Meter Connection,1
6304,13465,Cardinal Grove,1764,medium,569722.0,5740,5740 Install Gas Lines,1
6305,13477,Cardinal Grove,2589,medium,750956.0,5820,5820 Framing Inspection,1
6306,13465,Cardinal Grove,1764,medium,569722.0,5860,5860 Frame Stage Tour,1
6307,13088,Forest Hills,3580,medium,222544.0,5860,5860 Frame Stage Tour,1
6308,13339,Peninsula,5583,high,750956.0,5940,5940 Order Cabinets,1
6309,13339,Peninsula,5583,high,750956.0,5941,5941 Order Cabinet Hardware,1
6310,13360,Peninsula Lakes,3496,medium,575090.0,6180,6180 Install Insulation,1
6311,13120,Marsh Island,4291,medium,851477.0,6380,6380 Install Drywall,10
6312,13139,Marlin Chase,2554,medium,704067.0,6390,6390 Schedule Gas Meter,1
6313,13120,Marsh Island,4291,medium,851477.0,6620,6620 Receive Vinyl Siding,1
6314,13120,Marsh Island,4291,medium,851477.0,6700,6700 Receive Composite Ext Trim,1
6315,13120,Marsh Island,4291,medium,851477.0,6705,6705 Receive Trellis Material,1
6316,13120,Marsh Island,4291,medium,851477.0,6720,6720 Receive Siding Accents,1
6317,13120,Marsh Island,4291,medium,851477.0,6725,6725 Receive Shutters,1
6318,13120,Marsh Island,4291,medium,851477.0,6740,6740 Receive PVC Exterior Trim,1
6319,13120,Marsh Island,4291,medium,851477.0,6820,6820 Receive Deck Skirting,1
6320,13152,Marlin Chase,2710,medium,768496.0,6860,6860 Siding Installation,14
6321,13113,Marlin Chase,2814,medium,750956.0,7140,7140 Exterior Painting,1
6322,13175,Peninsula Lakes,2245,low,567645.0,7340,7340 Install Ceramic Tile,2
6323,13175,Peninsula Lakes,2245,low,567645.0,7350,7350 Install Shower Tile,3
6324,13137,Marlin Chase,2330,medium,637264.0,7350,7350 Install Shower Tile,13
6325,13175,Peninsula Lakes,2245,low,567645.0,7380,7380 Install Vinyl Floors,1
6326,13032,Welches Pond,2812,medium,643995.0,8300,8300 Install Cabinets,2
6327,13139,Marlin Chase,2554,medium,704067.0,8390,8390 Stone Interior Fireplace,5
6328,13138,Marlin Chase,3171,medium,859133.0,8465,8465 Install Tiled Backsplash,1
6329,13145,Marlin Chase,3204,medium,841553.0,8579,8579 Template Shower Enclosure,1
6330,12993,Peninsula,5996,high,750956.0,8579,8579 Template Shower Enclosure,1
6331,13113,Marlin Chase,2814,medium,750956.0,9820,9820 Install Gutters,1
6332,13465,Cardinal Grove,1764,medium,569722.0,9910,9910 Utility Grade,1
6333,12993,Peninsula,5996,high,750956.0,10460,10460 Drywall Touch Up,3
6334,13113,Marlin Chase,2814,medium,750956.0,10500,10500 Paint 2,3
6335,13145,Marlin Chase,3204,medium,841553.0,0,vancheck Check Vanity Tops/Windows for Damage,1
6336,13468,Governors,2977,medium,869889.0,2,2 FRAMING START,1
6337,13476,Durham Farms,4277,medium,750956.0,3,3 TRADES START,1
6338,13264,Welches Pond,3905,medium,915363.0,1580,1580 Form Foundation Walls,1
6339,13520,Hailey's Glen,2792,medium,606920.0,1580,1580 Form Foundation Walls,1
6340,13264,Welches Pond,3905,medium,915363.0,1820,1820 Foundation Wall Inspection,1
6341,13520,Hailey's Glen,2792,medium,606920.0,1820,1820 Foundation Wall Inspection,1
6342,13264,Welches Pond,3905,medium,915363.0,1860,1860 Foundation Wall Pour,1
6343,13520,Hailey's Glen,2792,medium,606920.0,1860,1860 Foundation Wall Pour,1
6344,13496,Hailey's Glen,3443,medium,316917.0,2260,2260 Crawl Stone/Sand,1
6345,13496,Hailey's Glen,3443,medium,316917.0,2340,2340 Backfill & Compact,1
6346,13485,Peninsula,4241,medium,706147.0,2340,2340 Backfill & Compact,1
6347,13468,Governors,2977,medium,869889.0,2440,2440 Receive Steel,1
6348,13468,Governors,2977,medium,869889.0,2460,2460 Receive Lumber Drop #1,1
6349,13468,Governors,2977,medium,869889.0,2540,2540 Receive 1st Floor Joists,1
6350,13468,Governors,2977,medium,869889.0,3540,3540 Receive Lumber Drop #2,1
6351,13468,Governors,2977,medium,869889.0,3740,3740 Receive 2nd Floor Joists,1
6352,13468,Governors,2977,medium,869889.0,3900,3900 Receive Lumber Drop #3,1
6353,13397,Peninsula,5533,high,750956.0,3940,3940 3rd Floor Deck Framing,1
6354,13397,Peninsula,5533,high,750956.0,3980,3980 3rd Floor Wall Framing,2
6355,13423,Governors,2974,medium,884692.0,4020,4020 Set Trusses,3
6356,13349,Peninsula Lakes,2188,medium,442826.0,4100,4100 Exterior Deck Framing,1
6357,13423,Governors,2974,medium,884692.0,4230,4230 Receive Housewrap/Flashing,1
6358,13349,Peninsula Lakes,2188,medium,442826.0,4260,4260 Receive Windows,1
6359,13394,Peninsula Lakes,2154,medium,474879.0,4260,4260 Receive Windows,1
6360,13394,Peninsula Lakes,2154,medium,474879.0,4300,4300 Receive Window/Door Flashings,1
6361,13349,Peninsula Lakes,2188,medium,442826.0,4300,4300 Receive Window/Door Flashings,1
6362,13349,Peninsula Lakes,2188,medium,442826.0,4340,4340 Receive Exterior Doors,1
6363,13394,Peninsula Lakes,2154,medium,474879.0,4340,4340 Receive Exterior Doors,1
6364,13501,Hailey's Glen,2736,medium,694771.0,4380,4380 Roof Sheathing,2
6365,13281,Marlin Chase,3558,medium,786910.0,4380,4380 Roof Sheathing,2
6366,13465,Cardinal Grove,1764,medium,569722.0,4461,4461 Install Gas Lateral,1
6367,13138,Marlin Chase,3171,medium,859133.0,4461,4461 Install Gas Lateral,1
6368,13035,Forest Hills,4024,medium,816522.0,4591,4591 Install Metal Roof Flashing,1
6369,13392,Marsh Island,2795,medium,771707.0,4701,4701 Frame Check,1
6370,13392,Marsh Island,2795,medium,771707.0,4775,4775 Receive Hardwood Stairs,1
6371,13394,Peninsula Lakes,2154,medium,474879.0,4777,4777 Receive Box Stairs,1
6372,13471,Cardinal Grove,2233,medium,517387.0,4980,4980 Plumbing Rough,2
6373,13175,Peninsula Lakes,2245,low,567645.0,4981,4981 Deliver Sinks,1
6374,13476,Durham Farms,4277,medium,750956.0,5100,5100 HVAC Rough,5
6375,13476,Durham Farms,4277,medium,750956.0,5120,5120 HVAC Set Furnace,1
6376,13392,Marsh Island,2795,medium,771707.0,5120,5120 HVAC Set Furnace,1
6377,13091,Marlin Chase,2591,medium,562928.0,5180,5180 Electric Rough,4
6378,13465,Cardinal Grove,1764,medium,569722.0,5180,5180 Electric Rough,3
6379,13112,Marlin Chase,3171,medium,634940.0,5260,5260 Mechanical Rough Inspection,1
6380,13112,Marlin Chase,3171,medium,634940.0,5300,5300 Municipal Electric Inspection,1
6381,13112,Marlin Chase,3171,medium,634940.0,5580,5580 Structured Wiring Rough,1
6382,13088,Forest Hills,3580,medium,222544.0,5580,5580 Structured Wiring Rough,1
6383,13277,Mosaic,1704,medium,561869.0,5580,5580 Structured Wiring Rough,1
6384,13091,Marlin Chase,2591,medium,562928.0,5740,5740 Install Gas Lines,1
6385,13091,Marlin Chase,2591,medium,562928.0,5860,5860 Frame Stage Tour,1
6386,13360,Peninsula Lakes,3496,medium,575090.0,6300,6300 Energy Inspection,1
6387,13401,Welches Pond,2927,medium,731557.0,6340,6340 Install Overhead Door,34
6388,12832,Peninsula,4562,high,1090397.0,6340,6340 Install Overhead Door,1
6389,13360,Peninsula Lakes,3496,medium,575090.0,6345,6345 Stock Drywall,1
6390,13120,Marsh Island,4291,medium,851477.0,6860,6860 Siding Installation,10
6391,13138,Marlin Chase,3171,medium,859133.0,7180,7180 Install Exterior Railings,5
6392,13175,Peninsula Lakes,2245,low,567645.0,7300,7300 Receive Interior Trim,1
6393,13175,Peninsula Lakes,2245,low,567645.0,7304,7304 Receive Goodie Box,1
6394,13175,Peninsula Lakes,2245,low,567645.0,7700,7700 Receive Interior Doors,1
6395,13140,Marlin Chase,2824,medium,766881.0,7860,7860 Install Interior Trim,2
6396,13175,Peninsula Lakes,2245,low,567645.0,7862,7862 Receive Cabinet Hardware Allocation,1
6397,13175,Peninsula Lakes,2245,low,567645.0,7866,7866 Receive Door Hardware,1
6398,13175,Peninsula Lakes,2245,low,567645.0,7900,7900 Receive Cabinets Allocation,1
6399,13175,Peninsula Lakes,2245,low,567645.0,7901,7901 Cabinet Delivery Charges,1
6400,13175,Peninsula Lakes,2245,low,567645.0,7940,7940 Receive Vanity Tops,1
6401,13137,Marlin Chase,2330,medium,637264.0,7940,7940 Receive Vanity Tops,1
6402,13175,Peninsula Lakes,2245,low,567645.0,8020,8020 Receive Interior Railing,1
6403,13140,Marlin Chase,2824,medium,766881.0,8300,8300 Install Cabinets,2
6404,12832,Peninsula,4562,high,1090397.0,8420,8420 1st Paint,1
6405,13401,Welches Pond,2927,medium,731557.0,8420,8420 1st Paint,1
6406,13471,Cardinal Grove,2233,medium,517387.0,8820,8820 Schedule Irrigation Well,1
6407,13139,Marlin Chase,2554,medium,704067.0,8920,8920 Install Water Heater/1st Trim,-5
6408,13101,Marlin Chase,2461,medium,682900.0,9020,9020 Electric Trim,4
6409,13136,Marlin Chase,3170,medium,806102.0,10340,10340 Install Leadwalk & Comm. Sidewalk,1
6410,13136,Marlin Chase,3170,medium,806102.0,10345,10345 Pour Concrete Steps,1
6411,13035,Forest Hills,4024,medium,816522.0,10940,10940 Framing Retainage,1
6412,13477,Cardinal Grove,2589,medium,750956.0,10940,10940 Framing Retainage,1
6413,13164,Welches Pond,4497,medium,1024665.0,0,00000 START,1
6414,13137,Marlin Chase,2330,medium,637264.0,0,vancheck Check Vanity Tops/Windows for Damage,1
6415,13113,Marlin Chase,2814,medium,750956.0,0,vancheck Check Vanity Tops/Windows for Damage,1
6416,13164,Welches Pond,4497,medium,1024665.0,1,1 START  CONSTRUCTION,1
6417,13164,Welches Pond,4497,medium,1024665.0,252,252 Site Plan,1
6418,13164,Welches Pond,4497,medium,1024665.0,260,260 Plan Review/Permit Allocation,0
6419,13164,Welches Pond,4497,medium,1024665.0,900,900 Bldg Stakeout,1
6420,13164,Welches Pond,4497,medium,1024665.0,901,901 Engineering Allocation,0
6421,13349,Peninsula Lakes,2188,medium,442826.0,980,980 Install Silt Fence,1
6422,13164,Welches Pond,4497,medium,1024665.0,980,980 Install Silt Fence,1
6423,13394,Peninsula Lakes,2154,medium,474879.0,980,980 Install Silt Fence,1
6424,13164,Welches Pond,4497,medium,1024665.0,1020,1020 Install Construction Entrance,1
6425,13164,Welches Pond,4497,medium,1024665.0,1780,1780 Order Steel,1
6426,13264,Welches Pond,3905,medium,915363.0,1900,1900 Strip Foundation Forms,1
6427,13520,Hailey's Glen,2792,medium,606920.0,1900,1900 Strip Foundation Forms,1
6428,13164,Welches Pond,4497,medium,1024665.0,2020,2020 Install Underground Plumbing,0
6429,13503,Marsh Island,4307,medium,892519.0,2140,2140 Underground Plumbing Inspection,1
6430,13485,Peninsula,4241,medium,706147.0,2140,2140 Underground Plumbing Inspection,1
6431,13164,Welches Pond,4497,medium,1024665.0,2230,2230 Receive Dumpster Allocation,1
6432,13164,Welches Pond,4497,medium,1024665.0,2240,2240 Receive Portable Toilet Allocation,1
6433,13503,Marsh Island,4307,medium,892519.0,2340,2340 Backfill & Compact,1
6434,13496,Hailey's Glen,3443,medium,316917.0,2344,2344 Meter Pit Install,1
6435,13485,Peninsula,4241,medium,706147.0,2380,2380 Pour Basement Slab,2
6436,13496,Hailey's Glen,3443,medium,316917.0,2700,2700 Pour Garage Slab,1
6437,13277,Mosaic,1704,medium,561869.0,3020,3020 Termite & Pest PreTreatment,1
6438,13496,Hailey's Glen,3443,medium,316917.0,3100,3100 Foundation Survey,1
6439,13485,Peninsula,4241,medium,706147.0,3100,3100 Foundation Survey,1
6440,13468,Governors,2977,medium,869889.0,3300,3300 1st Floor Deck Framing,1
6441,13468,Governors,2977,medium,869889.0,4070,4070 Receive Exterior Deck Material,1
6442,13397,Peninsula,5533,high,750956.0,4230,4230 Receive Housewrap/Flashing,1
6443,13137,Marlin Chase,2330,medium,637264.0,4461,4461 Install Gas Lateral,1
6444,13394,Peninsula Lakes,2154,medium,474879.0,4540,4540 Install Windows,1
6445,13349,Peninsula Lakes,2188,medium,442826.0,4540,4540 Install Windows,1
6446,13349,Peninsula Lakes,2188,medium,442826.0,4580,4580 Install Roofing,2
6447,13394,Peninsula Lakes,2154,medium,474879.0,4580,4580 Install Roofing,2
6448,13476,Durham Farms,4277,medium,750956.0,4585,4585 Install Membrane Roofing,24
6449,13476,Durham Farms,4277,medium,750956.0,4591,4591 Install Metal Roof Flashing,8
6450,13091,Marlin Chase,2591,medium,562928.0,4591,4591 Install Metal Roof Flashing,1
6451,13088,Forest Hills,3580,medium,222544.0,4591,4591 Install Metal Roof Flashing,4
6452,13278,Mosaic,2320,medium,818814.0,4700,4700 Internal Framing Inspection,1
6453,13349,Peninsula Lakes,2188,medium,442826.0,4701,4701 Frame Check,1
6454,13394,Peninsula Lakes,2154,medium,474879.0,4701,4701 Frame Check,1
6455,13507,Welches Pond,2852,medium,845914.0,4940,4940 Install Fireplace,3
6456,13507,Welches Pond,2852,medium,845914.0,4980,4980 Plumbing Rough,2
6457,13253,River Mill,2912,medium,692624.0,5180,5180 Electric Rough,4
6458,13442,Walden,4633,medium,656370.0,5220,5220 Solar Rough,4
6459,13442,Walden,4633,medium,656370.0,5260,5260 Mechanical Rough Inspection,1
6460,13088,Forest Hills,3580,medium,222544.0,5300,5300 Municipal Electric Inspection,1
6461,13442,Walden,4633,medium,656370.0,5580,5580 Structured Wiring Rough,1
6462,13253,River Mill,2912,medium,692624.0,5740,5740 Install Gas Lines,1
6463,13392,Marsh Island,2795,medium,771707.0,5825,5825 Frame Punch,1
6464,13277,Mosaic,1704,medium,561869.0,5900,5900 Air Seal,1
6465,13112,Marlin Chase,3171,medium,634940.0,5900,5900 Air Seal,1
6466,13035,Forest Hills,4024,medium,816522.0,6300,6300 Energy Inspection,2
6467,13035,Forest Hills,4024,medium,816522.0,6305,6305 Energy Certification,1
6468,13360,Peninsula Lakes,3496,medium,575090.0,6380,6380 Install Drywall,9
6469,13138,Marlin Chase,3171,medium,859133.0,6390,6390 Schedule Gas Meter,1
6470,13465,Cardinal Grove,1764,medium,569722.0,6390,6390 Schedule Gas Meter,1
6471,13360,Peninsula Lakes,3496,medium,575090.0,6620,6620 Receive Vinyl Siding,1
6472,13360,Peninsula Lakes,3496,medium,575090.0,6700,6700 Receive Composite Ext Trim,1
6473,13360,Peninsula Lakes,3496,medium,575090.0,6720,6720 Receive Siding Accents,1
6474,13360,Peninsula Lakes,3496,medium,575090.0,6725,6725 Receive Shutters,1
6475,13360,Peninsula Lakes,3496,medium,575090.0,6740,6740 Receive PVC Exterior Trim,1
6476,13360,Peninsula Lakes,3496,medium,575090.0,6820,6820 Receive Deck Skirting,1
6477,13032,Welches Pond,2812,medium,643995.0,6862,6862 Trellis Construction,1
6478,13139,Marlin Chase,2554,medium,704067.0,7180,7180 Install Exterior Railings,1
6479,13401,Welches Pond,2927,medium,731557.0,7340,7340 Install Ceramic Tile,18
6480,12832,Peninsula,4562,high,1090397.0,7340,7340 Install Ceramic Tile,4
6481,12832,Peninsula,4562,high,1090397.0,7350,7350 Install Shower Tile,3
6482,13401,Welches Pond,2927,medium,731557.0,7350,7350 Install Shower Tile,5
6483,13175,Peninsula Lakes,2245,low,567645.0,7860,7860 Install Interior Trim,2
6484,13401,Welches Pond,2927,medium,731557.0,8020,8020 Receive Interior Railing,1
6485,12832,Peninsula,4562,high,1090397.0,8020,8020 Receive Interior Railing,1
6486,12832,Peninsula,4562,high,1090397.0,8220,8220 Install Fireplace Surround/Mantel,1
6487,13401,Welches Pond,2927,medium,731557.0,8220,8220 Install Fireplace Surround/Mantel,8
6488,13032,Welches Pond,2812,medium,643995.0,8380,8380 Template Countertops,1
6489,13145,Marlin Chase,3204,medium,841553.0,8460,8460 Install Countertops,1
6490,13113,Marlin Chase,2814,medium,750956.0,8460,8460 Install Countertops,1
6491,13164,Welches Pond,4497,medium,1024665.0,8500,8500 Order Appliance Pkg 1,1
6492,13113,Marlin Chase,2814,medium,750956.0,8579,8579 Template Shower Enclosure,1
6493,13507,Welches Pond,2852,medium,845914.0,8820,8820 Schedule Irrigation Well,1
6494,13471,Cardinal Grove,2233,medium,517387.0,9390,9390 Install Water Meter/Sewer Frame,1
6495,13137,Marlin Chase,2330,medium,637264.0,9540,9540 Rec. GE Appliance Pkg1 Allocation,1
6496,13140,Marlin Chase,2824,medium,766881.0,9620,9620 Install Appliances,1
6497,13164,Welches Pond,4497,medium,1024665.0,9750,9750 Order Appliance Pkg 2,1
6498,13164,Welches Pond,4497,medium,1024665.0,9860,9860 Final Utility Connection,0
6499,13471,Cardinal Grove,2233,medium,517387.0,9900,9900 Water Lateral,1
6500,13471,Cardinal Grove,2233,medium,517387.0,9905,9905 Sewer Lateral,1
6501,13139,Marlin Chase,2554,medium,704067.0,10345,10345 Pour Concrete Steps,1
6502,13137,Marlin Chase,2330,medium,637264.0,10500,10500 Paint 2,3
6503,13442,Walden,4633,medium,656370.0,10940,10940 Framing Retainage,1
6504,13496,Hailey's Glen,3443,medium,316917.0,2,2 FRAMING START,1
6505,13392,Marsh Island,2795,medium,771707.0,3,3 TRADES START,1
6506,13394,Peninsula Lakes,2154,medium,474879.0,140,140 Framing DRAW 2,1
6507,13349,Peninsula Lakes,2188,medium,442826.0,140,140 Framing DRAW 2,1
6508,13164,Welches Pond,4497,medium,1024665.0,1060,1060 Foundation Excavation,1
6509,13264,Welches Pond,3905,medium,915363.0,1940,1940 Install Perimeter Drain/Croc,1
6510,13520,Hailey's Glen,2792,medium,606920.0,1940,1940 Install Perimeter Drain/Croc,1
6511,13264,Welches Pond,3905,medium,915363.0,2060,2060 Waterproof Foundation Walls,1
6512,13520,Hailey's Glen,2792,medium,606920.0,2060,2060 Waterproof Foundation Walls,1
6513,13503,Marsh Island,4307,medium,892519.0,2344,2344 Meter Pit Install,1
6514,13503,Marsh Island,4307,medium,892519.0,2380,2380 Pour Basement Slab,2
6515,13496,Hailey's Glen,3443,medium,316917.0,2440,2440 Receive Steel,1
6516,13496,Hailey's Glen,3443,medium,316917.0,2460,2460 Receive Lumber Drop #1,1
6517,13496,Hailey's Glen,3443,medium,316917.0,2540,2540 Receive 1st Floor Joists,1
6518,13485,Peninsula,4241,medium,706147.0,2700,2700 Pour Garage Slab,1
6519,13496,Hailey's Glen,3443,medium,316917.0,3020,3020 Termite & Pest PreTreatment,1
6520,13503,Marsh Island,4307,medium,892519.0,3100,3100 Foundation Survey,1
6521,13468,Governors,2977,medium,869889.0,3380,3380 1st Floor Wall Framing,1
6522,13496,Hailey's Glen,3443,medium,316917.0,3540,3540 Receive Lumber Drop #2,1
6523,13468,Governors,2977,medium,869889.0,3700,3700 Receive Trusses,1
6524,13496,Hailey's Glen,3443,medium,316917.0,3740,3740 Receive 2nd Floor Joists,1
6525,13496,Hailey's Glen,3443,medium,316917.0,3900,3900 Receive Lumber Drop #3,1
6526,13397,Peninsula,5533,high,750956.0,4020,4020 Set Trusses,3
6527,13281,Marlin Chase,3558,medium,786910.0,4100,4100 Exterior Deck Framing,1
6528,13501,Hailey's Glen,2736,medium,694771.0,4100,4100 Exterior Deck Framing,1
6529,13501,Hailey's Glen,2736,medium,694771.0,4260,4260 Receive Windows,1
6530,13281,Marlin Chase,3558,medium,786910.0,4260,4260 Receive Windows,1
6531,13281,Marlin Chase,3558,medium,786910.0,4300,4300 Receive Window/Door Flashings,1
6532,13501,Hailey's Glen,2736,medium,694771.0,4300,4300 Receive Window/Door Flashings,1
6533,13501,Hailey's Glen,2736,medium,694771.0,4340,4340 Receive Exterior Doors,1
6534,13281,Marlin Chase,3558,medium,786910.0,4340,4340 Receive Exterior Doors,1
6535,13423,Governors,2974,medium,884692.0,4380,4380 Roof Sheathing,3
6536,13423,Governors,2974,medium,884692.0,4390,4390 Receive Roofing Material,1
6537,13501,Hailey's Glen,2736,medium,694771.0,4390,4390 Receive Roofing Material,1
6538,13281,Marlin Chase,3558,medium,786910.0,4390,4390 Receive Roofing Material,1
6539,13468,Governors,2977,medium,869889.0,4460,4460 Schedule Gas Lateral Contractor,1
6540,13423,Governors,2974,medium,884692.0,4580,4580 Install Roofing,2
6541,13388,Marsh Island,5848,high,750956.0,4665,4665 Elevator Rough,7
6542,13277,Mosaic,1704,medium,561869.0,4700,4700 Internal Framing Inspection,1
6543,13112,Marlin Chase,3171,medium,634940.0,4700,4700 Internal Framing Inspection,1
6544,13349,Peninsula Lakes,2188,medium,442826.0,4775,4775 Receive Hardwood Stairs,1
6545,13281,Marlin Chase,3558,medium,786910.0,4775,4775 Receive Hardwood Stairs,1
6546,13030,Peninsula,5546,high,1768191.0,4940,4940 Install Fireplace,1
6547,13476,Durham Farms,4277,medium,750956.0,4975,4975 Receive Tubs/Showers,3
6548,13030,Peninsula,5546,high,1768191.0,4980,4980 Plumbing Rough,3
6549,12832,Peninsula,4562,high,1090397.0,4981,4981 Deliver Sinks,1
6550,13401,Welches Pond,2927,medium,731557.0,4981,4981 Deliver Sinks,1
6551,13392,Marsh Island,2795,medium,771707.0,5100,5100 HVAC Rough,2
6552,13471,Cardinal Grove,2233,medium,517387.0,5180,5180 Electric Rough,3
6553,13465,Cardinal Grove,1764,medium,569722.0,5260,5260 Mechanical Rough Inspection,1
6554,13442,Walden,4633,medium,656370.0,5300,5300 Municipal Electric Inspection,1
6555,13465,Cardinal Grove,1764,medium,569722.0,5580,5580 Structured Wiring Rough,1
6556,13471,Cardinal Grove,2233,medium,517387.0,5740,5740 Install Gas Lines,1
6557,13112,Marlin Chase,3171,medium,634940.0,5820,5820 Framing Inspection,1
6558,13349,Peninsula Lakes,2188,medium,442826.0,5825,5825 Frame Punch,1
6559,13394,Peninsula Lakes,2154,medium,474879.0,5825,5825 Frame Punch,1
6560,13476,Durham Farms,4277,medium,750956.0,5860,5860 Frame Stage Tour,1
6561,13471,Cardinal Grove,2233,medium,517387.0,5860,5860 Frame Stage Tour,1
6562,13442,Walden,4633,medium,656370.0,5900,5900 Air Seal,2
6563,13477,Cardinal Grove,2589,medium,750956.0,6180,6180 Install Insulation,2
6564,13175,Peninsula Lakes,2245,low,567645.0,6391,6391 Install Gas Meter,1
6565,13360,Peninsula Lakes,3496,medium,575090.0,6860,6860 Siding Installation,5
6566,13030,Peninsula,5546,high,1768191.0,6900,6900 Schedule Septic Installation,1
6567,12832,Peninsula,4562,high,1090397.0,7300,7300 Receive Interior Trim,1
6568,13401,Welches Pond,2927,medium,731557.0,7300,7300 Receive Interior Trim,1
6569,13401,Welches Pond,2927,medium,731557.0,7304,7304 Receive Goodie Box,1
6570,12832,Peninsula,4562,high,1090397.0,7304,7304 Receive Goodie Box,1
6571,12832,Peninsula,4562,high,1090397.0,7700,7700 Receive Interior Doors,1
6572,13401,Welches Pond,2927,medium,731557.0,7700,7700 Receive Interior Doors,1
6573,13401,Welches Pond,2927,medium,731557.0,7862,7862 Receive Cabinet Hardware Allocation,1
6574,12832,Peninsula,4562,high,1090397.0,7862,7862 Receive Cabinet Hardware Allocation,1
6575,12832,Peninsula,4562,high,1090397.0,7866,7866 Receive Door Hardware,1
6576,13401,Welches Pond,2927,medium,731557.0,7866,7866 Receive Door Hardware,1
6577,13401,Welches Pond,2927,medium,731557.0,7900,7900 Receive Cabinets Allocation,1
6578,12832,Peninsula,4562,high,1090397.0,7900,7900 Receive Cabinets Allocation,1
6579,12832,Peninsula,4562,high,1090397.0,7901,7901 Cabinet Delivery Charges,1
6580,13401,Welches Pond,2927,medium,731557.0,7901,7901 Cabinet Delivery Charges,1
6581,13401,Welches Pond,2927,medium,731557.0,7940,7940 Receive Vanity Tops,1
6582,12832,Peninsula,4562,high,1090397.0,7940,7940 Receive Vanity Tops,1
6583,12832,Peninsula,4562,high,1090397.0,8260,8260 Install Interior Railing,1
6584,13401,Welches Pond,2927,medium,731557.0,8260,8260 Install Interior Railing,1
6585,13175,Peninsula Lakes,2245,low,567645.0,8300,8300 Install Cabinets,1
6586,13140,Marlin Chase,2824,medium,766881.0,8380,8380 Template Countertops,1
6587,13175,Peninsula Lakes,2245,low,567645.0,8579,8579 Template Shower Enclosure,1
6588,13032,Welches Pond,2812,medium,643995.0,8579,8579 Template Shower Enclosure,1
6589,13139,Marlin Chase,2554,medium,704067.0,9020,9020 Electric Trim,7
6590,13152,Marlin Chase,2710,medium,768496.0,9140,9140 2nd Stage Air Seal,1
6591,13144,Marlin Chase,3055,medium,740636.0,9140,9140 2nd Stage Air Seal,1
6592,13139,Marlin Chase,2554,medium,704067.0,9260,9260 Structured Wiring Trim,1
6593,13507,Welches Pond,2852,medium,845914.0,9390,9390 Install Water Meter/Sewer Frame,1
6594,13140,Marlin Chase,2824,medium,766881.0,9540,9540 Rec. GE Appliance Pkg1 Allocation,1
6595,12993,Peninsula,5996,high,750956.0,9820,9820 Install Gutters,1
6596,13507,Welches Pond,2852,medium,845914.0,9900,9900 Water Lateral,1
6597,13507,Welches Pond,2852,medium,845914.0,9905,9905 Sewer Lateral,1
6598,13471,Cardinal Grove,2233,medium,517387.0,9910,9910 Utility Grade,1
6599,13145,Marlin Chase,3204,medium,841553.0,10301,10301 Driveway Apron,1
6600,13145,Marlin Chase,3204,medium,841553.0,10340,10340 Install Leadwalk & Comm. Sidewalk,1
6601,13152,Marlin Chase,2710,medium,768496.0,10345,10345 Pour Concrete Steps,1
6602,13140,Marlin Chase,2824,medium,766881.0,10460,10460 Drywall Touch Up,2
6603,13032,Welches Pond,2812,medium,643995.0,10460,10460 Drywall Touch Up,2
6604,12993,Peninsula,5996,high,750956.0,10500,10500 Paint 2,3
6605,13099,Arbor-Lyn,2616,medium,381426.0,10888,10888 Release All Retainage,1
6606,13099,Arbor-Lyn,2616,medium,381426.0,11585,11585 Exterior Paint Retainage,1
6607,13099,Arbor-Lyn,2616,medium,381426.0,11980,11980 Sod Retainage,1
6608,13099,Arbor-Lyn,2616,medium,381426.0,12060,12060 Irrigation Retainage,1
6609,13099,Arbor-Lyn,2616,medium,381426.0,12100,12100 Shrub Retainage,1
6610,13099,Arbor-Lyn,2616,medium,381426.0,12180,12180 Driveway Retainage,1
6611,13099,Arbor-Lyn,2616,medium,381426.0,12180,12180.1 Driveway Top Coat Allocation,0
6612,13485,Peninsula,4241,medium,706147.0,2,2 FRAMING START,1
6613,13349,Peninsula Lakes,2188,medium,442826.0,3,3 TRADES START,1
6614,13394,Peninsula Lakes,2154,medium,474879.0,3,3 TRADES START,1
6615,13164,Welches Pond,4497,medium,1024665.0,1100,1100 Form Footings,1
6616,13164,Welches Pond,4497,medium,1024665.0,1140,1140 Footing Inspection,1
6617,13164,Welches Pond,4497,medium,1024665.0,1180,1180 Pour Footings,1
6618,13281,Marlin Chase,3558,medium,786910.0,2344,2344 Meter Pit Install,1
6619,13152,Marlin Chase,2710,medium,768496.0,2344,2344 Meter Pit Install,1
6620,13485,Peninsula,4241,medium,706147.0,2440,2440 Receive Steel,1
6621,13503,Marsh Island,4307,medium,892519.0,2460,2460 Receive Lumber Drop #1,1
6622,13485,Peninsula,4241,medium,706147.0,2460,2460 Receive Lumber Drop #1,1
6623,13485,Peninsula,4241,medium,706147.0,2540,2540 Receive 1st Floor Joists,1
6624,13503,Marsh Island,4307,medium,892519.0,2700,2700 Pour Garage Slab,1
6625,13264,Welches Pond,3905,medium,915363.0,3020,3020 Termite & Pest PreTreatment,1
6626,13520,Hailey's Glen,2792,medium,606920.0,3060,3060 Foundation Insulation-Crawl,1
6627,13496,Hailey's Glen,3443,medium,316917.0,3300,3300 1st Floor Deck Framing,1
6628,13503,Marsh Island,4307,medium,892519.0,3540,3540 Receive Lumber Drop #2,1
6629,13485,Peninsula,4241,medium,706147.0,3540,3540 Receive Lumber Drop #2,1
6630,13485,Peninsula,4241,medium,706147.0,3740,3740 Receive 2nd Floor Joists,1
6631,13468,Governors,2977,medium,869889.0,3780,3780 2nd Floor Deck Framing,1
6632,13485,Peninsula,4241,medium,706147.0,3900,3900 Receive Lumber Drop #3,1
6633,13496,Hailey's Glen,3443,medium,316917.0,4070,4070 Receive Exterior Deck Material,1
6634,13501,Hailey's Glen,2736,medium,694771.0,4071,4071 Receive Exterior Decking,1
6635,13423,Governors,2974,medium,884692.0,4260,4260 Receive Windows,1
6636,13423,Governors,2974,medium,884692.0,4300,4300 Receive Window/Door Flashings,1
6637,13423,Governors,2974,medium,884692.0,4340,4340 Receive Exterior Doors,1
6638,13471,Cardinal Grove,2233,medium,517387.0,4461,4461 Install Gas Lateral,1
6639,13281,Marlin Chase,3558,medium,786910.0,4540,4540 Install Windows,1
6640,13281,Marlin Chase,3558,medium,786910.0,4580,4580 Install Roofing,2
6641,13501,Hailey's Glen,2736,medium,694771.0,4580,4580 Install Roofing,2
6642,13137,Marlin Chase,2330,medium,637264.0,4590,4590 Install Metal Roofing,1
6643,13394,Peninsula Lakes,2154,medium,474879.0,4591,4591 Install Metal Roof Flashing,1
6644,13349,Peninsula Lakes,2188,medium,442826.0,4591,4591 Install Metal Roof Flashing,1
6645,13501,Hailey's Glen,2736,medium,694771.0,4701,4701 Frame Check,1
6646,13281,Marlin Chase,3558,medium,786910.0,4701,4701 Frame Check,1
6647,13423,Governors,2974,medium,884692.0,4775,4775 Receive Hardwood Stairs,1
6648,13476,Durham Farms,4277,medium,750956.0,4940,4940 Install Fireplace,5
6649,13476,Durham Farms,4277,medium,750956.0,4980,4980 Plumbing Rough,2
6650,13394,Peninsula Lakes,2154,medium,474879.0,5100,5100 HVAC Rough,2
6651,13349,Peninsula Lakes,2188,medium,442826.0,5100,5100 HVAC Rough,2
6652,13507,Welches Pond,2852,medium,845914.0,5180,5180 Electric Rough,3
6653,13091,Marlin Chase,2591,medium,562928.0,5260,5260 Mechanical Rough Inspection,1
6654,13465,Cardinal Grove,1764,medium,569722.0,5300,5300 Municipal Electric Inspection,1
6655,13091,Marlin Chase,2591,medium,562928.0,5580,5580 Structured Wiring Rough,1
6656,13507,Welches Pond,2852,medium,845914.0,5740,5740 Install Gas Lines,1
6657,13253,River Mill,2912,medium,692624.0,5860,5860 Frame Stage Tour,1
6658,13465,Cardinal Grove,1764,medium,569722.0,5900,5900 Air Seal,1
6659,13112,Marlin Chase,3171,medium,634940.0,6180,6180 Install Insulation,2
6660,13440,Marlin Chase,3067,medium,714189.0,6340,6340 Install Overhead Door,1
6661,13035,Forest Hills,4024,medium,816522.0,6345,6345 Stock Drywall,1
6662,13139,Marlin Chase,2554,medium,704067.0,6391,6391 Install Gas Meter,1
6663,13138,Marlin Chase,3171,medium,859133.0,6391,6391 Install Gas Meter,1
6664,13360,Peninsula Lakes,3496,medium,575090.0,6781,6781 Receive Column Wrap/Flower Bx/Pediment,1
6665,13137,Marlin Chase,2330,medium,637264.0,6884,6884 Measure Screen Porch Enclosure,1
6666,13137,Marlin Chase,2330,medium,637264.0,7180,7180 Install Exterior Railings,1
6667,13113,Marlin Chase,2814,medium,750956.0,7180,7180 Install Exterior Railings,1
6668,13138,Marlin Chase,3171,medium,859133.0,7220,7220 Install Deck Skirting/Flower Boxes,1
6669,13137,Marlin Chase,2330,medium,637264.0,7220,7220 Install Deck Skirting/Flower Boxes,1
6670,13401,Welches Pond,2927,medium,731557.0,7860,7860 Install Interior Trim,3
6671,13175,Peninsula Lakes,2245,low,567645.0,8380,8380 Template Countertops,1
6672,13137,Marlin Chase,2330,medium,637264.0,8460,8460 Install Countertops,1
6673,13138,Marlin Chase,3171,medium,859133.0,8920,8920 Install Water Heater/1st Trim,1
6674,13440,Marlin Chase,3067,medium,714189.0,9100,9100 HVAC Trim / Set Unit,1
6675,13139,Marlin Chase,2554,medium,704067.0,9100,9100 HVAC Trim / Set Unit,1
6676,13152,Marlin Chase,2710,medium,768496.0,9390,9390 Install Water Meter/Sewer Frame,1
6677,13112,Marlin Chase,3171,medium,634940.0,9390,9390 Install Water Meter/Sewer Frame,1
6678,13137,Marlin Chase,2330,medium,637264.0,9460,9460 Attic Insulation,1
6679,13032,Welches Pond,2812,medium,643995.0,9540,9540 Rec. GE Appliance Pkg1 Allocation,1
6680,13032,Welches Pond,2812,medium,643995.0,9620,9620 Install Appliances,1
6681,13137,Marlin Chase,2330,medium,637264.0,9620,9620 Install Appliances,1
6682,13101,Marlin Chase,2461,medium,682900.0,9700,9700 Install Hardwood Flooring,1
6683,13152,Marlin Chase,2710,medium,768496.0,9900,9900 Water Lateral,1
6684,13152,Marlin Chase,2710,medium,768496.0,9905,9905 Sewer Lateral,1
6685,13091,Marlin Chase,2591,medium,562928.0,9905,9905 Sewer Lateral,1
6686,13507,Welches Pond,2852,medium,845914.0,9910,9910 Utility Grade,1
6687,13020,Peninsula Lakes,2100,low,578095.0,10340,10340 Install Leadwalk & Comm. Sidewalk,1
6688,13090,Marsh Island,5603,high,1154185.0,10420,10420 Powerwash,1
6689,13175,Peninsula Lakes,2245,low,567645.0,10460,10460 Drywall Touch Up,2
6690,13112,Marlin Chase,3171,medium,634940.0,10940,10940 Framing Retainage,1
6691,13277,Mosaic,1704,medium,561869.0,10940,10940 Framing Retainage,1
6692,13529,Governors,1901,medium,787652.0,0,00000 START,1
6693,12993,Peninsula,5996,high,750956.0,0,vancheck Check Vanity Tops/Windows for Damage,1
6694,13032,Welches Pond,2812,medium,643995.0,0,vancheck Check Vanity Tops/Windows for Damage,1
6695,13529,Governors,1901,medium,787652.0,1,1 START  CONSTRUCTION,1
6696,13503,Marsh Island,4307,medium,892519.0,2,2 FRAMING START,1
6697,13468,Governors,2977,medium,869889.0,100,100 Framing DRAW 1,1
6698,13501,Hailey's Glen,2736,medium,694771.0,140,140 Framing DRAW 2,1
6699,13281,Marlin Chase,3558,medium,786910.0,140,140 Framing DRAW 2,1
6700,13529,Governors,1901,medium,787652.0,252,252 Site Plan,1
6701,13529,Governors,1901,medium,787652.0,260,260 Plan Review/Permit Allocation,0
6702,13529,Governors,1901,medium,787652.0,900,900 Bldg Stakeout,1
6703,13529,Governors,1901,medium,787652.0,901,901 Engineering Allocation,0
6704,13529,Governors,1901,medium,787652.0,980,980 Install Silt Fence,1
6705,13529,Governors,1901,medium,787652.0,1060,1060 Foundation Excavation,1
6706,13164,Welches Pond,4497,medium,1024665.0,1190,1190 Capillary Break,1
6707,13164,Welches Pond,4497,medium,1024665.0,1195,1195 Pin Footings,1
6708,13164,Welches Pond,4497,medium,1024665.0,1580,1580 Form Foundation Walls,1
6709,13529,Governors,1901,medium,787652.0,1780,1780 Order Steel,1
6710,13164,Welches Pond,4497,medium,1024665.0,1820,1820 Foundation Wall Inspection,1
6711,13164,Welches Pond,4497,medium,1024665.0,1860,1860 Foundation Wall Pour,1
6712,13264,Welches Pond,3905,medium,915363.0,2020,2020 Install Underground Plumbing,1
6713,13529,Governors,1901,medium,787652.0,2230,2230 Receive Dumpster Allocation,1
6714,13529,Governors,1901,medium,787652.0,2240,2240 Receive Portable Toilet Allocation,1
6715,13175,Peninsula Lakes,2245,low,567645.0,2344,2344 Meter Pit Install,1
6716,13503,Marsh Island,4307,medium,892519.0,2440,2440 Receive Steel,1
6717,13503,Marsh Island,4307,medium,892519.0,2540,2540 Receive 1st Floor Joists,1
6718,13520,Hailey's Glen,2792,medium,606920.0,3020,3020 Termite & Pest PreTreatment,1
6719,13253,River Mill,2912,medium,692624.0,3020,3020 Termite & Pest PreTreatment,1
6720,13485,Peninsula,4241,medium,706147.0,3300,3300 1st Floor Deck Framing,1
6721,13503,Marsh Island,4307,medium,892519.0,3380,3380 1st Floor Wall Framing,2
6722,13496,Hailey's Glen,3443,medium,316917.0,3380,3380 1st Floor Wall Framing,1
6723,13496,Hailey's Glen,3443,medium,316917.0,3700,3700 Receive Trusses,1
6724,13503,Marsh Island,4307,medium,892519.0,3740,3740 Receive 2nd Floor Joists,1
6725,13468,Governors,2977,medium,869889.0,3820,3820 2nd Floor Wall Framing,1
6726,13485,Peninsula,4241,medium,706147.0,4070,4070 Receive Exterior Deck Material,1
6727,13339,Peninsula,5583,high,750956.0,4300,4300 Receive Window/Door Flashings,1
6728,13339,Peninsula,5583,high,750956.0,4340,4340 Receive Exterior Doors,1
6729,13496,Hailey's Glen,3443,medium,316917.0,4460,4460 Schedule Gas Lateral Contractor,1
6730,13397,Peninsula,5533,high,750956.0,4460,4460 Schedule Gas Lateral Contractor,1
6731,13030,Peninsula,5546,high,1768191.0,4461,4461 Install Gas Lateral,1
6732,13507,Welches Pond,2852,medium,845914.0,4461,4461 Install Gas Lateral,1
6733,13501,Hailey's Glen,2736,medium,694771.0,4582,4582 Install Temp Poly,1
6734,13281,Marlin Chase,3558,medium,786910.0,4582,4582 Install Temp Poly,1
6735,13030,Peninsula,5546,high,1768191.0,4591,4591 Install Metal Roof Flashing,1
6736,13423,Governors,2974,medium,884692.0,4591,4591 Install Metal Roof Flashing,1
6737,13442,Walden,4633,medium,656370.0,4700,4700 Internal Framing Inspection,1
6738,13465,Cardinal Grove,1764,medium,569722.0,4700,4700 Internal Framing Inspection,1
6739,13501,Hailey's Glen,2736,medium,694771.0,4775,4775 Receive Hardwood Stairs,1
6740,13392,Marsh Island,2795,medium,771707.0,4940,4940 Install Fireplace,1
6741,13392,Marsh Island,2795,medium,771707.0,4980,4980 Plumbing Rough,2
6742,13476,Durham Farms,4277,medium,750956.0,5180,5180 Electric Rough,4
6743,13278,Mosaic,2320,medium,818814.0,5260,5260 Mechanical Rough Inspection,1
6744,13253,River Mill,2912,medium,692624.0,5260,5260 Mechanical Rough Inspection,1
6745,13091,Marlin Chase,2591,medium,562928.0,5300,5300 Municipal Electric Inspection,1
6746,13278,Mosaic,2320,medium,818814.0,5300,5300 Municipal Electric Inspection,1
6747,13253,River Mill,2912,medium,692624.0,5580,5580 Structured Wiring Rough,1
6748,13442,Walden,4633,medium,656370.0,5820,5820 Framing Inspection,1
6749,13465,Cardinal Grove,1764,medium,569722.0,5820,5820 Framing Inspection,1
6750,13278,Mosaic,2320,medium,818814.0,5820,5820 Framing Inspection,1
6751,13281,Marlin Chase,3558,medium,786910.0,5825,5825 Frame Punch,1
6752,13476,Durham Farms,4277,medium,750956.0,5825,5825 Frame Punch,7
6753,13501,Hailey's Glen,2736,medium,694771.0,5825,5825 Frame Punch,1
6754,13091,Marlin Chase,2591,medium,562928.0,5900,5900 Air Seal,1
6755,13388,Marsh Island,5848,high,750956.0,5900,5900 Air Seal,1
6756,13477,Cardinal Grove,2589,medium,750956.0,6300,6300 Energy Inspection,1
6757,13477,Cardinal Grove,2589,medium,750956.0,6345,6345 Stock Drywall,1
6758,13035,Forest Hills,4024,medium,816522.0,6380,6380 Install Drywall,8
6759,13471,Cardinal Grove,2233,medium,517387.0,6390,6390 Schedule Gas Meter,1
6760,13035,Forest Hills,4024,medium,816522.0,6705,6705 Receive Trellis Material,31
6761,13035,Forest Hills,4024,medium,816522.0,6781,6781 Receive Column Wrap/Flower Bx/Pediment,23
6762,12920,Peninsula,4116,high,1454538.0,6884,6884 Measure Screen Porch Enclosure,1
6763,13138,Marlin Chase,3171,medium,859133.0,6885,6885 Install Screen Porch Enclosure,1
6764,12993,Peninsula,5996,high,750956.0,7180,7180 Install Exterior Railings,2
6765,12920,Peninsula,4116,high,1454538.0,7220,7220 Install Deck Skirting/Flower Boxes,1
6766,13101,Marlin Chase,2461,medium,682900.0,7825,7825 Crawl Poly,1
6767,13529,Governors,1901,medium,787652.0,8500,8500 Order Appliance Pkg 1,1
6768,12832,Peninsula,4562,high,1090397.0,8579,8579 Template Shower Enclosure,1
6769,13392,Marsh Island,2795,medium,771707.0,8820,8820 Schedule Irrigation Well,1
6770,13145,Marlin Chase,3204,medium,841553.0,8920,8920 Install Water Heater/1st Trim,1
6771,13145,Marlin Chase,3204,medium,841553.0,9020,9020 Electric Trim,5
6772,13137,Marlin Chase,2330,medium,637264.0,9020,9020 Electric Trim,2
6773,13101,Marlin Chase,2461,medium,682900.0,9100,9100 HVAC Trim / Set Unit,1
6774,13136,Marlin Chase,3170,medium,806102.0,9100,9100 HVAC Trim / Set Unit,1
6775,12920,Peninsula,4116,high,1454538.0,9140,9140 2nd Stage Air Seal,1
6776,13137,Marlin Chase,2330,medium,637264.0,9260,9260 Structured Wiring Trim,1
6777,13091,Marlin Chase,2591,medium,562928.0,9390,9390 Install Water Meter/Sewer Frame,1
6778,13030,Peninsula,5546,high,1768191.0,9390,9390 Install Water Meter/Sewer Frame,1
6779,13175,Peninsula Lakes,2245,low,567645.0,9540,9540 Rec. GE Appliance Pkg1 Allocation,1
6780,13529,Governors,1901,medium,787652.0,9750,9750 Order Appliance Pkg 2,1
6781,13030,Peninsula,5546,high,1768191.0,9900,9900 Water Lateral,1
6782,13112,Marlin Chase,3171,medium,634940.0,9900,9900 Water Lateral,1
6783,13091,Marlin Chase,2591,medium,562928.0,9900,9900 Water Lateral,1
6784,13088,Forest Hills,3580,medium,222544.0,9900,9900 Water Lateral,1
6785,13088,Forest Hills,3580,medium,222544.0,9905,9905 Sewer Lateral,1
6786,13030,Peninsula,5546,high,1768191.0,9905,9905 Sewer Lateral,1
6787,13112,Marlin Chase,3171,medium,634940.0,9905,9905 Sewer Lateral,1
6788,13152,Marlin Chase,2710,medium,768496.0,9910,9910 Utility Grade,1
6789,13091,Marlin Chase,2591,medium,562928.0,9910,9910 Utility Grade,1
6790,13440,Marlin Chase,3067,medium,714189.0,10300,10300 Install Driveway,1
6791,13137,Marlin Chase,2330,medium,637264.0,10301,10301 Driveway Apron,1
6792,13137,Marlin Chase,2330,medium,637264.0,10340,10340 Install Leadwalk & Comm. Sidewalk,28
6793,13140,Marlin Chase,2824,medium,766881.0,10345,10345 Pour Concrete Steps,1
6794,13113,Marlin Chase,2814,medium,750956.0,10345,10345 Pour Concrete Steps,1
6795,13140,Marlin Chase,2824,medium,766881.0,10500,10500 Paint 2,3
6796,13032,Welches Pond,2812,medium,643995.0,10500,10500 Paint 2,1
6797,13495,Welches Pond,2650,medium,674167.0,0,00000 START,1
6798,13462,Peninsula,4787,high,1490269.0,0,00000 START,1
6799,13495,Welches Pond,2650,medium,674167.0,1,1 START  CONSTRUCTION,1
6800,13462,Peninsula,4787,high,1490269.0,1,1 START  CONSTRUCTION,1
6801,13501,Hailey's Glen,2736,medium,694771.0,3,3 TRADES START,1
6802,13281,Marlin Chase,3558,medium,786910.0,3,3 TRADES START,1
6803,13495,Welches Pond,2650,medium,674167.0,252,252 Site Plan,1
6804,13462,Peninsula,4787,high,1490269.0,252,252 Site Plan,1
6805,13495,Welches Pond,2650,medium,674167.0,260,260 Plan Review/Permit Allocation,0
6806,13495,Welches Pond,2650,medium,674167.0,900,900 Bldg Stakeout,1
6807,13462,Peninsula,4787,high,1490269.0,900,900 Bldg Stakeout,1
6808,13495,Welches Pond,2650,medium,674167.0,901,901 Engineering Allocation,0
6809,13462,Peninsula,4787,high,1490269.0,901,901 Engineering Allocation,0
6810,13495,Welches Pond,2650,medium,674167.0,980,980 Install Silt Fence,1
6811,13462,Peninsula,4787,high,1490269.0,980,980 Install Silt Fence,1
6812,13495,Welches Pond,2650,medium,674167.0,1020,1020 Install Construction Entrance,1
6813,13529,Governors,1901,medium,787652.0,1020,1020 Install Construction Entrance,1
6814,13462,Peninsula,4787,high,1490269.0,1020,1020 Install Construction Entrance,1
6815,13529,Governors,1901,medium,787652.0,1100,1100 Form Footings,1
6816,13529,Governors,1901,medium,787652.0,1140,1140 Footing Inspection,1
6817,13529,Governors,1901,medium,787652.0,1180,1180 Pour Footings,1
6818,13495,Welches Pond,2650,medium,674167.0,1780,1780 Order Steel,1
6819,13462,Peninsula,4787,high,1490269.0,1780,1780 Order Steel,1
6820,13164,Welches Pond,4497,medium,1024665.0,1900,1900 Strip Foundation Forms,1
6821,13495,Welches Pond,2650,medium,674167.0,2230,2230 Receive Dumpster Allocation,1
6822,13462,Peninsula,4787,high,1490269.0,2230,2230 Receive Dumpster Allocation,1
6823,13495,Welches Pond,2650,medium,674167.0,2240,2240 Receive Portable Toilet Allocation,1
6824,13462,Peninsula,4787,high,1490269.0,2240,2240 Receive Portable Toilet Allocation,1
6825,13520,Hailey's Glen,2792,medium,606920.0,2260,2260 Crawl Stone/Sand,1
6826,13520,Hailey's Glen,2792,medium,606920.0,2340,2340 Backfill & Compact,1
6827,13020,Peninsula Lakes,2100,low,578095.0,2344,2344 Meter Pit Install,1
6828,13503,Marsh Island,4307,medium,892519.0,3300,3300 1st Floor Deck Framing,1
6829,13485,Peninsula,4241,medium,706147.0,3380,3380 1st Floor Wall Framing,1
6830,13485,Peninsula,4241,medium,706147.0,3700,3700 Receive Trusses,1
6831,13503,Marsh Island,4307,medium,892519.0,3780,3780 2nd Floor Deck Framing,1
6832,13496,Hailey's Glen,3443,medium,316917.0,3780,3780 2nd Floor Deck Framing,1
6833,13468,Governors,2977,medium,869889.0,4020,4020 Set Trusses,3
6834,13503,Marsh Island,4307,medium,892519.0,4070,4070 Receive Exterior Deck Material,1
6835,13423,Governors,2974,medium,884692.0,4100,4100 Exterior Deck Framing,1
6836,13468,Governors,2977,medium,869889.0,4230,4230 Receive Housewrap/Flashing,1
6837,13397,Peninsula,5533,high,750956.0,4380,4380 Roof Sheathing,3
6838,13423,Governors,2974,medium,884692.0,4540,4540 Install Windows,1
6839,13501,Hailey's Glen,2736,medium,694771.0,4540,4540 Install Windows,1
6840,13423,Governors,2974,medium,884692.0,4582,4582 Install Temp Poly,1
6841,13140,Marlin Chase,2824,medium,766881.0,4590,4590 Install Metal Roofing,1
6842,13501,Hailey's Glen,2736,medium,694771.0,4591,4591 Install Metal Roof Flashing,1
6843,13091,Marlin Chase,2591,medium,562928.0,4700,4700 Internal Framing Inspection,1
6844,13258,River Mill,3064,medium,670416.0,4940,4940 Install Fireplace,1
6845,13349,Peninsula Lakes,2188,medium,442826.0,4980,4980 Plumbing Rough,2
6846,13394,Peninsula Lakes,2154,medium,474879.0,4980,4980 Plumbing Rough,2
6847,13501,Hailey's Glen,2736,medium,694771.0,5100,5100 HVAC Rough,3
6848,13281,Marlin Chase,3558,medium,786910.0,5100,5100 HVAC Rough,2
6849,13281,Marlin Chase,3558,medium,786910.0,5120,5120 HVAC Set Furnace,1
6850,13501,Hailey's Glen,2736,medium,694771.0,5120,5120 HVAC Set Furnace,3
6851,13392,Marsh Island,2795,medium,771707.0,5180,5180 Electric Rough,3
6852,13471,Cardinal Grove,2233,medium,517387.0,5260,5260 Mechanical Rough Inspection,1
6853,13507,Welches Pond,2852,medium,845914.0,5260,5260 Mechanical Rough Inspection,1
6854,13253,River Mill,2912,medium,692624.0,5300,5300 Municipal Electric Inspection,5
6855,13471,Cardinal Grove,2233,medium,517387.0,5300,5300 Municipal Electric Inspection,1
6856,13471,Cardinal Grove,2233,medium,517387.0,5580,5580 Structured Wiring Rough,1
6857,13507,Welches Pond,2852,medium,845914.0,5580,5580 Structured Wiring Rough,3
6858,13030,Peninsula,5546,high,1768191.0,5740,5740 Install Gas Lines,1
6859,13476,Durham Farms,4277,medium,750956.0,5740,5740 Install Gas Lines,1
6860,13030,Peninsula,5546,high,1768191.0,5860,5860 Frame Stage Tour,1
6861,13253,River Mill,2912,medium,692624.0,5900,5900 Air Seal,1
6862,13088,Forest Hills,3580,medium,222544.0,5900,5900 Air Seal,1
6863,13278,Mosaic,2320,medium,818814.0,5900,5900 Air Seal,1
6864,13136,Marlin Chase,3170,medium,806102.0,6340,6340 Install Overhead Door,1
6865,13112,Marlin Chase,3171,medium,634940.0,6345,6345 Stock Drywall,1
6866,13507,Welches Pond,2852,medium,845914.0,6390,6390 Schedule Gas Meter,1
6867,13101,Marlin Chase,2461,medium,682900.0,6390,6390 Schedule Gas Meter,1
6868,13035,Forest Hills,4024,medium,816522.0,6391,6391 Install Gas Meter,1
6869,13477,Cardinal Grove,2589,medium,750956.0,6620,6620 Receive Vinyl Siding,1
6870,13477,Cardinal Grove,2589,medium,750956.0,6700,6700 Receive Composite Ext Trim,1
6871,13477,Cardinal Grove,2589,medium,750956.0,6720,6720 Receive Siding Accents,1
6872,13120,Marsh Island,4291,medium,851477.0,6721,6721 Receive Brackets,1
6873,13477,Cardinal Grove,2589,medium,750956.0,6725,6725 Receive Shutters,1
6874,13477,Cardinal Grove,2589,medium,750956.0,6740,6740 Receive PVC Exterior Trim,1
6875,13477,Cardinal Grove,2589,medium,750956.0,6781,6781 Receive Column Wrap/Flower Bx/Pediment,1
6876,13120,Marsh Island,4291,medium,851477.0,6781,6781 Receive Column Wrap/Flower Bx/Pediment,1
6877,13477,Cardinal Grove,2589,medium,750956.0,6820,6820 Receive Deck Skirting,1
6878,13035,Forest Hills,4024,medium,816522.0,6862,6862 Trellis Construction,1
6879,13035,Forest Hills,4024,medium,816522.0,6884,6884 Measure Screen Porch Enclosure,1
6880,13140,Marlin Chase,2824,medium,766881.0,7220,7220 Install Deck Skirting/Flower Boxes,1
6881,12832,Peninsula,4562,high,1090397.0,7860,7860 Install Interior Trim,3
6882,13401,Welches Pond,2927,medium,731557.0,8300,8300 Install Cabinets,2
6883,13144,Marlin Chase,3055,medium,740636.0,8420,8420 1st Paint,1
6884,12993,Peninsula,5996,high,750956.0,8460,8460 Install Countertops,16
6885,13495,Welches Pond,2650,medium,674167.0,8500,8500 Order Appliance Pkg 1,1
6886,13462,Peninsula,4787,high,1490269.0,8500,8500 Order Appliance Pkg 1,1
6887,13113,Marlin Chase,2814,medium,750956.0,8920,8920 Install Water Heater/1st Trim,1
6888,13101,Marlin Chase,2461,medium,682900.0,8940,8940 Plumbing Trim,1
6889,13032,Welches Pond,2812,medium,643995.0,9020,9020 Electric Trim,3
6890,13032,Welches Pond,2812,medium,643995.0,9100,9100 HVAC Trim / Set Unit,44
6891,13145,Marlin Chase,3204,medium,841553.0,9100,9100 HVAC Trim / Set Unit,1
6892,13101,Marlin Chase,2461,medium,682900.0,9260,9260 Structured Wiring Trim,1
6893,13032,Welches Pond,2812,medium,643995.0,9260,9260 Structured Wiring Trim,1
6894,13392,Marsh Island,2795,medium,771707.0,9390,9390 Install Water Meter/Sewer Frame,1
6895,13140,Marlin Chase,2824,medium,766881.0,9460,9460 Attic Insulation,1
6896,13401,Welches Pond,2927,medium,731557.0,9540,9540 Rec. GE Appliance Pkg1 Allocation,14
6897,13401,Welches Pond,2927,medium,731557.0,9620,9620 Install Appliances,1
6898,13495,Welches Pond,2650,medium,674167.0,9750,9750 Order Appliance Pkg 2,1
6899,13462,Peninsula,4787,high,1490269.0,9750,9750 Order Appliance Pkg 2,1
6900,13495,Welches Pond,2650,medium,674167.0,9860,9860 Final Utility Connection,0
6901,13462,Peninsula,4787,high,1490269.0,9860,9860 Final Utility Connection,0
6902,13392,Marsh Island,2795,medium,771707.0,9900,9900 Water Lateral,1
6903,13392,Marsh Island,2795,medium,771707.0,9905,9905 Sewer Lateral,1
6904,13145,Marlin Chase,3204,medium,841553.0,10300,10300 Install Driveway,1
6905,13137,Marlin Chase,2330,medium,637264.0,10300,10300 Install Driveway,14
6906,13139,Marlin Chase,2554,medium,704067.0,10340,10340 Install Leadwalk & Comm. Sidewalk,25
6907,13175,Peninsula Lakes,2245,low,567645.0,10500,10500 Paint 2,3
6908,13465,Cardinal Grove,1764,medium,569722.0,10940,10940 Framing Retainage,1
6909,12993,Peninsula,5996,high,750956.0,0,appcheck Check Appliances for Damage,1
6910,12993,Peninsula,5996,high,750956.0,0,cabcheck Check Cabinets for Damage,1
6911,13140,Marlin Chase,2824,medium,766881.0,0,vancheck Check Vanity Tops/Windows for Damage,1
6912,13503,Marsh Island,4307,medium,892519.0,100,100 Framing DRAW 1,1
6913,13496,Hailey's Glen,3443,medium,316917.0,100,100 Framing DRAW 1,1
6914,13423,Governors,2974,medium,884692.0,140,140 Framing DRAW 2,1
6915,13495,Welches Pond,2650,medium,674167.0,1060,1060 Foundation Excavation,1
6916,13462,Peninsula,4787,high,1490269.0,1100,1100 Form Footings,1
6917,13462,Peninsula,4787,high,1490269.0,1140,1140 Footing Inspection,1
6918,13462,Peninsula,4787,high,1490269.0,1180,1180 Pour Footings,1
6919,13529,Governors,1901,medium,787652.0,1190,1190 Capillary Break,1
6920,13529,Governors,1901,medium,787652.0,1195,1195 Pin Footings,1
6921,13164,Welches Pond,4497,medium,1024665.0,1940,1940 Install Perimeter Drain/Croc,1
6922,13164,Welches Pond,4497,medium,1024665.0,2060,2060 Waterproof Foundation Walls,1
6923,13264,Welches Pond,3905,medium,915363.0,2340,2340 Backfill & Compact,1
6924,13520,Hailey's Glen,2792,medium,606920.0,2344,2344 Meter Pit Install,1
6925,13136,Marlin Chase,3170,medium,806102.0,2344,2344 Meter Pit Install,1
6926,13520,Hailey's Glen,2792,medium,606920.0,2700,2700 Pour Garage Slab,1
6927,13503,Marsh Island,4307,medium,892519.0,3700,3700 Receive Trusses,1
6928,13485,Peninsula,4241,medium,706147.0,3780,3780 2nd Floor Deck Framing,1
6929,13503,Marsh Island,4307,medium,892519.0,3820,3820 2nd Floor Wall Framing,2
6930,13496,Hailey's Glen,3443,medium,316917.0,3820,3820 2nd Floor Wall Framing,1
6931,13281,Marlin Chase,3558,medium,786910.0,4071,4071 Receive Exterior Decking,1
6932,13423,Governors,2974,medium,884692.0,4071,4071 Receive Exterior Decking,1
6933,13503,Marsh Island,4307,medium,892519.0,4460,4460 Schedule Gas Lateral Contractor,1
6934,13468,Governors,2977,medium,869889.0,4775,4775 Receive Hardwood Stairs,1
6935,13507,Welches Pond,2852,medium,845914.0,5300,5300 Municipal Electric Inspection,1
6936,13476,Durham Farms,4277,medium,750956.0,5580,5580 Structured Wiring Rough,3
6937,13392,Marsh Island,2795,medium,771707.0,5740,5740 Install Gas Lines,1
6938,13091,Marlin Chase,2591,medium,562928.0,5820,5820 Framing Inspection,1
6939,13507,Welches Pond,2852,medium,845914.0,5860,5860 Frame Stage Tour,1
6940,13471,Cardinal Grove,2233,medium,517387.0,5900,5900 Air Seal,1
6941,13496,Hailey's Glen,3443,medium,316917.0,5940,5940 Order Cabinets,1
6942,13496,Hailey's Glen,3443,medium,316917.0,5941,5941 Order Cabinet Hardware,1
6943,13278,Mosaic,2320,medium,818814.0,6180,6180 Install Insulation,2
6944,13032,Welches Pond,2812,medium,643995.0,6340,6340 Install Overhead Door,1
6945,13477,Cardinal Grove,2589,medium,750956.0,6380,6380 Install Drywall,11
6946,13101,Marlin Chase,2461,medium,682900.0,6381,6381 Drywall Punch,1
6947,13112,Marlin Chase,3171,medium,634940.0,6620,6620 Receive Vinyl Siding,1
6948,13112,Marlin Chase,3171,medium,634940.0,6700,6700 Receive Composite Ext Trim,1
6949,13112,Marlin Chase,3171,medium,634940.0,6720,6720 Receive Siding Accents,1
6950,13112,Marlin Chase,3171,medium,634940.0,6725,6725 Receive Shutters,1
6951,13112,Marlin Chase,3171,medium,634940.0,6740,6740 Receive PVC Exterior Trim,1
6952,13112,Marlin Chase,3171,medium,634940.0,6781,6781 Receive Column Wrap/Flower Bx/Pediment,1
6953,13112,Marlin Chase,3171,medium,634940.0,6820,6820 Receive Deck Skirting,1
6954,13477,Cardinal Grove,2589,medium,750956.0,6860,6860 Siding Installation,6
6955,13035,Forest Hills,4024,medium,816522.0,7140,7140 Exterior Painting,1
6956,13144,Marlin Chase,3055,medium,740636.0,7340,7340 Install Ceramic Tile,2
6957,13144,Marlin Chase,3055,medium,740636.0,7350,7350 Install Shower Tile,6
6958,13144,Marlin Chase,3055,medium,740636.0,8220,8220 Install Fireplace Surround/Mantel,4
6959,13175,Peninsula Lakes,2245,low,567645.0,8220,8220 Install Fireplace Surround/Mantel,1
6960,13152,Marlin Chase,2710,medium,768496.0,8420,8420 1st Paint,1
6961,13140,Marlin Chase,2824,medium,766881.0,8460,8460 Install Countertops,1
6962,13137,Marlin Chase,2330,medium,637264.0,8465,8465 Install Tiled Backsplash,1
6963,13140,Marlin Chase,2824,medium,766881.0,8579,8579 Template Shower Enclosure,1
6964,13401,Welches Pond,2927,medium,731557.0,8579,8579 Template Shower Enclosure,1
6965,13138,Marlin Chase,3171,medium,859133.0,9020,9020 Electric Trim,2
6966,13138,Marlin Chase,3171,medium,859133.0,9100,9100 HVAC Trim / Set Unit,1
6967,13120,Marsh Island,4291,medium,851477.0,9140,9140 2nd Stage Air Seal,1
6968,13145,Marlin Chase,3204,medium,841553.0,9700,9700 Install Hardwood Flooring,1
6969,13392,Marsh Island,2795,medium,771707.0,9910,9910 Utility Grade,1
6970,13278,Mosaic,2320,medium,818814.0,9910,9910 Utility Grade,1
6971,13401,Welches Pond,2927,medium,731557.0,10460,10460 Drywall Touch Up,2
6972,13091,Marlin Chase,2591,medium,562928.0,10940,10940 Framing Retainage,1
6973,13175,Peninsula Lakes,2245,low,567645.0,0,vancheck Check Vanity Tops/Windows for Damage,1
6974,13520,Hailey's Glen,2792,medium,606920.0,2,2 FRAMING START,1
6975,13485,Peninsula,4241,medium,706147.0,100,100 Framing DRAW 1,1
6976,13495,Welches Pond,2650,medium,674167.0,1100,1100 Form Footings,1
6977,13495,Welches Pond,2650,medium,674167.0,1140,1140 Footing Inspection,1
6978,13495,Welches Pond,2650,medium,674167.0,1180,1180 Pour Footings,1
6979,13462,Peninsula,4787,high,1490269.0,1190,1190 Capillary Break,1
6980,13529,Governors,1901,medium,787652.0,1580,1580 Form Foundation Walls,1
6981,13529,Governors,1901,medium,787652.0,1820,1820 Foundation Wall Inspection,1
6982,13529,Governors,1901,medium,787652.0,1860,1860 Foundation Wall Pour,1
6983,13264,Welches Pond,3905,medium,915363.0,2140,2140 Underground Plumbing Inspection,1
6984,13264,Welches Pond,3905,medium,915363.0,2344,2344 Meter Pit Install,1
6985,13520,Hailey's Glen,2792,medium,606920.0,2440,2440 Receive Steel,1
6986,13520,Hailey's Glen,2792,medium,606920.0,2460,2460 Receive Lumber Drop #1,1
6987,13520,Hailey's Glen,2792,medium,606920.0,2540,2540 Receive 1st Floor Joists,1
6988,13164,Welches Pond,4497,medium,1024665.0,3020,3020 Termite & Pest PreTreatment,1
6989,13164,Welches Pond,4497,medium,1024665.0,3060,3060 Foundation Insulation-Crawl,1
6990,13264,Welches Pond,3905,medium,915363.0,3100,3100 Foundation Survey,1
6991,13520,Hailey's Glen,2792,medium,606920.0,3540,3540 Receive Lumber Drop #2,1
6992,13520,Hailey's Glen,2792,medium,606920.0,3740,3740 Receive 2nd Floor Joists,1
6993,13485,Peninsula,4241,medium,706147.0,3820,3820 2nd Floor Wall Framing,1
6994,13503,Marsh Island,4307,medium,892519.0,4020,4020 Set Trusses,2
6995,13496,Hailey's Glen,3443,medium,316917.0,4020,4020 Set Trusses,3
6996,13496,Hailey's Glen,3443,medium,316917.0,4230,4230 Receive Housewrap/Flashing,1
6997,13503,Marsh Island,4307,medium,892519.0,4380,4380 Roof Sheathing,2
6998,13088,Forest Hills,3580,medium,222544.0,4700,4700 Internal Framing Inspection,1
6999,13471,Cardinal Grove,2233,medium,517387.0,4700,4700 Internal Framing Inspection,1
7000,13281,Marlin Chase,3558,medium,786910.0,4940,4940 Install Fireplace,1
7001,13349,Peninsula Lakes,2188,medium,442826.0,4940,4940 Install Fireplace,1
7002,13281,Marlin Chase,3558,medium,786910.0,4980,4980 Plumbing Rough,2
7003,13030,Peninsula,5546,high,1768191.0,5180,5180 Electric Rough,8
7004,13392,Marsh Island,2795,medium,771707.0,5260,5260 Mechanical Rough Inspection,1
7005,13392,Marsh Island,2795,medium,771707.0,5580,5580 Structured Wiring Rough,1
7006,13258,River Mill,3064,medium,670416.0,5580,5580 Structured Wiring Rough,1
7007,13394,Peninsula Lakes,2154,medium,474879.0,5740,5740 Install Gas Lines,1
7008,13471,Cardinal Grove,2233,medium,517387.0,5820,5820 Framing Inspection,1
7009,13485,Peninsula,4241,medium,706147.0,5940,5940 Order Cabinets,1
7010,13520,Hailey's Glen,2792,medium,606920.0,5940,5940 Order Cabinets,1
7011,13520,Hailey's Glen,2792,medium,606920.0,5941,5941 Order Cabinet Hardware,1
7012,13485,Peninsula,4241,medium,706147.0,5941,5941 Order Cabinet Hardware,1
7013,13091,Marlin Chase,2591,medium,562928.0,6180,6180 Install Insulation,2
7014,13278,Mosaic,2320,medium,818814.0,6345,6345 Stock Drywall,1
7015,13112,Marlin Chase,3171,medium,634940.0,6380,6380 Install Drywall,8
7016,13032,Welches Pond,2812,medium,643995.0,6391,6391 Install Gas Meter,2
7017,13360,Peninsula Lakes,3496,medium,575090.0,6391,6391 Install Gas Meter,1
7018,13408,NewMarket,3940,medium,889253.0,6620,6620 Receive Vinyl Siding,1
7019,13408,NewMarket,3940,medium,889253.0,6700,6700 Receive Composite Ext Trim,1
7020,13408,NewMarket,3940,medium,889253.0,6720,6720 Receive Siding Accents,1
7021,13408,NewMarket,3940,medium,889253.0,6725,6725 Receive Shutters,1
7022,13408,NewMarket,3940,medium,889253.0,6740,6740 Receive PVC Exterior Trim,1
7023,13408,NewMarket,3940,medium,889253.0,6781,6781 Receive Column Wrap/Flower Bx/Pediment,1
7024,13092,Marlin Chase,2079,medium,433351.0,7140,7140 Exterior Painting,11
7025,13360,Peninsula Lakes,3496,medium,575090.0,7220,7220 Install Deck Skirting/Flower Boxes,1
7026,13144,Marlin Chase,3055,medium,740636.0,7300,7300 Receive Interior Trim,1
7027,13144,Marlin Chase,3055,medium,740636.0,7304,7304 Receive Goodie Box,1
7028,13152,Marlin Chase,2710,medium,768496.0,7340,7340 Install Ceramic Tile,2
7029,13152,Marlin Chase,2710,medium,768496.0,7350,7350 Install Shower Tile,3
7030,13152,Marlin Chase,2710,medium,768496.0,7380,7380 Install Vinyl Floors,1
7031,13144,Marlin Chase,3055,medium,740636.0,7700,7700 Receive Interior Doors,1
7032,13144,Marlin Chase,3055,medium,740636.0,7862,7862 Receive Cabinet Hardware Allocation,1
7033,13144,Marlin Chase,3055,medium,740636.0,7866,7866 Receive Door Hardware,1
7034,13144,Marlin Chase,3055,medium,740636.0,7900,7900 Receive Cabinets Allocation,1
7035,13144,Marlin Chase,3055,medium,740636.0,7901,7901 Cabinet Delivery Charges,1
7036,13144,Marlin Chase,3055,medium,740636.0,7940,7940 Receive Vanity Tops,1
7037,13152,Marlin Chase,2710,medium,768496.0,8020,8020 Receive Interior Railing,1
7038,13144,Marlin Chase,3055,medium,740636.0,8020,8020 Receive Interior Railing,1
7039,13152,Marlin Chase,2710,medium,768496.0,8220,8220 Install Fireplace Surround/Mantel,1
7040,13144,Marlin Chase,3055,medium,740636.0,8260,8260 Install Interior Railing,1
7041,12832,Peninsula,4562,high,1090397.0,8300,8300 Install Cabinets,2
7042,13401,Welches Pond,2927,medium,731557.0,8380,8380 Template Countertops,1
7043,12920,Peninsula,4116,high,1454538.0,8420,8420 1st Paint,1
7044,12993,Peninsula,5996,high,750956.0,9020,9020 Electric Trim,12
7045,13140,Marlin Chase,2824,medium,766881.0,9020,9020 Electric Trim,5
7046,13113,Marlin Chase,2814,medium,750956.0,9100,9100 HVAC Trim / Set Unit,1
7047,12993,Peninsula,5996,high,750956.0,9100,9100 HVAC Trim / Set Unit,1
7048,13140,Marlin Chase,2824,medium,766881.0,9260,9260 Structured Wiring Trim,1
7049,13360,Peninsula Lakes,3496,medium,575090.0,9380,9380 Install Irrigation Well,1
7050,13120,Marsh Island,4291,medium,851477.0,9460,9460 Attic Insulation,1
7051,12832,Peninsula,4562,high,1090397.0,9540,9540 Rec. GE Appliance Pkg1 Allocation,1
7052,12832,Peninsula,4562,high,1090397.0,9620,9620 Install Appliances,1
7053,13140,Marlin Chase,2824,medium,766881.0,10301,10301 Driveway Apron,1
7054,13113,Marlin Chase,2814,medium,750956.0,10301,10301 Driveway Apron,1
7055,13140,Marlin Chase,2824,medium,766881.0,10340,10340 Install Leadwalk & Comm. Sidewalk,1
7056,13423,Governors,2974,medium,884692.0,3,3 TRADES START,1
7057,13495,Welches Pond,2650,medium,674167.0,1190,1190 Capillary Break,1
7058,13462,Peninsula,4787,high,1490269.0,1580,1580 Form Foundation Walls,1
7059,13462,Peninsula,4787,high,1490269.0,1820,1820 Foundation Wall Inspection,1
7060,13462,Peninsula,4787,high,1490269.0,1860,1860 Foundation Wall Pour,1
7061,13529,Governors,1901,medium,787652.0,1900,1900 Strip Foundation Forms,1
7062,13360,Peninsula Lakes,3496,medium,575090.0,2344,2344 Meter Pit Install,1
7063,13264,Welches Pond,3905,medium,915363.0,2380,2380 Pour Basement Slab,2
7064,13520,Hailey's Glen,2792,medium,606920.0,3300,3300 1st Floor Deck Framing,1
7065,13485,Peninsula,4241,medium,706147.0,4020,4020 Set Trusses,3
7066,13520,Hailey's Glen,2792,medium,606920.0,4070,4070 Receive Exterior Deck Material,1
7067,13397,Peninsula,5533,high,750956.0,4100,4100 Exterior Deck Framing,1
7068,13485,Peninsula,4241,medium,706147.0,4230,4230 Receive Housewrap/Flashing,1
7069,13468,Governors,2977,medium,869889.0,4260,4260 Receive Windows,1
7070,13468,Governors,2977,medium,869889.0,4300,4300 Receive Window/Door Flashings,1
7071,13468,Governors,2977,medium,869889.0,4340,4340 Receive Exterior Doors,1
7072,13468,Governors,2977,medium,869889.0,4380,4380 Roof Sheathing,3
7073,13468,Governors,2977,medium,869889.0,4390,4390 Receive Roofing Material,1
7074,13397,Peninsula,5533,high,750956.0,4390,4390 Receive Roofing Material,1
7075,13468,Governors,2977,medium,869889.0,4580,4580 Install Roofing,2
7076,13501,Hailey's Glen,2736,medium,694771.0,4940,4940 Install Fireplace,1
7077,13501,Hailey's Glen,2736,medium,694771.0,4980,4980 Plumbing Rough,2
7078,13152,Marlin Chase,2710,medium,768496.0,4981,4981 Deliver Sinks,1
7079,13144,Marlin Chase,3055,medium,740636.0,4981,4981 Deliver Sinks,1
7080,13423,Governors,2974,medium,884692.0,5100,5100 HVAC Rough,2
7081,13423,Governors,2974,medium,884692.0,5120,5120 HVAC Set Furnace,1
7082,13138,Marlin Chase,3171,medium,859133.0,5177,5177 Electric Meter Connection,31
7083,13258,River Mill,3064,medium,670416.0,5180,5180 Electric Rough,4
7084,13277,Mosaic,1704,medium,561869.0,5260,5260 Mechanical Rough Inspection,1
7085,13476,Durham Farms,4277,medium,750956.0,5260,5260 Mechanical Rough Inspection,7
7086,13476,Durham Farms,4277,medium,750956.0,5300,5300 Municipal Electric Inspection,1
7087,13277,Mosaic,1704,medium,561869.0,5300,5300 Municipal Electric Inspection,1
7088,13392,Marsh Island,2795,medium,771707.0,5300,5300 Municipal Electric Inspection,1
7089,13258,River Mill,3064,medium,670416.0,5740,5740 Install Gas Lines,1
7090,13349,Peninsula Lakes,2188,medium,442826.0,5740,5740 Install Gas Lines,1
7091,13277,Mosaic,1704,medium,561869.0,5820,5820 Framing Inspection,1
7092,13258,River Mill,3064,medium,670416.0,5825,5825 Frame Punch,1
7093,13392,Marsh Island,2795,medium,771707.0,5860,5860 Frame Stage Tour,1
7094,13392,Marsh Island,2795,medium,771707.0,5900,5900 Air Seal,1
7095,13507,Welches Pond,2852,medium,845914.0,5900,5900 Air Seal,1
7096,13408,NewMarket,3940,medium,889253.0,6180,6180 Install Insulation,2
7097,13278,Mosaic,2320,medium,818814.0,6300,6300 Energy Inspection,1
7098,13278,Mosaic,2320,medium,818814.0,6305,6305 Energy Certification,1
7099,13091,Marlin Chase,2591,medium,562928.0,6345,6345 Stock Drywall,1
7100,13144,Marlin Chase,3055,medium,740636.0,6390,6390 Schedule Gas Meter,1
7101,13277,Mosaic,1704,medium,561869.0,6620,6620 Receive Vinyl Siding,1
7102,13277,Mosaic,1704,medium,561869.0,6660,6660 Receive Fiber Cement Siding,1
7103,13277,Mosaic,1704,medium,561869.0,6700,6700 Receive Composite Ext Trim,1
7104,13277,Mosaic,1704,medium,561869.0,6720,6720 Receive Siding Accents,1
7105,13277,Mosaic,1704,medium,561869.0,6721,6721 Receive Brackets,1
7106,13277,Mosaic,1704,medium,561869.0,6740,6740 Receive PVC Exterior Trim,1
7107,13277,Mosaic,1704,medium,561869.0,6781,6781 Receive Column Wrap/Flower Bx/Pediment,1
7108,13408,NewMarket,3940,medium,889253.0,6860,6860 Siding Installation,5
7109,13138,Marlin Chase,3171,medium,859133.0,6862,6862 Trellis Construction,1
7110,13140,Marlin Chase,2824,medium,766881.0,6884,6884 Measure Screen Porch Enclosure,1
7111,13145,Marlin Chase,3204,medium,841553.0,6885,6885 Install Screen Porch Enclosure,6
7112,12993,Peninsula,5996,high,750956.0,6940,6940 Install Elevator,14
7113,13020,Peninsula Lakes,2100,low,578095.0,7180,7180 Install Exterior Railings,1
7114,13152,Marlin Chase,2710,medium,768496.0,7300,7300 Receive Interior Trim,1
7115,13152,Marlin Chase,2710,medium,768496.0,7304,7304 Receive Goodie Box,1
7116,12920,Peninsula,4116,high,1454538.0,7340,7340 Install Ceramic Tile,3
7117,12920,Peninsula,4116,high,1454538.0,7350,7350 Install Shower Tile,15
7118,13152,Marlin Chase,2710,medium,768496.0,7700,7700 Receive Interior Doors,1
7119,13144,Marlin Chase,3055,medium,740636.0,7860,7860 Install Interior Trim,2
7120,13152,Marlin Chase,2710,medium,768496.0,7862,7862 Receive Cabinet Hardware Allocation,1
7121,13152,Marlin Chase,2710,medium,768496.0,7866,7866 Receive Door Hardware,1
7122,13152,Marlin Chase,2710,medium,768496.0,7900,7900 Receive Cabinets Allocation,1
7123,13152,Marlin Chase,2710,medium,768496.0,7901,7901 Cabinet Delivery Charges,1
7124,12920,Peninsula,4116,high,1454538.0,8020,8020 Receive Interior Railing,1
7125,12920,Peninsula,4116,high,1454538.0,8220,8220 Install Fireplace Surround/Mantel,1
7126,13152,Marlin Chase,2710,medium,768496.0,8260,8260 Install Interior Railing,1
7127,13401,Welches Pond,2927,medium,731557.0,8390,8390 Stone Interior Fireplace,11
7128,13175,Peninsula Lakes,2245,low,567645.0,8460,8460 Install Countertops,1
7129,13032,Welches Pond,2812,medium,643995.0,8460,8460 Install Countertops,1
7130,13020,Peninsula Lakes,2100,low,578095.0,8465,8465 Install Tiled Backsplash,1
7131,13032,Welches Pond,2812,medium,643995.0,8465,8465 Install Tiled Backsplash,1
7132,13136,Marlin Chase,3170,medium,806102.0,8465,8465 Install Tiled Backsplash,4
7133,13145,Marlin Chase,3204,medium,841553.0,8540,8540 Install Bath Accessories,1
7134,13145,Marlin Chase,3204,medium,841553.0,8545,8545 Install Mirrors,1
7135,13145,Marlin Chase,3204,medium,841553.0,8900,8900 Install Closet Shelving,1
7136,13113,Marlin Chase,2814,medium,750956.0,9020,9020 Electric Trim,4
7137,13360,Peninsula Lakes,3496,medium,575090.0,9140,9140 2nd Stage Air Seal,1
7138,13394,Peninsula Lakes,2154,medium,474879.0,9390,9390 Install Water Meter/Sewer Frame,1
7139,13349,Peninsula Lakes,2188,medium,442826.0,9390,9390 Install Water Meter/Sewer Frame,1
7140,13349,Peninsula Lakes,2188,medium,442826.0,9900,9900 Water Lateral,1
7141,13394,Peninsula Lakes,2154,medium,474879.0,9900,9900 Water Lateral,1
7142,13394,Peninsula Lakes,2154,medium,474879.0,9905,9905 Sewer Lateral,1
7143,13349,Peninsula Lakes,2188,medium,442826.0,9905,9905 Sewer Lateral,1
7144,13440,Marlin Chase,3067,medium,714189.0,10020,10020 Final Grade,1
7145,13145,Marlin Chase,3204,medium,841553.0,10260,10260 Install House Numbers,1
7146,12832,Peninsula,4562,high,1090397.0,10460,10460 Drywall Touch Up,2
7147,13401,Welches Pond,2927,medium,731557.0,10500,10500 Paint 2,3
7148,13471,Cardinal Grove,2233,medium,517387.0,10940,10940 Framing Retainage,1
7149,13495,Welches Pond,2650,medium,674167.0,1580,1580 Form Foundation Walls,1
7150,13495,Welches Pond,2650,medium,674167.0,1820,1820 Foundation Wall Inspection,1
7151,13495,Welches Pond,2650,medium,674167.0,1860,1860 Foundation Wall Pour,1
7152,13462,Peninsula,4787,high,1490269.0,1900,1900 Strip Foundation Forms,1
7153,13529,Governors,1901,medium,787652.0,1940,1940 Install Perimeter Drain/Croc,1
7154,13529,Governors,1901,medium,787652.0,2020,2020 Install Underground Plumbing,1
7155,13529,Governors,1901,medium,787652.0,2060,2060 Waterproof Foundation Walls,1
7156,13164,Welches Pond,4497,medium,1024665.0,2260,2260 Crawl Stone/Sand,1
7157,13164,Welches Pond,4497,medium,1024665.0,2340,2340 Backfill & Compact,1
7158,13144,Marlin Chase,3055,medium,740636.0,2344,2344 Meter Pit Install,1
7159,13264,Welches Pond,3905,medium,915363.0,2700,2700 Pour Garage Slab,1
7160,13091,Marlin Chase,2591,medium,562928.0,3140,3140 Pour Porch Slab,1
7161,13520,Hailey's Glen,2792,medium,606920.0,3380,3380 1st Floor Wall Framing,1
7162,13520,Hailey's Glen,2792,medium,606920.0,3700,3700 Receive Trusses,1
7163,13520,Hailey's Glen,2792,medium,606920.0,3780,3780 2nd Floor Deck Framing,1
7164,13397,Peninsula,5533,high,750956.0,4071,4071 Receive Exterior Decking,1
7165,13468,Governors,2977,medium,869889.0,4071,4071 Receive Exterior Decking,1
7166,13503,Marsh Island,4307,medium,892519.0,4100,4100 Exterior Deck Framing,1
7167,13503,Marsh Island,4307,medium,892519.0,4390,4390 Receive Roofing Material,1
7168,13485,Peninsula,4241,medium,706147.0,4460,4460 Schedule Gas Lateral Contractor,1
7169,13140,Marlin Chase,2824,medium,766881.0,4461,4461 Install Gas Lateral,1
7170,13468,Governors,2977,medium,869889.0,4540,4540 Install Windows,1
7171,13397,Peninsula,5533,high,750956.0,4580,4580 Install Roofing,2
7172,13503,Marsh Island,4307,medium,892519.0,4580,4580 Install Roofing,3
7173,13468,Governors,2977,medium,869889.0,4582,4582 Install Temp Poly,1
7174,13397,Peninsula,5533,high,750956.0,4585,4585 Install Membrane Roofing,1
7175,12920,Peninsula,4116,high,1454538.0,4590,4590 Install Metal Roofing,1
7176,13030,Peninsula,5546,high,1768191.0,4665,4665 Elevator Rough,2
7177,13392,Marsh Island,2795,medium,771707.0,4700,4700 Internal Framing Inspection,1
7178,13507,Welches Pond,2852,medium,845914.0,4700,4700 Internal Framing Inspection,1
7179,13423,Governors,2974,medium,884692.0,4701,4701 Frame Check,1
7180,13503,Marsh Island,4307,medium,892519.0,4701,4701 Frame Check,1
7181,13397,Peninsula,5533,high,750956.0,4775,4775 Receive Hardwood Stairs,1
7182,12920,Peninsula,4116,high,1454538.0,4981,4981 Deliver Sinks,1
7183,13477,Cardinal Grove,2589,medium,750956.0,5177,5177 Electric Meter Connection,1
7184,13394,Peninsula Lakes,2154,medium,474879.0,5180,5180 Electric Rough,3
7185,12920,Peninsula,4116,high,1454538.0,5580,5580 Structured Wiring Rough,1
7186,13281,Marlin Chase,3558,medium,786910.0,5740,5740 Install Gas Lines,1
7187,13253,River Mill,2912,medium,692624.0,5820,5820 Framing Inspection,1
7188,13394,Peninsula Lakes,2154,medium,474879.0,5860,5860 Frame Stage Tour,1
7189,13476,Durham Farms,4277,medium,750956.0,5900,5900 Air Seal,1
7190,13277,Mosaic,1704,medium,561869.0,6180,6180 Install Insulation,2
7191,13112,Marlin Chase,3171,medium,634940.0,6300,6300 Energy Inspection,1
7192,13091,Marlin Chase,2591,medium,562928.0,6300,6300 Energy Inspection,1
7193,13113,Marlin Chase,2814,medium,750956.0,6340,6340 Install Overhead Door,1
7194,13091,Marlin Chase,2591,medium,562928.0,6380,6380 Install Drywall,12
7195,13030,Peninsula,5546,high,1768191.0,6390,6390 Schedule Gas Meter,1
7196,13137,Marlin Chase,2330,medium,637264.0,6391,6391 Install Gas Meter,1
7197,13091,Marlin Chase,2591,medium,562928.0,6620,6620 Receive Vinyl Siding,1
7198,13091,Marlin Chase,2591,medium,562928.0,6700,6700 Receive Composite Ext Trim,1
7199,13091,Marlin Chase,2591,medium,562928.0,6720,6720 Receive Siding Accents,1
7200,13091,Marlin Chase,2591,medium,562928.0,6740,6740 Receive PVC Exterior Trim,1
7201,13091,Marlin Chase,2591,medium,562928.0,6781,6781 Receive Column Wrap/Flower Bx/Pediment,1
7202,13091,Marlin Chase,2591,medium,562928.0,6820,6820 Receive Deck Skirting,1
7203,13144,Marlin Chase,3055,medium,740636.0,6860,6860 Siding Installation,5
7204,13277,Mosaic,1704,medium,561869.0,6860,6860 Siding Installation,5
7205,13278,Mosaic,2320,medium,818814.0,6910,6910 Install Brick Façade,1
7206,12920,Peninsula,4116,high,1454538.0,7140,7140 Exterior Painting,4
7207,12920,Peninsula,4116,high,1454538.0,7300,7300 Receive Interior Trim,1
7208,12920,Peninsula,4116,high,1454538.0,7304,7304 Receive Goodie Box,1
7209,12920,Peninsula,4116,high,1454538.0,7700,7700 Receive Interior Doors,1
7210,13152,Marlin Chase,2710,medium,768496.0,7860,7860 Install Interior Trim,2
7211,12920,Peninsula,4116,high,1454538.0,7862,7862 Receive Cabinet Hardware Allocation,1
7212,12920,Peninsula,4116,high,1454538.0,7866,7866 Receive Door Hardware,1
7213,12920,Peninsula,4116,high,1454538.0,7900,7900 Receive Cabinets Allocation,1
7214,12920,Peninsula,4116,high,1454538.0,7901,7901 Cabinet Delivery Charges,1
7215,12920,Peninsula,4116,high,1454538.0,7940,7940 Receive Vanity Tops,1
7216,13152,Marlin Chase,2710,medium,768496.0,7940,7940 Receive Vanity Tops,1
7217,13144,Marlin Chase,3055,medium,740636.0,8300,8300 Install Cabinets,2
7218,12832,Peninsula,4562,high,1090397.0,8380,8380 Template Countertops,1
7219,13120,Marsh Island,4291,medium,851477.0,8420,8420 1st Paint,1
7220,13144,Marlin Chase,3055,medium,740636.0,8579,8579 Template Shower Enclosure,1
7221,13137,Marlin Chase,2330,medium,637264.0,8920,8920 Install Water Heater/1st Trim,1
7222,13140,Marlin Chase,2824,medium,766881.0,8920,8920 Install Water Heater/1st Trim,1
7223,13175,Peninsula Lakes,2245,low,567645.0,8920,8920 Install Water Heater/1st Trim,1
7224,13175,Peninsula Lakes,2245,low,567645.0,9100,9100 HVAC Trim / Set Unit,27
7225,13137,Marlin Chase,2330,medium,637264.0,9100,9100 HVAC Trim / Set Unit,1
7226,13101,Marlin Chase,2461,medium,682900.0,9110,9110 Gas Trim,1
7227,13035,Forest Hills,4024,medium,816522.0,9140,9140 2nd Stage Air Seal,1
7228,13145,Marlin Chase,3204,medium,841553.0,9260,9260 Structured Wiring Trim,1
7229,13113,Marlin Chase,2814,medium,750956.0,9260,9260 Structured Wiring Trim,1
7230,12920,Peninsula,4116,high,1454538.0,9460,9460 Attic Insulation,1
7231,13144,Marlin Chase,3055,medium,740636.0,9541,9541 Receive N/S Appliance Pkg 1,1
7232,13175,Peninsula Lakes,2245,low,567645.0,9620,9620 Install Appliances,1
7233,12920,Peninsula,4116,high,1454538.0,9820,9820 Install Gutters,1
7234,13360,Peninsula Lakes,3496,medium,575090.0,9820,9820 Install Gutters,1
7235,13145,Marlin Chase,3204,medium,841553.0,9820,9820 Install Gutters,1
7236,13032,Welches Pond,2812,medium,643995.0,10300,10300 Install Driveway,1
7237,13113,Marlin Chase,2814,medium,750956.0,10300,10300 Install Driveway,1
7238,13032,Welches Pond,2812,medium,643995.0,10301,10301 Driveway Apron,1
7239,13032,Welches Pond,2812,medium,643995.0,10340,10340 Install Leadwalk & Comm. Sidewalk,1
7240,13138,Marlin Chase,3171,medium,859133.0,10340,10340 Install Leadwalk & Comm. Sidewalk,29
7241,13113,Marlin Chase,2814,medium,750956.0,10340,10340 Install Leadwalk & Comm. Sidewalk,1
7242,13137,Marlin Chase,2330,medium,637264.0,10345,10345 Pour Concrete Steps,1
7243,13032,Welches Pond,2812,medium,643995.0,10345,10345 Pour Concrete Steps,1
7244,13401,Welches Pond,2927,medium,731557.0,0,vancheck Check Vanity Tops/Windows for Damage,1
7245,13264,Welches Pond,3905,medium,915363.0,2,2 FRAMING START,1
7246,13495,Welches Pond,2650,medium,674167.0,1900,1900 Strip Foundation Forms,1
7247,13462,Peninsula,4787,high,1490269.0,2340,2340 Backfill & Compact,1
7248,13164,Welches Pond,4497,medium,1024665.0,2344,2344 Meter Pit Install,1
7249,13462,Peninsula,4787,high,1490269.0,2382,2382 Slab Insulation,1
7250,13264,Welches Pond,3905,medium,915363.0,2440,2440 Receive Steel,1
7251,13264,Welches Pond,3905,medium,915363.0,2460,2460 Receive Lumber Drop #1,1
7252,13264,Welches Pond,3905,medium,915363.0,2540,2540 Receive 1st Floor Joists,1
7253,13164,Welches Pond,4497,medium,1024665.0,2700,2700 Pour Garage Slab,1
7254,13529,Governors,1901,medium,787652.0,3020,3020 Termite & Pest PreTreatment,1
7255,13462,Peninsula,4787,high,1490269.0,3020,3020 Termite & Pest PreTreatment,1
7256,13164,Welches Pond,4497,medium,1024665.0,3100,3100 Foundation Survey,1
7257,13278,Mosaic,2320,medium,818814.0,3140,3140 Pour Porch Slab,1
7258,13264,Welches Pond,3905,medium,915363.0,3540,3540 Receive Lumber Drop #2,1
7259,13264,Welches Pond,3905,medium,915363.0,3740,3740 Receive 2nd Floor Joists,1
7260,13264,Welches Pond,3905,medium,915363.0,3900,3900 Receive Lumber Drop #3,1
7261,13520,Hailey's Glen,2792,medium,606920.0,4020,4020 Set Trusses,2
7262,13496,Hailey's Glen,3443,medium,316917.0,4380,4380 Roof Sheathing,3
7263,13485,Peninsula,4241,medium,706147.0,4380,4380 Roof Sheathing,1
7264,13281,Marlin Chase,3558,medium,786910.0,4461,4461 Install Gas Lateral,1
7265,13360,Peninsula Lakes,3496,medium,575090.0,4590,4590 Install Metal Roofing,1
7266,13120,Marsh Island,4291,medium,851477.0,4590,4590 Install Metal Roofing,1
7267,13468,Governors,2977,medium,869889.0,4591,4591 Install Metal Roof Flashing,1
7268,13281,Marlin Chase,3558,medium,786910.0,4591,4591 Install Metal Roof Flashing,1
7269,13476,Durham Farms,4277,medium,750956.0,4700,4700 Internal Framing Inspection,1
7270,13253,River Mill,2912,medium,692624.0,4700,4700 Internal Framing Inspection,1
7271,13496,Hailey's Glen,3443,medium,316917.0,4775,4775 Receive Hardwood Stairs,1
7272,13423,Governors,2974,medium,884692.0,4980,4980 Plumbing Rough,2
7273,13501,Hailey's Glen,2736,medium,694771.0,5180,5180 Electric Rough,3
7274,13501,Hailey's Glen,2736,medium,694771.0,5740,5740 Install Gas Lines,1
7275,13507,Welches Pond,2852,medium,845914.0,5820,5820 Framing Inspection,1
7276,13088,Forest Hills,3580,medium,222544.0,5820,5820 Framing Inspection,4
7277,13476,Durham Farms,4277,medium,750956.0,5820,5820 Framing Inspection,5
7278,13503,Marsh Island,4307,medium,892519.0,5825,5825 Frame Punch,1
7279,13423,Governors,2974,medium,884692.0,5825,5825 Frame Punch,1
7280,13349,Peninsula Lakes,2188,medium,442826.0,5860,5860 Frame Stage Tour,1
7281,13408,NewMarket,3940,medium,889253.0,6300,6300 Energy Inspection,1
7282,13408,NewMarket,3940,medium,889253.0,6305,6305 Energy Certification,1
7283,13277,Mosaic,1704,medium,561869.0,6345,6345 Stock Drywall,1
7284,13278,Mosaic,2320,medium,818814.0,6380,6380 Install Drywall,8
7285,13442,Walden,4633,medium,656370.0,6390,6390 Schedule Gas Meter,1
7286,13140,Marlin Chase,2824,medium,766881.0,6390,6390 Schedule Gas Meter,1
7287,13278,Mosaic,2320,medium,818814.0,6620,6620 Receive Vinyl Siding,1
7288,13278,Mosaic,2320,medium,818814.0,6660,6660 Receive Fiber Cement Siding,1
7289,13278,Mosaic,2320,medium,818814.0,6700,6700 Receive Composite Ext Trim,1
7290,13278,Mosaic,2320,medium,818814.0,6720,6720 Receive Siding Accents,1
7291,13278,Mosaic,2320,medium,818814.0,6721,6721 Receive Brackets,1
7292,13278,Mosaic,2320,medium,818814.0,6740,6740 Receive PVC Exterior Trim,1
7293,13278,Mosaic,2320,medium,818814.0,6781,6781 Receive Column Wrap/Flower Bx/Pediment,1
7294,13120,Marsh Island,4291,medium,851477.0,6862,6862 Trellis Construction,1
7295,13120,Marsh Island,4291,medium,851477.0,7220,7220 Install Deck Skirting/Flower Boxes,1
7296,13120,Marsh Island,4291,medium,851477.0,7340,7340 Install Ceramic Tile,3
7297,13120,Marsh Island,4291,medium,851477.0,7350,7350 Install Shower Tile,5
7298,13440,Marlin Chase,3067,medium,714189.0,7825,7825 Crawl Poly,1
7299,13145,Marlin Chase,3204,medium,841553.0,7825,7825 Crawl Poly,1
7300,13120,Marsh Island,4291,medium,851477.0,8020,8020 Receive Interior Railing,1
7301,12920,Peninsula,4116,high,1454538.0,8260,8260 Install Interior Railing,1
7302,13152,Marlin Chase,2710,medium,768496.0,8300,8300 Install Cabinets,2
7303,13144,Marlin Chase,3055,medium,740636.0,8380,8380 Template Countertops,1
7304,13360,Peninsula Lakes,3496,medium,575090.0,8420,8420 1st Paint,1
7305,13113,Marlin Chase,2814,medium,750956.0,8540,8540 Install Bath Accessories,1
7306,13113,Marlin Chase,2814,medium,750956.0,8545,8545 Install Mirrors,1
7307,13152,Marlin Chase,2710,medium,768496.0,8579,8579 Template Shower Enclosure,1
7308,13113,Marlin Chase,2814,medium,750956.0,8900,8900 Install Closet Shelving,1
7309,13032,Welches Pond,2812,medium,643995.0,8920,8920 Install Water Heater/1st Trim,1
7310,13144,Marlin Chase,3055,medium,740636.0,9540,9540 Rec. GE Appliance Pkg1 Allocation,1
7311,13152,Marlin Chase,2710,medium,768496.0,9620,9620 Install Appliances,1
7312,13137,Marlin Chase,2330,medium,637264.0,9820,9820 Install Gutters,1
7313,13140,Marlin Chase,2824,medium,766881.0,9820,9820 Install Gutters,1
7314,13113,Marlin Chase,2814,medium,750956.0,10260,10260 Install House Numbers,1
7315,13020,Peninsula Lakes,2100,low,578095.0,10301,10301 Driveway Apron,1
7316,13144,Marlin Chase,3055,medium,740636.0,10460,10460 Drywall Touch Up,2
7317,12832,Peninsula,4562,high,1090397.0,10500,10500 Paint 2,3
7318,13392,Marsh Island,2795,medium,771707.0,10940,10940 Framing Retainage,1
7319,13507,Welches Pond,2852,medium,845914.0,10940,10940 Framing Retainage,1
7320,13278,Mosaic,2320,medium,818814.0,10940,10940 Framing Retainage,1
7321,13099,Arbor-Lyn,2616,medium,381426.0,99999,99999 HOME COMPLETE,1
7322,13164,Welches Pond,4497,medium,1024665.0,2,2 FRAMING START,1
7323,13503,Marsh Island,4307,medium,892519.0,3,3 TRADES START,1
7324,13520,Hailey's Glen,2792,medium,606920.0,100,100 Framing DRAW 1,1
7325,13503,Marsh Island,4307,medium,892519.0,140,140 Framing DRAW 2,1
7326,13468,Governors,2977,medium,869889.0,140,140 Framing DRAW 2,1
7327,13495,Welches Pond,2650,medium,674167.0,1940,1940 Install Perimeter Drain/Croc,1
7328,13495,Welches Pond,2650,medium,674167.0,2060,2060 Waterproof Foundation Walls,1
7329,13462,Peninsula,4787,high,1490269.0,2344,2344 Meter Pit Install,1
7330,13140,Marlin Chase,2824,medium,766881.0,2344,2344 Meter Pit Install,1
7331,13164,Welches Pond,4497,medium,1024665.0,2440,2440 Receive Steel,1
7332,13164,Welches Pond,4497,medium,1024665.0,2460,2460 Receive Lumber Drop #1,1
7333,13088,Forest Hills,3580,medium,222544.0,3020,3020 Termite & Pest PreTreatment,1
7334,13258,River Mill,3064,medium,670416.0,3020,3020 Termite & Pest PreTreatment,1
7335,13462,Peninsula,4787,high,1490269.0,3100,3100 Foundation Survey,1
7336,13264,Welches Pond,3905,medium,915363.0,3300,3300 1st Floor Deck Framing,1
7337,13164,Welches Pond,4497,medium,1024665.0,3540,3540 Receive Lumber Drop #2,1
7338,13264,Welches Pond,3905,medium,915363.0,4070,4070 Receive Exterior Deck Material,1
7339,13485,Peninsula,4241,medium,706147.0,4071,4071 Receive Exterior Decking,1
7340,13468,Governors,2977,medium,869889.0,4100,4100 Exterior Deck Framing,1
7341,13503,Marsh Island,4307,medium,892519.0,4230,4230 Receive Housewrap/Flashing,1
7342,13520,Hailey's Glen,2792,medium,606920.0,4230,4230 Receive Housewrap/Flashing,1
7343,13496,Hailey's Glen,3443,medium,316917.0,4260,4260 Receive Windows,1
7344,13485,Peninsula,4241,medium,706147.0,4260,4260 Receive Windows,1
7345,13485,Peninsula,4241,medium,706147.0,4300,4300 Receive Window/Door Flashings,1
7346,13485,Peninsula,4241,medium,706147.0,4340,4340 Receive Exterior Doors,1
7347,13485,Peninsula,4241,medium,706147.0,4390,4390 Receive Roofing Material,1
7348,13392,Marsh Island,2795,medium,771707.0,4591,4591 Install Metal Roof Flashing,1
7349,13339,Peninsula,5583,high,750956.0,4591,4591 Install Metal Roof Flashing,1
7350,13397,Peninsula,5533,high,750956.0,4591,4591 Install Metal Roof Flashing,1
7351,13423,Governors,2974,medium,884692.0,4940,4940 Install Fireplace,1
7352,13120,Marsh Island,4291,medium,851477.0,4981,4981 Deliver Sinks,1
7353,13503,Marsh Island,4307,medium,892519.0,5100,5100 HVAC Rough,3
7354,13503,Marsh Island,4307,medium,892519.0,5120,5120 HVAC Set Furnace,1
7355,13281,Marlin Chase,3558,medium,786910.0,5180,5180 Electric Rough,5
7356,13349,Peninsula Lakes,2188,medium,442826.0,5180,5180 Electric Rough,3
7357,13258,River Mill,3064,medium,670416.0,5260,5260 Mechanical Rough Inspection,1
7358,13394,Peninsula Lakes,2154,medium,474879.0,5260,5260 Mechanical Rough Inspection,1
7359,13394,Peninsula Lakes,2154,medium,474879.0,5580,5580 Structured Wiring Rough,1
7360,13281,Marlin Chase,3558,medium,786910.0,5860,5860 Frame Stage Tour,1
7361,13465,Cardinal Grove,1764,medium,569722.0,6180,6180 Install Insulation,2
7362,13507,Welches Pond,2852,medium,845914.0,6180,6180 Install Insulation,2
7363,13277,Mosaic,1704,medium,561869.0,6300,6300 Energy Inspection,1
7364,13277,Mosaic,1704,medium,561869.0,6305,6305 Energy Certification,1
7365,13277,Mosaic,1704,medium,561869.0,6380,6380 Install Drywall,8
7366,13258,River Mill,3064,medium,670416.0,6620,6620 Receive Vinyl Siding,1
7367,13258,River Mill,3064,medium,670416.0,6700,6700 Receive Composite Ext Trim,1
7368,13258,River Mill,3064,medium,670416.0,6725,6725 Receive Shutters,1
7369,13258,River Mill,3064,medium,670416.0,6740,6740 Receive PVC Exterior Trim,1
7370,13278,Mosaic,2320,medium,818814.0,6860,6860 Siding Installation,5
7371,13277,Mosaic,1704,medium,561869.0,6910,6910 Install Brick Façade,1
7372,13120,Marsh Island,4291,medium,851477.0,7300,7300 Receive Interior Trim,1
7373,13120,Marsh Island,4291,medium,851477.0,7304,7304 Receive Goodie Box,1
7374,13360,Peninsula Lakes,3496,medium,575090.0,7340,7340 Install Ceramic Tile,3
7375,13360,Peninsula Lakes,3496,medium,575090.0,7350,7350 Install Shower Tile,4
7376,13120,Marsh Island,4291,medium,851477.0,7700,7700 Receive Interior Doors,1
7377,13145,Marlin Chase,3204,medium,841553.0,7861,7861 Interior Trim Punch,1
7378,13120,Marsh Island,4291,medium,851477.0,7862,7862 Receive Cabinet Hardware Allocation,1
7379,13120,Marsh Island,4291,medium,851477.0,7866,7866 Receive Door Hardware,1
7380,13120,Marsh Island,4291,medium,851477.0,7900,7900 Receive Cabinets Allocation,1
7381,13120,Marsh Island,4291,medium,851477.0,7901,7901 Cabinet Delivery Charges,1
7382,13120,Marsh Island,4291,medium,851477.0,8260,8260 Install Interior Railing,1
7383,13152,Marlin Chase,2710,medium,768496.0,8380,8380 Template Countertops,1
7384,13140,Marlin Chase,2824,medium,766881.0,8465,8465 Install Tiled Backsplash,1
7385,13101,Marlin Chase,2461,medium,682900.0,8540,8540 Install Bath Accessories,1
7386,13101,Marlin Chase,2461,medium,682900.0,8545,8545 Install Mirrors,15
7387,13101,Marlin Chase,2461,medium,682900.0,8580,8580 Install Shower Enclosures,1
7388,13101,Marlin Chase,2461,medium,682900.0,8900,8900 Install Closet Shelving,1
7389,13145,Marlin Chase,3204,medium,841553.0,8940,8940 Plumbing Trim,1
7390,13401,Welches Pond,2927,medium,731557.0,9020,9020 Electric Trim,5
7391,13401,Welches Pond,2927,medium,731557.0,9100,9100 HVAC Trim / Set Unit,1
7392,13140,Marlin Chase,2824,medium,766881.0,9100,9100 HVAC Trim / Set Unit,1
7393,13423,Governors,2974,medium,884692.0,9390,9390 Install Water Meter/Sewer Frame,1
7394,13360,Peninsula Lakes,3496,medium,575090.0,9460,9460 Attic Insulation,1
7395,12920,Peninsula,4116,high,1454538.0,9541,9541 Receive N/S Appliance Pkg 1,1
7396,13144,Marlin Chase,3055,medium,740636.0,9620,9620 Install Appliances,1
7397,13423,Governors,2974,medium,884692.0,9900,9900 Water Lateral,1
7398,13423,Governors,2974,medium,884692.0,9905,9905 Sewer Lateral,1
7399,13101,Marlin Chase,2461,medium,682900.0,9990,9990 2nd Stage Termite Treatment,1
7400,13101,Marlin Chase,2461,medium,682900.0,10260,10260 Install House Numbers,1
7401,13175,Peninsula Lakes,2245,low,567645.0,10300,10300 Install Driveway,1
7402,13152,Marlin Chase,2710,medium,768496.0,10460,10460 Drywall Touch Up,2
7403,13253,River Mill,2912,medium,692624.0,10940,10940 Framing Retainage,1
7404,13388,Marsh Island,5848,high,750956.0,10940,10940 Framing Retainage,1
7405,13476,Durham Farms,4277,medium,750956.0,10940,10940 Framing Retainage,46
7406,13468,Governors,2977,medium,869889.0,3,3 TRADES START,1
7407,13462,Peninsula,4787,high,1490269.0,2020,2020 Install Underground Plumbing,1
7408,13485,Peninsula,4241,medium,706147.0,2344,2344 Meter Pit Install,1
7409,13164,Welches Pond,4497,medium,1024665.0,2540,2540 Receive 1st Floor Joists,1
7410,13495,Welches Pond,2650,medium,674167.0,3020,3020 Termite & Pest PreTreatment,1
7411,13495,Welches Pond,2650,medium,674167.0,3060,3060 Foundation Insulation-Crawl,4
7412,13277,Mosaic,1704,medium,561869.0,3140,3140 Pour Porch Slab,1
7413,13164,Welches Pond,4497,medium,1024665.0,3300,3300 1st Floor Deck Framing,1
7414,13264,Welches Pond,3905,medium,915363.0,3380,3380 1st Floor Wall Framing,1
7415,13264,Welches Pond,3905,medium,915363.0,3700,3700 Receive Trusses,1
7416,13164,Welches Pond,4497,medium,1024665.0,3740,3740 Receive 2nd Floor Joists,1
7417,13164,Welches Pond,4497,medium,1024665.0,4070,4070 Receive Exterior Deck Material,1
7418,13485,Peninsula,4241,medium,706147.0,4100,4100 Exterior Deck Framing,1
7419,13339,Peninsula,5583,high,750956.0,4260,4260 Receive Windows,1
7420,13520,Hailey's Glen,2792,medium,606920.0,4380,4380 Roof Sheathing,2
7421,13264,Welches Pond,3905,medium,915363.0,4460,4460 Schedule Gas Lateral Contractor,1
7422,13496,Hailey's Glen,3443,medium,316917.0,4540,4540 Install Windows,1
7423,13485,Peninsula,4241,medium,706147.0,4540,4540 Install Windows,1
7424,13485,Peninsula,4241,medium,706147.0,4580,4580 Install Roofing,3
7425,13477,Cardinal Grove,2589,medium,750956.0,4590,4590 Install Metal Roofing,1
7426,13503,Marsh Island,4307,medium,892519.0,4591,4591 Install Metal Roof Flashing,1
7427,13388,Marsh Island,5848,high,750956.0,4700,4700 Internal Framing Inspection,1
7428,13496,Hailey's Glen,3443,medium,316917.0,4701,4701 Frame Check,1
7429,13485,Peninsula,4241,medium,706147.0,4701,4701 Frame Check,1
7430,13485,Peninsula,4241,medium,706147.0,4775,4775 Receive Hardwood Stairs,1
7431,13360,Peninsula Lakes,3496,medium,575090.0,4981,4981 Deliver Sinks,1
7432,13423,Governors,2974,medium,884692.0,5180,5180 Electric Rough,4
7433,13501,Hailey's Glen,2736,medium,694771.0,5260,5260 Mechanical Rough Inspection,1
7434,13394,Peninsula Lakes,2154,medium,474879.0,5300,5300 Municipal Electric Inspection,1
7435,13258,River Mill,3064,medium,670416.0,5300,5300 Municipal Electric Inspection,1
7436,13501,Hailey's Glen,2736,medium,694771.0,5580,5580 Structured Wiring Rough,1
7437,13030,Peninsula,5546,high,1768191.0,5580,5580 Structured Wiring Rough,3
7438,13423,Governors,2974,medium,884692.0,5740,5740 Install Gas Lines,1
7439,13423,Governors,2974,medium,884692.0,5860,5860 Frame Stage Tour,1
7440,13258,River Mill,3064,medium,670416.0,5900,5900 Air Seal,1
7441,13394,Peninsula Lakes,2154,medium,474879.0,5900,5900 Air Seal,1
7442,13253,River Mill,2912,medium,692624.0,6180,6180 Install Insulation,2
7443,13139,Marlin Chase,2554,medium,704067.0,6340,6340 Install Overhead Door,1
7444,13145,Marlin Chase,3204,medium,841553.0,6340,6340 Install Overhead Door,1
7445,13020,Peninsula Lakes,2100,low,578095.0,6340,6340 Install Overhead Door,1
7446,13465,Cardinal Grove,1764,medium,569722.0,6345,6345 Stock Drywall,1
7447,13477,Cardinal Grove,2589,medium,750956.0,6391,6391 Install Gas Meter,1
7448,13258,River Mill,3064,medium,670416.0,6860,6860 Siding Installation,5
7449,13253,River Mill,2912,medium,692624.0,6860,6860 Siding Installation,5
7450,13477,Cardinal Grove,2589,medium,750956.0,6884,6884 Measure Screen Porch Enclosure,1
7451,13477,Cardinal Grove,2589,medium,750956.0,7180,7180 Install Exterior Railings,1
7452,13140,Marlin Chase,2824,medium,766881.0,7180,7180 Install Exterior Railings,1
7453,13477,Cardinal Grove,2589,medium,750956.0,7220,7220 Install Deck Skirting/Flower Boxes,1
7454,13360,Peninsula Lakes,3496,medium,575090.0,7300,7300 Receive Interior Trim,1
7455,13360,Peninsula Lakes,3496,medium,575090.0,7304,7304 Receive Goodie Box,1
7456,13360,Peninsula Lakes,3496,medium,575090.0,7700,7700 Receive Interior Doors,1
7457,13120,Marsh Island,4291,medium,851477.0,7860,7860 Install Interior Trim,3
7458,12920,Peninsula,4116,high,1454538.0,7860,7860 Install Interior Trim,6
7459,13360,Peninsula Lakes,3496,medium,575090.0,7862,7862 Receive Cabinet Hardware Allocation,1
7460,13360,Peninsula Lakes,3496,medium,575090.0,7866,7866 Receive Door Hardware,1
7461,13360,Peninsula Lakes,3496,medium,575090.0,7900,7900 Receive Cabinets Allocation,1
7462,13360,Peninsula Lakes,3496,medium,575090.0,7901,7901 Cabinet Delivery Charges,1
7463,13120,Marsh Island,4291,medium,851477.0,7940,7940 Receive Vanity Tops,1
7464,13360,Peninsula Lakes,3496,medium,575090.0,8260,8260 Install Interior Railing,1
7465,12920,Peninsula,4116,high,1454538.0,8300,8300 Install Cabinets,3
7466,13035,Forest Hills,4024,medium,816522.0,8420,8420 1st Paint,1
7467,13401,Welches Pond,2927,medium,731557.0,8460,8460 Install Countertops,7
7468,13440,Marlin Chase,3067,medium,714189.0,8540,8540 Install Bath Accessories,1
7469,13440,Marlin Chase,3067,medium,714189.0,8545,8545 Install Mirrors,1
7470,13440,Marlin Chase,3067,medium,714189.0,8580,8580 Install Shower Enclosures,1
7471,13440,Marlin Chase,3067,medium,714189.0,8900,8900 Install Closet Shelving,1
7472,13145,Marlin Chase,3204,medium,841553.0,9110,9110 Gas Trim,1
7473,13477,Cardinal Grove,2589,medium,750956.0,9380,9380 Install Irrigation Well,1
7474,13139,Marlin Chase,2554,medium,704067.0,9740,9740 Fireplace Start Up,1
7475,13120,Marsh Island,4291,medium,851477.0,9820,9820 Install Gutters,1
7476,13477,Cardinal Grove,2589,medium,750956.0,9820,9820 Install Gutters,1
7477,13423,Governors,2974,medium,884692.0,9910,9910 Utility Grade,1
7478,13175,Peninsula Lakes,2245,low,567645.0,10220,10220 Install Mailbox,1
7479,13440,Marlin Chase,3067,medium,714189.0,10260,10260 Install House Numbers,1
7480,13020,Peninsula Lakes,2100,low,578095.0,10300,10300 Install Driveway,1
7481,13175,Peninsula Lakes,2245,low,567645.0,10301,10301 Driveway Apron,1
7482,13485,Peninsula,4241,medium,706147.0,140,140 Framing DRAW 2,1
7483,13496,Hailey's Glen,3443,medium,316917.0,140,140 Framing DRAW 2,1
7484,13462,Peninsula,4787,high,1490269.0,1980,1980 Install Underground Electric,1
7485,13529,Governors,1901,medium,787652.0,2340,2340 Backfill & Compact,1
7486,13164,Welches Pond,4497,medium,1024665.0,3380,3380 1st Floor Wall Framing,2
7487,13164,Welches Pond,4497,medium,1024665.0,3700,3700 Receive Trusses,1
7488,13264,Welches Pond,3905,medium,915363.0,3780,3780 2nd Floor Deck Framing,1
7489,13496,Hailey's Glen,3443,medium,316917.0,4100,4100 Exterior Deck Framing,1
7490,13496,Hailey's Glen,3443,medium,316917.0,4300,4300 Receive Window/Door Flashings,1
7491,13496,Hailey's Glen,3443,medium,316917.0,4340,4340 Receive Exterior Doors,1
7492,13496,Hailey's Glen,3443,medium,316917.0,4390,4390 Receive Roofing Material,1
7493,13164,Welches Pond,4497,medium,1024665.0,4460,4460 Schedule Gas Lateral Contractor,1
7494,13120,Marsh Island,4291,medium,851477.0,4461,4461 Install Gas Lateral,1
7495,13423,Governors,2974,medium,884692.0,4461,4461 Install Gas Lateral,1
7496,13408,NewMarket,3940,medium,889253.0,4590,4590 Install Metal Roofing,1
7497,13258,River Mill,3064,medium,670416.0,4700,4700 Internal Framing Inspection,1
7498,13030,Peninsula,5546,high,1768191.0,4700,4700 Internal Framing Inspection,1
7499,13394,Peninsula Lakes,2154,medium,474879.0,4700,4700 Internal Framing Inspection,1
7500,13485,Peninsula,4241,medium,706147.0,4777,4777 Receive Box Stairs,1
7501,13468,Governors,2977,medium,869889.0,4980,4980 Plumbing Rough,2
7502,13442,Walden,4633,medium,656370.0,5177,5177 Electric Meter Connection,1
7503,13349,Peninsula Lakes,2188,medium,442826.0,5220,5220 Solar Rough,1
7504,13281,Marlin Chase,3558,medium,786910.0,5260,5260 Mechanical Rough Inspection,1
7505,13349,Peninsula Lakes,2188,medium,442826.0,5260,5260 Mechanical Rough Inspection,1
7506,13501,Hailey's Glen,2736,medium,694771.0,5300,5300 Municipal Electric Inspection,1
7507,13349,Peninsula Lakes,2188,medium,442826.0,5580,5580 Structured Wiring Rough,1
7508,13281,Marlin Chase,3558,medium,786910.0,5580,5580 Structured Wiring Rough,1
7509,13258,River Mill,3064,medium,670416.0,5820,5820 Framing Inspection,1
7510,13392,Marsh Island,2795,medium,771707.0,5820,5820 Framing Inspection,1
7511,13496,Hailey's Glen,3443,medium,316917.0,5825,5825 Frame Punch,1
7512,13485,Peninsula,4241,medium,706147.0,5825,5825 Frame Punch,1
7513,13258,River Mill,3064,medium,670416.0,5860,5860 Frame Stage Tour,1
7514,13501,Hailey's Glen,2736,medium,694771.0,5900,5900 Air Seal,1
7515,13030,Peninsula,5546,high,1768191.0,5900,5900 Air Seal,1
7516,13465,Cardinal Grove,1764,medium,569722.0,6300,6300 Energy Inspection,1
7517,13507,Welches Pond,2852,medium,845914.0,6300,6300 Energy Inspection,1
7518,13507,Welches Pond,2852,medium,845914.0,6345,6345 Stock Drywall,1
7519,13465,Cardinal Grove,1764,medium,569722.0,6380,6380 Install Drywall,7
7520,13258,River Mill,3064,medium,670416.0,6390,6390 Schedule Gas Meter,1
7521,13253,River Mill,2912,medium,692624.0,6390,6390 Schedule Gas Meter,1
7522,13120,Marsh Island,4291,medium,851477.0,6391,6391 Install Gas Meter,1
7523,13408,NewMarket,3940,medium,889253.0,6391,6391 Install Gas Meter,1
7524,13442,Walden,4633,medium,656370.0,6620,6620 Receive Vinyl Siding,1
7525,13465,Cardinal Grove,1764,medium,569722.0,6620,6620 Receive Vinyl Siding,1
7526,13088,Forest Hills,3580,medium,222544.0,6620,6620 Receive Vinyl Siding,1
7527,13088,Forest Hills,3580,medium,222544.0,6660,6660 Receive Fiber Cement Siding,1
7528,13442,Walden,4633,medium,656370.0,6700,6700 Receive Composite Ext Trim,1
7529,13465,Cardinal Grove,1764,medium,569722.0,6700,6700 Receive Composite Ext Trim,1
7530,13088,Forest Hills,3580,medium,222544.0,6700,6700 Receive Composite Ext Trim,1
7531,13442,Walden,4633,medium,656370.0,6705,6705 Receive Trellis Material,1
7532,13442,Walden,4633,medium,656370.0,6720,6720 Receive Siding Accents,1
7533,13465,Cardinal Grove,1764,medium,569722.0,6720,6720 Receive Siding Accents,1
7534,13088,Forest Hills,3580,medium,222544.0,6720,6720 Receive Siding Accents,1
7535,13442,Walden,4633,medium,656370.0,6721,6721 Receive Brackets,1
7536,13442,Walden,4633,medium,656370.0,6725,6725 Receive Shutters,1
7537,13465,Cardinal Grove,1764,medium,569722.0,6725,6725 Receive Shutters,1
7538,13442,Walden,4633,medium,656370.0,6740,6740 Receive PVC Exterior Trim,1
7539,13465,Cardinal Grove,1764,medium,569722.0,6740,6740 Receive PVC Exterior Trim,1
7540,13088,Forest Hills,3580,medium,222544.0,6740,6740 Receive PVC Exterior Trim,1
7541,13442,Walden,4633,medium,656370.0,6781,6781 Receive Column Wrap/Flower Bx/Pediment,1
7542,13465,Cardinal Grove,1764,medium,569722.0,6781,6781 Receive Column Wrap/Flower Bx/Pediment,1
7543,13088,Forest Hills,3580,medium,222544.0,6781,6781 Receive Column Wrap/Flower Bx/Pediment,1
7544,13442,Walden,4633,medium,656370.0,6820,6820 Receive Deck Skirting,1
7545,13465,Cardinal Grove,1764,medium,569722.0,6820,6820 Receive Deck Skirting,1
7546,13408,NewMarket,3940,medium,889253.0,7060,7060 Exterior Masonry Installation,7
7547,13032,Welches Pond,2812,medium,643995.0,7060,7060 Exterior Masonry Installation,3
7548,13477,Cardinal Grove,2589,medium,750956.0,7140,7140 Exterior Painting,1
7549,13140,Marlin Chase,2824,medium,766881.0,7140,7140 Exterior Painting,1
7550,13152,Marlin Chase,2710,medium,768496.0,7220,7220 Install Deck Skirting/Flower Boxes,1
7551,13035,Forest Hills,4024,medium,816522.0,7340,7340 Install Ceramic Tile,2
7552,13035,Forest Hills,4024,medium,816522.0,7350,7350 Install Shower Tile,6
7553,13360,Peninsula Lakes,3496,medium,575090.0,7860,7860 Install Interior Trim,2
7554,13360,Peninsula Lakes,3496,medium,575090.0,8020,8020 Receive Interior Railing,1
7555,13401,Welches Pond,2927,medium,731557.0,8920,8920 Install Water Heater/1st Trim,1
7556,12832,Peninsula,4562,high,1090397.0,9020,9020 Electric Trim,3
7557,12832,Peninsula,4562,high,1090397.0,9100,9100 HVAC Trim / Set Unit,1
7558,13175,Peninsula Lakes,2245,low,567645.0,9260,9260 Structured Wiring Trim,1
7559,13120,Marsh Island,4291,medium,851477.0,9380,9380 Install Irrigation Well,1
7560,13144,Marlin Chase,3055,medium,740636.0,9460,9460 Attic Insulation,1
7561,13152,Marlin Chase,2710,medium,768496.0,9540,9540 Rec. GE Appliance Pkg1 Allocation,1
7562,13401,Welches Pond,2927,medium,731557.0,10301,10301 Driveway Apron,1
7563,13401,Welches Pond,2927,medium,731557.0,10340,10340 Install Leadwalk & Comm. Sidewalk,1
7564,13152,Marlin Chase,2710,medium,768496.0,10500,10500 Paint 2,4
7565,13144,Marlin Chase,3055,medium,740636.0,10500,10500 Paint 2,4
7566,13088,Forest Hills,3580,medium,222544.0,10940,10940 Framing Retainage,1
7567,13496,Hailey's Glen,3443,medium,316917.0,3,3 TRADES START,1
7568,13264,Welches Pond,3905,medium,915363.0,100,100 Framing DRAW 1,1
7569,13495,Welches Pond,2650,medium,674167.0,2260,2260 Crawl Stone/Sand,1
7570,13495,Welches Pond,2650,medium,674167.0,2340,2340 Backfill & Compact,1
7571,13507,Welches Pond,2852,medium,845914.0,3140,3140 Pour Porch Slab,1
7572,13264,Welches Pond,3905,medium,915363.0,3820,3820 2nd Floor Wall Framing,1
7573,13496,Hailey's Glen,3443,medium,316917.0,4071,4071 Receive Exterior Decking,1
7574,13503,Marsh Island,4307,medium,892519.0,4071,4071 Receive Exterior Decking,1
7575,13520,Hailey's Glen,2792,medium,606920.0,4100,4100 Exterior Deck Framing,1
7576,13520,Hailey's Glen,2792,medium,606920.0,4260,4260 Receive Windows,1
7577,13520,Hailey's Glen,2792,medium,606920.0,4300,4300 Receive Window/Door Flashings,1
7578,13520,Hailey's Glen,2792,medium,606920.0,4340,4340 Receive Exterior Doors,1
7579,13520,Hailey's Glen,2792,medium,606920.0,4390,4390 Receive Roofing Material,1
7580,13520,Hailey's Glen,2792,medium,606920.0,4460,4460 Schedule Gas Lateral Contractor,1
7581,13339,Peninsula,5583,high,750956.0,4540,4540 Install Windows,2
7582,13496,Hailey's Glen,3443,medium,316917.0,4580,4580 Install Roofing,2
7583,13277,Mosaic,1704,medium,561869.0,4590,4590 Install Metal Roofing,1
7584,13144,Marlin Chase,3055,medium,740636.0,4590,4590 Install Metal Roofing,1
7585,13501,Hailey's Glen,2736,medium,694771.0,4700,4700 Internal Framing Inspection,9
7586,13496,Hailey's Glen,3443,medium,316917.0,5100,5100 HVAC Rough,2
7587,13468,Governors,2977,medium,869889.0,5100,5100 HVAC Rough,2
7588,13468,Governors,2977,medium,869889.0,5120,5120 HVAC Set Furnace,1
7589,12993,Peninsula,5996,high,750956.0,5177,5177 Electric Meter Connection,1
7590,13465,Cardinal Grove,1764,medium,569722.0,5177,5177 Electric Meter Connection,1
7591,13423,Governors,2974,medium,884692.0,5260,5260 Mechanical Rough Inspection,1
7592,13349,Peninsula Lakes,2188,medium,442826.0,5300,5300 Municipal Electric Inspection,1
7593,13423,Governors,2974,medium,884692.0,5580,5580 Structured Wiring Rough,1
7594,13501,Hailey's Glen,2736,medium,694771.0,5860,5860 Frame Stage Tour,1
7595,13349,Peninsula Lakes,2188,medium,442826.0,5900,5900 Air Seal,1
7596,13164,Welches Pond,4497,medium,1024665.0,5940,5940 Order Cabinets,1
7597,13164,Welches Pond,4497,medium,1024665.0,5941,5941 Order Cabinet Hardware,1
7598,13088,Forest Hills,3580,medium,222544.0,6180,6180 Install Insulation,2
7599,13471,Cardinal Grove,2233,medium,517387.0,6180,6180 Install Insulation,2
7600,13253,River Mill,2912,medium,692624.0,6300,6300 Energy Inspection,1
7601,13253,River Mill,2912,medium,692624.0,6305,6305 Energy Certification,1
7602,13138,Marlin Chase,3171,medium,859133.0,6340,6340 Install Overhead Door,1
7603,13408,NewMarket,3940,medium,889253.0,6345,6345 Stock Drywall,1
7604,13507,Welches Pond,2852,medium,845914.0,6380,6380 Install Drywall,10
7605,13423,Governors,2974,medium,884692.0,6390,6390 Schedule Gas Meter,1
7606,13281,Marlin Chase,3558,medium,786910.0,6390,6390 Schedule Gas Meter,1
7607,13120,Marsh Island,4291,medium,851477.0,6390,6390 Schedule Gas Meter,1
7608,13144,Marlin Chase,3055,medium,740636.0,6391,6391 Install Gas Meter,1
7609,13507,Welches Pond,2852,medium,845914.0,6620,6620 Receive Vinyl Siding,1
7610,13507,Welches Pond,2852,medium,845914.0,6700,6700 Receive Composite Ext Trim,1
7611,13507,Welches Pond,2852,medium,845914.0,6720,6720 Receive Siding Accents,1
7612,13507,Welches Pond,2852,medium,845914.0,6725,6725 Receive Shutters,1
7613,13507,Welches Pond,2852,medium,845914.0,6740,6740 Receive PVC Exterior Trim,1
7614,13507,Welches Pond,2852,medium,845914.0,6781,6781 Receive Column Wrap/Flower Bx/Pediment,1
7615,13507,Welches Pond,2852,medium,845914.0,6820,6820 Receive Deck Skirting,1
7616,13112,Marlin Chase,3171,medium,634940.0,6860,6860 Siding Installation,9
7617,13091,Marlin Chase,2591,medium,562928.0,6860,6860 Siding Installation,16
7618,13442,Walden,4633,medium,656370.0,6860,6860 Siding Installation,5
7619,13465,Cardinal Grove,1764,medium,569722.0,6860,6860 Siding Installation,5
7620,13088,Forest Hills,3580,medium,222544.0,6860,6860 Siding Installation,5
7621,13144,Marlin Chase,3055,medium,740636.0,6884,6884 Measure Screen Porch Enclosure,1
7622,13137,Marlin Chase,2330,medium,637264.0,6885,6885 Install Screen Porch Enclosure,1
7623,12832,Peninsula,4562,high,1090397.0,6940,6940 Install Elevator,4
7624,13152,Marlin Chase,2710,medium,768496.0,7140,7140 Exterior Painting,1
7625,13408,NewMarket,3940,medium,889253.0,7140,7140 Exterior Painting,1
7626,13144,Marlin Chase,3055,medium,740636.0,7220,7220 Install Deck Skirting/Flower Boxes,1
7627,13113,Marlin Chase,2814,medium,750956.0,7825,7825 Crawl Poly,1
7628,13120,Marsh Island,4291,medium,851477.0,8300,8300 Install Cabinets,3
7629,12832,Peninsula,4562,high,1090397.0,8460,8460 Install Countertops,1
7630,13140,Marlin Chase,2824,medium,766881.0,8540,8540 Install Bath Accessories,1
7631,13140,Marlin Chase,2824,medium,766881.0,8545,8545 Install Mirrors,1
7632,13140,Marlin Chase,2824,medium,766881.0,8580,8580 Install Shower Enclosures,1
7633,13503,Marsh Island,4307,medium,892519.0,8820,8820 Schedule Irrigation Well,1
7634,13140,Marlin Chase,2824,medium,766881.0,8900,8900 Install Closet Shelving,1
7635,13112,Marlin Chase,3171,medium,634940.0,9140,9140 2nd Stage Air Seal,1
7636,13477,Cardinal Grove,2589,medium,750956.0,9140,9140 2nd Stage Air Seal,1
7637,13401,Welches Pond,2927,medium,731557.0,9260,9260 Structured Wiring Trim,1
7638,12832,Peninsula,4562,high,1090397.0,9260,9260 Structured Wiring Trim,1
7639,13468,Governors,2977,medium,869889.0,9390,9390 Install Water Meter/Sewer Frame,1
7640,13035,Forest Hills,4024,medium,816522.0,9460,9460 Attic Insulation,1
7641,13120,Marsh Island,4291,medium,851477.0,9541,9541 Receive N/S Appliance Pkg 1,1
7642,13120,Marsh Island,4291,medium,851477.0,9620,9620 Install Appliances,1
7643,13468,Governors,2977,medium,869889.0,9900,9900 Water Lateral,1
7644,13468,Governors,2977,medium,869889.0,9905,9905 Sewer Lateral,1
7645,13137,Marlin Chase,2330,medium,637264.0,9910,9910 Utility Grade,1
7646,13440,Marlin Chase,3067,medium,714189.0,9990,9990 2nd Stage Termite Treatment,1
7647,13140,Marlin Chase,2824,medium,766881.0,10260,10260 Install House Numbers,1
7648,13401,Welches Pond,2927,medium,731557.0,10300,10300 Install Driveway,10
7649,13507,Welches Pond,2852,medium,845914.0,10345,10345 Pour Concrete Steps,1
7650,13120,Marsh Island,4291,medium,851477.0,10460,10460 Drywall Touch Up,2
7651,13394,Peninsula Lakes,2154,medium,474879.0,10940,10940 Framing Retainage,1
7652,13258,River Mill,3064,medium,670416.0,10940,10940 Framing Retainage,1
7653,13144,Marlin Chase,3055,medium,740636.0,0,vancheck Check Vanity Tops/Windows for Damage,1
7654,13529,Governors,1901,medium,787652.0,2,2 FRAMING START,1
7655,13485,Peninsula,4241,medium,706147.0,3,3 TRADES START,1
7656,13462,Peninsula,4787,high,1490269.0,2140,2140 Underground Plumbing Inspection,1
7657,13495,Welches Pond,2650,medium,674167.0,2344,2344 Meter Pit Install,1
7658,13139,Marlin Chase,2554,medium,704067.0,2344,2344 Meter Pit Install,1
7659,13529,Governors,1901,medium,787652.0,2380,2380 Pour Basement Slab,1
7660,13529,Governors,1901,medium,787652.0,2440,2440 Receive Steel,1
7661,13529,Governors,1901,medium,787652.0,2460,2460 Receive Lumber Drop #1,1
7662,13495,Welches Pond,2650,medium,674167.0,2700,2700 Pour Garage Slab,1
7663,13529,Governors,1901,medium,787652.0,2700,2700 Pour Garage Slab,1
7664,13495,Welches Pond,2650,medium,674167.0,3100,3100 Foundation Survey,1
7665,13529,Governors,1901,medium,787652.0,3540,3540 Receive Lumber Drop #2,1
7666,13164,Welches Pond,4497,medium,1024665.0,3780,3780 2nd Floor Deck Framing,1
7667,13529,Governors,1901,medium,787652.0,3900,3900 Receive Lumber Drop #3,1
7668,13264,Welches Pond,3905,medium,915363.0,4020,4020 Set Trusses,3
7669,13520,Hailey's Glen,2792,medium,606920.0,4071,4071 Receive Exterior Decking,1
7670,13408,NewMarket,3940,medium,889253.0,4071,4071 Receive Exterior Decking,1
7671,13264,Welches Pond,3905,medium,915363.0,4230,4230 Receive Housewrap/Flashing,1
7672,13520,Hailey's Glen,2792,medium,606920.0,4540,4540 Install Windows,1
7673,13520,Hailey's Glen,2792,medium,606920.0,4580,4580 Install Roofing,2
7674,13496,Hailey's Glen,3443,medium,316917.0,4582,4582 Install Temp Poly,1
7675,13485,Peninsula,4241,medium,706147.0,4585,4585 Install Membrane Roofing,2
7676,13349,Peninsula Lakes,2188,medium,442826.0,4700,4700 Internal Framing Inspection,1
7677,13520,Hailey's Glen,2792,medium,606920.0,4701,4701 Frame Check,1
7678,13485,Peninsula,4241,medium,706147.0,5100,5100 HVAC Rough,2
7679,13485,Peninsula,4241,medium,706147.0,5120,5120 HVAC Set Furnace,1
7680,13278,Mosaic,2320,medium,818814.0,5177,5177 Electric Meter Connection,1
7681,13468,Governors,2977,medium,869889.0,5180,5180 Electric Rough,3
7682,13423,Governors,2974,medium,884692.0,5300,5300 Municipal Electric Inspection,1
7683,13501,Hailey's Glen,2736,medium,694771.0,5820,5820 Framing Inspection,1
7684,13423,Governors,2974,medium,884692.0,5900,5900 Air Seal,1
7685,13281,Marlin Chase,3558,medium,786910.0,5900,5900 Air Seal,1
7686,13476,Durham Farms,4277,medium,750956.0,6180,6180 Install Insulation,2
7687,13471,Cardinal Grove,2233,medium,517387.0,6300,6300 Energy Inspection,1
7688,13471,Cardinal Grove,2233,medium,517387.0,6345,6345 Stock Drywall,1
7689,13408,NewMarket,3940,medium,889253.0,6380,6380 Install Drywall,9
7690,13145,Marlin Chase,3204,medium,841553.0,6381,6381 Drywall Punch,1
7691,13112,Marlin Chase,3171,medium,634940.0,6390,6390 Schedule Gas Meter,1
7692,13507,Welches Pond,2852,medium,845914.0,6860,6860 Siding Installation,9
7693,12920,Peninsula,4116,high,1454538.0,6885,6885 Install Screen Porch Enclosure,18
7694,13408,NewMarket,3940,medium,889253.0,6910,6910 Install Brick Façade,1
7695,13360,Peninsula Lakes,3496,medium,575090.0,8300,8300 Install Cabinets,2
7696,13035,Forest Hills,4024,medium,816522.0,8300,8300 Install Cabinets,3
7697,12920,Peninsula,4116,high,1454538.0,8380,8380 Template Countertops,1
7698,13112,Marlin Chase,3171,medium,634940.0,8420,8420 1st Paint,2
7699,13136,Marlin Chase,3170,medium,806102.0,8540,8540 Install Bath Accessories,1
7700,13360,Peninsula Lakes,3496,medium,575090.0,8579,8579 Template Shower Enclosure,1
7701,13120,Marsh Island,4291,medium,851477.0,8579,8579 Template Shower Enclosure,1
7702,12920,Peninsula,4116,high,1454538.0,8579,8579 Template Shower Enclosure,1
7703,13136,Marlin Chase,3170,medium,806102.0,8580,8580 Install Shower Enclosures,1
7704,12832,Peninsula,4562,high,1090397.0,8920,8920 Install Water Heater/1st Trim,1
7705,12832,Peninsula,4562,high,1090397.0,9101,9101 HVAC Startup,17
7706,13278,Mosaic,2320,medium,818814.0,9140,9140 2nd Stage Air Seal,1
7707,13360,Peninsula Lakes,3496,medium,575090.0,9390,9390 Install Water Meter/Sewer Frame,1
7708,13477,Cardinal Grove,2589,medium,750956.0,9460,9460 Attic Insulation,1
7709,12920,Peninsula,4116,high,1454538.0,9540,9540 Rec. GE Appliance Pkg1 Allocation,1
7710,12920,Peninsula,4116,high,1454538.0,9620,9620 Install Appliances,1
7711,13281,Marlin Chase,3558,medium,786910.0,9910,9910 Utility Grade,1
7712,13112,Marlin Chase,3171,medium,634940.0,9910,9910 Utility Grade,1
7713,13136,Marlin Chase,3170,medium,806102.0,10260,10260 Install House Numbers,1
7714,12832,Peninsula,4562,high,1090397.0,10300,10300 Install Driveway,1
7715,12832,Peninsula,4562,high,1090397.0,10340,10340 Install Leadwalk & Comm. Sidewalk,1
7716,13501,Hailey's Glen,2736,medium,694771.0,10940,10940 Framing Retainage,1
7717,13152,Marlin Chase,2710,medium,768496.0,0,vancheck Check Vanity Tops/Windows for Damage,1
7718,13495,Welches Pond,2650,medium,674167.0,2,2 FRAMING START,1
7719,13339,Peninsula,5583,high,750956.0,3,3 TRADES START,1
7720,13164,Welches Pond,4497,medium,1024665.0,100,100 Framing DRAW 1,1
7721,13520,Hailey's Glen,2792,medium,606920.0,140,140 Framing DRAW 2,1
7722,13462,Peninsula,4787,high,1490269.0,2250,2250 Slab Prep,1
7723,13462,Peninsula,4787,high,1490269.0,2420,2420 Slab Inspection,1
7724,13495,Welches Pond,2650,medium,674167.0,2440,2440 Receive Steel,1
7725,13495,Welches Pond,2650,medium,674167.0,2460,2460 Receive Lumber Drop #1,1
7726,13495,Welches Pond,2650,medium,674167.0,2540,2540 Receive 1st Floor Joists,1
7727,13495,Welches Pond,2650,medium,674167.0,3540,3540 Receive Lumber Drop #2,1
7728,13164,Welches Pond,4497,medium,1024665.0,3820,3820 2nd Floor Wall Framing,2
7729,13495,Welches Pond,2650,medium,674167.0,3900,3900 Receive Lumber Drop #3,1
7730,13529,Governors,1901,medium,787652.0,4070,4070 Receive Exterior Deck Material,1
7731,13503,Marsh Island,4307,medium,892519.0,4260,4260 Receive Windows,1
7732,13503,Marsh Island,4307,medium,892519.0,4340,4340 Receive Exterior Doors,1
7733,13468,Governors,2977,medium,869889.0,4461,4461 Install Gas Lateral,1
7734,13520,Hailey's Glen,2792,medium,606920.0,4582,4582 Install Temp Poly,1
7735,13278,Mosaic,2320,medium,818814.0,4590,4590 Install Metal Roofing,1
7736,13281,Marlin Chase,3558,medium,786910.0,4700,4700 Internal Framing Inspection,1
7737,13423,Governors,2974,medium,884692.0,4700,4700 Internal Framing Inspection,1
7738,13468,Governors,2977,medium,869889.0,4701,4701 Frame Check,1
7739,13520,Hailey's Glen,2792,medium,606920.0,4775,4775 Receive Hardwood Stairs,1
7740,13496,Hailey's Glen,3443,medium,316917.0,4980,4980 Plumbing Rough,2
7741,13503,Marsh Island,4307,medium,892519.0,4980,4980 Plumbing Rough,2
7742,13035,Forest Hills,4024,medium,816522.0,4981,4981 Deliver Sinks,1
7743,13339,Peninsula,5583,high,750956.0,5100,5100 HVAC Rough,4
7744,13471,Cardinal Grove,2233,medium,517387.0,5177,5177 Electric Meter Connection,1
7745,13281,Marlin Chase,3558,medium,786910.0,5220,5220 Solar Rough,1
7746,13030,Peninsula,5546,high,1768191.0,5260,5260 Mechanical Rough Inspection,1
7747,13030,Peninsula,5546,high,1768191.0,5300,5300 Municipal Electric Inspection,1
7748,13520,Hailey's Glen,2792,medium,606920.0,5825,5825 Frame Punch,1
7749,13468,Governors,2977,medium,869889.0,5860,5860 Frame Stage Tour,1
7750,13503,Marsh Island,4307,medium,892519.0,5940,5940 Order Cabinets,1
7751,13501,Hailey's Glen,2736,medium,694771.0,6180,6180 Install Insulation,2
7752,13253,River Mill,2912,medium,692624.0,6345,6345 Stock Drywall,1
7753,13471,Cardinal Grove,2233,medium,517387.0,6380,6380 Install Drywall,10
7754,13476,Durham Farms,4277,medium,750956.0,6390,6390 Schedule Gas Meter,1
7755,13137,Marlin Chase,2330,medium,637264.0,6390,6390 Schedule Gas Meter,1
7756,13278,Mosaic,2320,medium,818814.0,6391,6391 Install Gas Meter,1
7757,13140,Marlin Chase,2824,medium,766881.0,6391,6391 Install Gas Meter,1
7758,13253,River Mill,2912,medium,692624.0,6620,6620 Receive Vinyl Siding,1
7759,13471,Cardinal Grove,2233,medium,517387.0,6620,6620 Receive Vinyl Siding,1
7760,13471,Cardinal Grove,2233,medium,517387.0,6700,6700 Receive Composite Ext Trim,1
7761,13253,River Mill,2912,medium,692624.0,6700,6700 Receive Composite Ext Trim,1
7762,13471,Cardinal Grove,2233,medium,517387.0,6720,6720 Receive Siding Accents,1
7763,13471,Cardinal Grove,2233,medium,517387.0,6725,6725 Receive Shutters,1
7764,13471,Cardinal Grove,2233,medium,517387.0,6740,6740 Receive PVC Exterior Trim,1
7765,13253,River Mill,2912,medium,692624.0,6740,6740 Receive PVC Exterior Trim,1
7766,13471,Cardinal Grove,2233,medium,517387.0,6781,6781 Receive Column Wrap/Flower Bx/Pediment,1
7767,13394,Peninsula Lakes,2154,medium,474879.0,6781,6781 Receive Column Wrap/Flower Bx/Pediment,1
7768,13471,Cardinal Grove,2233,medium,517387.0,6820,6820 Receive Deck Skirting,1
7769,13152,Marlin Chase,2710,medium,768496.0,6884,6884 Measure Screen Porch Enclosure,1
7770,13339,Peninsula,5583,high,750956.0,6900,6900 Schedule Septic Installation,1
7771,13032,Welches Pond,2812,medium,643995.0,7180,7180 Install Exterior Railings,5
7772,13035,Forest Hills,4024,medium,816522.0,7300,7300 Receive Interior Trim,1
7773,13035,Forest Hills,4024,medium,816522.0,7304,7304 Receive Goodie Box,1
7774,13035,Forest Hills,4024,medium,816522.0,7700,7700 Receive Interior Doors,1
7775,13140,Marlin Chase,2824,medium,766881.0,7825,7825 Crawl Poly,1
7776,13113,Marlin Chase,2814,medium,750956.0,7861,7861 Interior Trim Punch,1
7777,13139,Marlin Chase,2554,medium,704067.0,7861,7861 Interior Trim Punch,1
7778,13035,Forest Hills,4024,medium,816522.0,7862,7862 Receive Cabinet Hardware Allocation,1
7779,13035,Forest Hills,4024,medium,816522.0,7900,7900 Receive Cabinets Allocation,1
7780,13035,Forest Hills,4024,medium,816522.0,7901,7901 Cabinet Delivery Charges,1
7781,13035,Forest Hills,4024,medium,816522.0,7940,7940 Receive Vanity Tops,1
7782,13035,Forest Hills,4024,medium,816522.0,8020,8020 Receive Interior Railing,1
7783,13152,Marlin Chase,2710,medium,768496.0,8460,8460 Install Countertops,1
7784,13113,Marlin Chase,2814,medium,750956.0,8580,8580 Install Shower Enclosures,1
7785,13496,Hailey's Glen,3443,medium,316917.0,8820,8820 Schedule Irrigation Well,1
7786,12993,Peninsula,5996,high,750956.0,8920,8920 Install Water Heater/1st Trim,1
7787,12832,Peninsula,4562,high,1090397.0,9060,9060 Final Electric Inspection,1
7788,13401,Welches Pond,2927,medium,731557.0,9060,9060 Final Electric Inspection,37
7789,12993,Peninsula,5996,high,750956.0,9101,9101 HVAC Startup,1
7790,13091,Marlin Chase,2591,medium,562928.0,9140,9140 2nd Stage Air Seal,1
7791,13277,Mosaic,1704,medium,561869.0,9140,9140 2nd Stage Air Seal,1
7792,13137,Marlin Chase,2330,medium,637264.0,9700,9700 Install Hardwood Flooring,1
7793,13101,Marlin Chase,2461,medium,682900.0,9755,9755 Rec. GE Appliance Pkg2 Allocation,1
7794,13140,Marlin Chase,2824,medium,766881.0,9990,9990 2nd Stage Termite Treatment,1
7795,12832,Peninsula,4562,high,1090397.0,10180,10180 Shrub Installation,1
7796,13140,Marlin Chase,2824,medium,766881.0,10300,10300 Install Driveway,1
7797,12832,Peninsula,4562,high,1090397.0,10380,10380 As Built Survey,1
7798,13360,Peninsula Lakes,3496,medium,575090.0,10460,10460 Drywall Touch Up,2
7799,13120,Marsh Island,4291,medium,851477.0,10500,10500 Paint 2,3
7800,13101,Marlin Chase,2461,medium,682900.0,10620,10620 Punch Out Allocation,1
7801,13030,Peninsula,5546,high,1768191.0,10940,10940 Framing Retainage,1
7802,13349,Peninsula Lakes,2188,medium,442826.0,10940,10940 Framing Retainage,1
7803,13520,Hailey's Glen,2792,medium,606920.0,3,3 TRADES START,1
7804,13529,Governors,1901,medium,787652.0,2140,2140 Underground Plumbing Inspection,1
7805,13138,Marlin Chase,3171,medium,859133.0,2344,2344 Meter Pit Install,1
7806,13462,Peninsula,4787,high,1490269.0,2385,2385 Pour SOG Slab,1
7807,13462,Peninsula,4787,high,1490269.0,2700,2700 Pour Garage Slab,1
7808,13495,Welches Pond,2650,medium,674167.0,3300,3300 1st Floor Deck Framing,1
7809,13495,Welches Pond,2650,medium,674167.0,4070,4070 Receive Exterior Deck Material,1
7810,13264,Welches Pond,3905,medium,915363.0,4260,4260 Receive Windows,1
7811,13264,Welches Pond,3905,medium,915363.0,4300,4300 Receive Window/Door Flashings,1
7812,13503,Marsh Island,4307,medium,892519.0,4300,4300 Receive Window/Door Flashings,1
7813,13264,Welches Pond,3905,medium,915363.0,4340,4340 Receive Exterior Doors,1
7814,13264,Welches Pond,3905,medium,915363.0,4390,4390 Receive Roofing Material,1
7815,13503,Marsh Island,4307,medium,892519.0,4540,4540 Install Windows,1
7816,13264,Welches Pond,3905,medium,915363.0,4777,4777 Receive Box Stairs,1
7817,13485,Peninsula,4241,medium,706147.0,4940,4940 Install Fireplace,1
7818,13485,Peninsula,4241,medium,706147.0,4980,4980 Plumbing Rough,2
7819,13520,Hailey's Glen,2792,medium,606920.0,5100,5100 HVAC Rough,2
7820,13520,Hailey's Glen,2792,medium,606920.0,5120,5120 HVAC Set Furnace,1
7821,13507,Welches Pond,2852,medium,845914.0,5177,5177 Electric Meter Connection,22
7822,13468,Governors,2977,medium,869889.0,5260,5260 Mechanical Rough Inspection,1
7823,13281,Marlin Chase,3558,medium,786910.0,5300,5300 Municipal Electric Inspection,1
7824,13468,Governors,2977,medium,869889.0,5580,5580 Structured Wiring Rough,1
7825,13468,Governors,2977,medium,869889.0,5740,5740 Install Gas Lines,1
7826,13281,Marlin Chase,3558,medium,786910.0,5820,5820 Framing Inspection,1
7827,13030,Peninsula,5546,high,1768191.0,5820,5820 Framing Inspection,1
7828,13264,Welches Pond,3905,medium,915363.0,5940,5940 Order Cabinets,1
7829,13264,Welches Pond,3905,medium,915363.0,5941,5941 Order Cabinet Hardware,1
7830,13392,Marsh Island,2795,medium,771707.0,6180,6180 Install Insulation,1
7831,13476,Durham Farms,4277,medium,750956.0,6300,6300 Energy Inspection,1
7832,13088,Forest Hills,3580,medium,222544.0,6300,6300 Energy Inspection,1
7833,13088,Forest Hills,3580,medium,222544.0,6305,6305 Energy Certification,1
7834,13477,Cardinal Grove,2589,medium,750956.0,6340,6340 Install Overhead Door,1
7835,12993,Peninsula,5996,high,750956.0,6340,6340 Install Overhead Door,1
7836,13476,Durham Farms,4277,medium,750956.0,6344,6344 Receive Drywall,1
7837,13088,Forest Hills,3580,medium,222544.0,6345,6345 Stock Drywall,1
7838,13468,Governors,2977,medium,869889.0,6390,6390 Schedule Gas Meter,1
7839,13440,Marlin Chase,3067,medium,714189.0,6391,6391 Install Gas Meter,1
7840,13030,Peninsula,5546,high,1768191.0,6391,6391 Install Gas Meter,1
7841,13388,Marsh Island,5848,high,750956.0,6781,6781 Receive Column Wrap/Flower Bx/Pediment,1
7842,13471,Cardinal Grove,2233,medium,517387.0,6860,6860 Siding Installation,7
7843,13253,River Mill,2912,medium,692624.0,6910,6910 Install Brick Façade,1
7844,13112,Marlin Chase,3171,medium,634940.0,7340,7340 Install Ceramic Tile,2
7845,13112,Marlin Chase,3171,medium,634940.0,7350,7350 Install Shower Tile,10
7846,13136,Marlin Chase,3170,medium,806102.0,7825,7825 Crawl Poly,1
7847,13035,Forest Hills,4024,medium,816522.0,7860,7860 Install Interior Trim,4
7848,13140,Marlin Chase,2824,medium,766881.0,7861,7861 Interior Trim Punch,1
7849,13112,Marlin Chase,3171,medium,634940.0,8020,8020 Receive Interior Railing,1
7850,13112,Marlin Chase,3171,medium,634940.0,8220,8220 Install Fireplace Surround/Mantel,1
7851,13120,Marsh Island,4291,medium,851477.0,8220,8220 Install Fireplace Surround/Mantel,1
7852,13035,Forest Hills,4024,medium,816522.0,8260,8260 Install Interior Railing,6
7853,13360,Peninsula Lakes,3496,medium,575090.0,8380,8380 Template Countertops,1
7854,13120,Marsh Island,4291,medium,851477.0,8380,8380 Template Countertops,1
7855,13477,Cardinal Grove,2589,medium,750956.0,8420,8420 1st Paint,1
7856,13144,Marlin Chase,3055,medium,740636.0,8460,8460 Install Countertops,1
7857,12832,Peninsula,4562,high,1090397.0,8465,8465 Install Tiled Backsplash,1
7858,12993,Peninsula,5996,high,750956.0,8540,8540 Install Bath Accessories,1
7859,12993,Peninsula,5996,high,750956.0,8545,8545 Install Mirrors,1
7860,13136,Marlin Chase,3170,medium,806102.0,8545,8545 Install Mirrors,1
7861,12993,Peninsula,5996,high,750956.0,8580,8580 Install Shower Enclosures,1
7862,12993,Peninsula,5996,high,750956.0,8900,8900 Install Closet Shelving,1
7863,13136,Marlin Chase,3170,medium,806102.0,8900,8900 Install Closet Shelving,1
7864,13113,Marlin Chase,2814,medium,750956.0,8940,8940 Plumbing Trim,1
7865,13144,Marlin Chase,3055,medium,740636.0,9020,9020 Electric Trim,3
7866,13144,Marlin Chase,3055,medium,740636.0,9260,9260 Structured Wiring Trim,1
7867,12993,Peninsula,5996,high,750956.0,9260,9260 Structured Wiring Trim,1
7868,13278,Mosaic,2320,medium,818814.0,9460,9460 Attic Insulation,1
7869,13277,Mosaic,1704,medium,561869.0,9460,9460 Attic Insulation,1
7870,12993,Peninsula,5996,high,750956.0,9700,9700 Install Hardwood Flooring,2
7871,13145,Marlin Chase,3204,medium,841553.0,9755,9755 Rec. GE Appliance Pkg2 Allocation,1
7872,13468,Governors,2977,medium,869889.0,9910,9910 Utility Grade,1
7873,13144,Marlin Chase,3055,medium,740636.0,9910,9910 Utility Grade,1
7874,13137,Marlin Chase,2330,medium,637264.0,9990,9990 2nd Stage Termite Treatment,1
7875,13145,Marlin Chase,3204,medium,841553.0,9990,9990 2nd Stage Termite Treatment,1
7876,12832,Peninsula,4562,high,1090397.0,9990,9990 2nd Stage Termite Treatment,1
7877,12993,Peninsula,5996,high,750956.0,10260,10260 Install House Numbers,1
7878,13136,Marlin Chase,3170,medium,806102.0,10300,10300 Install Driveway,1
7879,13152,Marlin Chase,2710,medium,768496.0,10301,10301 Driveway Apron,1
7880,13145,Marlin Chase,3204,medium,841553.0,10501,10501 Paint Retouch,1
7881,13145,Marlin Chase,3204,medium,841553.0,10620,10620 Punch Out Allocation,1
7882,13423,Governors,2974,medium,884692.0,10940,10940 Framing Retainage,1
7883,13281,Marlin Chase,3558,medium,786910.0,10940,10940 Framing Retainage,1
7884,13120,Marsh Island,4291,medium,851477.0,0,vancheck Check Vanity Tops/Windows for Damage,1
7885,13462,Peninsula,4787,high,1490269.0,2,2 FRAMING START,1
7886,13462,Peninsula,4787,high,1490269.0,2440,2440 Receive Steel,1
7887,13462,Peninsula,4787,high,1490269.0,2460,2460 Receive Lumber Drop #1,1
7888,13264,Welches Pond,3905,medium,915363.0,3340,3340 Basement Wall Framing,1
7889,13495,Welches Pond,2650,medium,674167.0,3380,3380 1st Floor Wall Framing,2
7890,13462,Peninsula,4787,high,1490269.0,3540,3540 Receive Lumber Drop #2,1
7891,13495,Welches Pond,2650,medium,674167.0,3700,3700 Receive Trusses,1
7892,13462,Peninsula,4787,high,1490269.0,3740,3740 Receive 2nd Floor Joists,1
7893,13462,Peninsula,4787,high,1490269.0,3900,3900 Receive Lumber Drop #3,1
7894,13462,Peninsula,4787,high,1490269.0,3990,3990 Receive 3nd Floor Joists,1
7895,13164,Welches Pond,4497,medium,1024665.0,4020,4020 Set Trusses,1
7896,13264,Welches Pond,3905,medium,915363.0,4071,4071 Receive Exterior Decking,1
7897,13476,Durham Farms,4277,medium,750956.0,4071,4071 Receive Exterior Decking,16
7898,13164,Welches Pond,4497,medium,1024665.0,4230,4230 Receive Housewrap/Flashing,1
7899,13264,Welches Pond,3905,medium,915363.0,4380,4380 Roof Sheathing,3
7900,13495,Welches Pond,2650,medium,674167.0,4460,4460 Schedule Gas Lateral Contractor,1
7901,13264,Welches Pond,3905,medium,915363.0,4540,4540 Install Windows,1
7902,13264,Welches Pond,3905,medium,915363.0,4580,4580 Install Roofing,2
7903,13264,Welches Pond,3905,medium,915363.0,4701,4701 Frame Check,1
7904,13503,Marsh Island,4307,medium,892519.0,4777,4777 Receive Box Stairs,1
7905,13278,Mosaic,2320,medium,818814.0,4981,4981 Deliver Sinks,1
7906,13496,Hailey's Glen,3443,medium,316917.0,5180,5180 Electric Rough,4
7907,13468,Governors,2977,medium,869889.0,5825,5825 Frame Punch,1
7908,13503,Marsh Island,4307,medium,892519.0,5860,5860 Frame Stage Tour,1
7909,13468,Governors,2977,medium,869889.0,5900,5900 Air Seal,1
7910,13529,Governors,1901,medium,787652.0,5940,5940 Order Cabinets,1
7911,13529,Governors,1901,medium,787652.0,5941,5941 Order Cabinet Hardware,1
7912,13030,Peninsula,5546,high,1768191.0,6180,6180 Install Insulation,2
7913,13501,Hailey's Glen,2736,medium,694771.0,6300,6300 Energy Inspection,1
7914,13392,Marsh Island,2795,medium,771707.0,6345,6345 Stock Drywall,1
7915,13476,Durham Farms,4277,medium,750956.0,6380,6380 Install Drywall,5
7916,13253,River Mill,2912,medium,692624.0,6380,6380 Install Drywall,8
7917,13140,Marlin Chase,2824,medium,766881.0,6381,6381 Drywall Punch,1
7918,13349,Peninsula Lakes,2188,medium,442826.0,6620,6620 Receive Vinyl Siding,1
7919,13394,Peninsula Lakes,2154,medium,474879.0,6620,6620 Receive Vinyl Siding,1
7920,13394,Peninsula Lakes,2154,medium,474879.0,6700,6700 Receive Composite Ext Trim,1
7921,13349,Peninsula Lakes,2188,medium,442826.0,6700,6700 Receive Composite Ext Trim,1
7922,13349,Peninsula Lakes,2188,medium,442826.0,6720,6720 Receive Siding Accents,1
7923,13394,Peninsula Lakes,2154,medium,474879.0,6720,6720 Receive Siding Accents,1
7924,13394,Peninsula Lakes,2154,medium,474879.0,6725,6725 Receive Shutters,1
7925,13349,Peninsula Lakes,2188,medium,442826.0,6725,6725 Receive Shutters,1
7926,13349,Peninsula Lakes,2188,medium,442826.0,6740,6740 Receive PVC Exterior Trim,1
7927,13394,Peninsula Lakes,2154,medium,474879.0,6740,6740 Receive PVC Exterior Trim,1
7928,13392,Marsh Island,2795,medium,771707.0,6781,6781 Receive Column Wrap/Flower Bx/Pediment,1
7929,13476,Durham Farms,4277,medium,750956.0,6905,6905 Receive Brick Material,1
7930,13088,Forest Hills,3580,medium,222544.0,6910,6910 Install Brick Façade,1
7931,13278,Mosaic,2320,medium,818814.0,7140,7140 Exterior Painting,1
7932,13401,Welches Pond,2927,medium,731557.0,7180,7180 Install Exterior Railings,16
7933,13112,Marlin Chase,3171,medium,634940.0,7300,7300 Receive Interior Trim,1
7934,13112,Marlin Chase,3171,medium,634940.0,7304,7304 Receive Goodie Box,1
7935,13477,Cardinal Grove,2589,medium,750956.0,7340,7340 Install Ceramic Tile,2
7936,13477,Cardinal Grove,2589,medium,750956.0,7350,7350 Install Shower Tile,3
7937,13112,Marlin Chase,3171,medium,634940.0,7700,7700 Receive Interior Doors,1
7938,12993,Peninsula,5996,high,750956.0,7861,7861 Interior Trim Punch,1
7939,13112,Marlin Chase,3171,medium,634940.0,7862,7862 Receive Cabinet Hardware Allocation,1
7940,13278,Mosaic,2320,medium,818814.0,7862,7862 Receive Cabinet Hardware Allocation,1
7941,13112,Marlin Chase,3171,medium,634940.0,7866,7866 Receive Door Hardware,1
7942,13112,Marlin Chase,3171,medium,634940.0,7900,7900 Receive Cabinets Allocation,1
7943,13278,Mosaic,2320,medium,818814.0,7900,7900 Receive Cabinets Allocation,1
7944,13278,Mosaic,2320,medium,818814.0,7901,7901 Cabinet Delivery Charges,1
7945,13112,Marlin Chase,3171,medium,634940.0,7901,7901 Cabinet Delivery Charges,1
7946,13112,Marlin Chase,3171,medium,634940.0,7940,7940 Receive Vanity Tops,2
7947,13278,Mosaic,2320,medium,818814.0,7940,7940 Receive Vanity Tops,1
7948,13477,Cardinal Grove,2589,medium,750956.0,8020,8020 Receive Interior Railing,1
7949,13477,Cardinal Grove,2589,medium,750956.0,8220,8220 Install Fireplace Surround/Mantel,1
7950,13035,Forest Hills,4024,medium,816522.0,8220,8220 Install Fireplace Surround/Mantel,1
7951,13112,Marlin Chase,3171,medium,634940.0,8260,8260 Install Interior Railing,1
7952,13035,Forest Hills,4024,medium,816522.0,8380,8380 Template Countertops,1
7953,13278,Mosaic,2320,medium,818814.0,8420,8420 1st Paint,1
7954,13140,Marlin Chase,2824,medium,766881.0,8940,8940 Plumbing Trim,1
7955,13152,Marlin Chase,2710,medium,768496.0,9100,9100 HVAC Trim / Set Unit,1
7956,13152,Marlin Chase,2710,medium,768496.0,9460,9460 Attic Insulation,1
7957,13138,Marlin Chase,3171,medium,859133.0,9910,9910 Utility Grade,1
7958,13139,Marlin Chase,2554,medium,704067.0,9910,9910 Utility Grade,1
7959,13101,Marlin Chase,2461,medium,682900.0,9980,9980 Final Cleaning,1
7960,13139,Marlin Chase,2554,medium,704067.0,9980,9980 Final Cleaning,1
7961,13144,Marlin Chase,3055,medium,740636.0,10301,10301 Driveway Apron,1
7962,12920,Peninsula,4116,high,1454538.0,10460,10460 Drywall Touch Up,2
7963,13360,Peninsula Lakes,3496,medium,575090.0,10500,10500 Paint 2,4
7964,13136,Marlin Chase,3170,medium,806102.0,0,vancheck Check Vanity Tops/Windows for Damage,1
7965,13264,Welches Pond,3905,medium,915363.0,140,140 Framing DRAW 2,1
7966,13529,Governors,1901,medium,787652.0,2540,2540 Receive 1st Floor Joists,1
7967,13529,Governors,1901,medium,787652.0,3100,3100 Foundation Survey,1
7968,13088,Forest Hills,3580,medium,222544.0,3140,3140 Pour Porch Slab,1
7969,13529,Governors,1901,medium,787652.0,3300,3300 1st Floor Deck Framing,1
7970,13462,Peninsula,4787,high,1490269.0,3380,3380 1st Floor Wall Framing,1
7971,13529,Governors,1901,medium,787652.0,3700,3700 Receive Trusses,1
7972,13462,Peninsula,4787,high,1490269.0,4070,4070 Receive Exterior Deck Material,1
7973,12832,Peninsula,4562,high,1090397.0,4590,4590 Install Metal Roofing,1
7974,13442,Walden,4633,medium,656370.0,4590,4590 Install Metal Roofing,7
7975,13465,Cardinal Grove,1764,medium,569722.0,4590,4590 Install Metal Roofing,1
7976,13152,Marlin Chase,2710,medium,768496.0,4590,4590 Install Metal Roofing,1
7977,13264,Welches Pond,3905,medium,915363.0,4775,4775 Receive Hardwood Stairs,1
7978,13520,Hailey's Glen,2792,medium,606920.0,4980,4980 Plumbing Rough,2
7979,13339,Peninsula,5583,high,750956.0,4980,4980 Plumbing Rough,3
7980,13477,Cardinal Grove,2589,medium,750956.0,4981,4981 Deliver Sinks,1
7981,13277,Mosaic,1704,medium,561869.0,5177,5177 Electric Meter Connection,1
7982,13476,Durham Farms,4277,medium,750956.0,5177,5177 Electric Meter Connection,21
7983,13503,Marsh Island,4307,medium,892519.0,5180,5180 Electric Rough,4
7984,13485,Peninsula,4241,medium,706147.0,5740,5740 Install Gas Lines,1
7985,13394,Peninsula Lakes,2154,medium,474879.0,5820,5820 Framing Inspection,1
7986,13423,Governors,2974,medium,884692.0,5820,5820 Framing Inspection,1
7987,13349,Peninsula Lakes,2188,medium,442826.0,5820,5820 Framing Inspection,1
7988,13264,Welches Pond,3905,medium,915363.0,5825,5825 Frame Punch,1
7989,13496,Hailey's Glen,3443,medium,316917.0,5860,5860 Frame Stage Tour,1
7990,13485,Peninsula,4241,medium,706147.0,5860,5860 Frame Stage Tour,1
7991,13495,Welches Pond,2650,medium,674167.0,5940,5940 Order Cabinets,1
7992,13495,Welches Pond,2650,medium,674167.0,5941,5941 Order Cabinet Hardware,1
7993,13281,Marlin Chase,3558,medium,786910.0,6180,6180 Install Insulation,2
7994,13423,Governors,2974,medium,884692.0,6180,6180 Install Insulation,2
7995,13392,Marsh Island,2795,medium,771707.0,6300,6300 Energy Inspection,1
7996,13137,Marlin Chase,2330,medium,637264.0,6340,6340 Install Overhead Door,1
7997,13501,Hailey's Glen,2736,medium,694771.0,6345,6345 Stock Drywall,1
7998,13501,Hailey's Glen,2736,medium,694771.0,6380,6380 Install Drywall,14
7999,13392,Marsh Island,2795,medium,771707.0,6380,6380 Install Drywall,12
8000,13088,Forest Hills,3580,medium,222544.0,6380,6380 Install Drywall,8
8001,13113,Marlin Chase,2814,medium,750956.0,6381,6381 Drywall Punch,1
8002,13442,Walden,4633,medium,656370.0,6391,6391 Install Gas Meter,4
8003,13465,Cardinal Grove,1764,medium,569722.0,6391,6391 Install Gas Meter,1
8004,12832,Peninsula,4562,high,1090397.0,6391,6391 Install Gas Meter,1
8005,13392,Marsh Island,2795,medium,771707.0,6620,6620 Receive Vinyl Siding,1
8006,13501,Hailey's Glen,2736,medium,694771.0,6620,6620 Receive Vinyl Siding,1
8007,13501,Hailey's Glen,2736,medium,694771.0,6700,6700 Receive Composite Ext Trim,1
8008,13392,Marsh Island,2795,medium,771707.0,6700,6700 Receive Composite Ext Trim,1
8009,13392,Marsh Island,2795,medium,771707.0,6720,6720 Receive Siding Accents,1
8010,13501,Hailey's Glen,2736,medium,694771.0,6720,6720 Receive Siding Accents,1
8011,13501,Hailey's Glen,2736,medium,694771.0,6725,6725 Receive Shutters,1
8012,13392,Marsh Island,2795,medium,771707.0,6725,6725 Receive Shutters,1
8013,13392,Marsh Island,2795,medium,771707.0,6740,6740 Receive PVC Exterior Trim,1
8014,13501,Hailey's Glen,2736,medium,694771.0,6740,6740 Receive PVC Exterior Trim,1
8015,13468,Governors,2977,medium,869889.0,6760,6760 Order Courtyard Items,1
8016,13501,Hailey's Glen,2736,medium,694771.0,6781,6781 Receive Column Wrap/Flower Bx/Pediment,1
8017,13349,Peninsula Lakes,2188,medium,442826.0,6781,6781 Receive Column Wrap/Flower Bx/Pediment,1
8018,13501,Hailey's Glen,2736,medium,694771.0,6820,6820 Receive Deck Skirting,1
8019,13392,Marsh Island,2795,medium,771707.0,6820,6820 Receive Deck Skirting,1
8020,13442,Walden,4633,medium,656370.0,6862,6862 Trellis Construction,1
8021,13442,Walden,4633,medium,656370.0,6884,6884 Measure Screen Porch Enclosure,1
8022,13465,Cardinal Grove,1764,medium,569722.0,6884,6884 Measure Screen Porch Enclosure,1
8023,12832,Peninsula,4562,high,1090397.0,6884,6884 Measure Screen Porch Enclosure,1
8024,13476,Durham Farms,4277,medium,750956.0,6910,6910 Install Brick Façade,5
8025,12832,Peninsula,4562,high,1090397.0,7060,7060 Exterior Masonry Installation,2
8026,13277,Mosaic,1704,medium,561869.0,7140,7140 Exterior Painting,1
8027,13442,Walden,4633,medium,656370.0,7180,7180 Install Exterior Railings,18
8028,13465,Cardinal Grove,1764,medium,569722.0,7180,7180 Install Exterior Railings,1
8029,13442,Walden,4633,medium,656370.0,7220,7220 Install Deck Skirting/Flower Boxes,1
8030,13465,Cardinal Grove,1764,medium,569722.0,7220,7220 Install Deck Skirting/Flower Boxes,1
8031,12832,Peninsula,4562,high,1090397.0,7220,7220 Install Deck Skirting/Flower Boxes,1
8032,13477,Cardinal Grove,2589,medium,750956.0,7300,7300 Receive Interior Trim,1
8033,13477,Cardinal Grove,2589,medium,750956.0,7304,7304 Receive Goodie Box,1
8034,13477,Cardinal Grove,2589,medium,750956.0,7700,7700 Receive Interior Doors,1
8035,13112,Marlin Chase,3171,medium,634940.0,7860,7860 Install Interior Trim,2
8036,13477,Cardinal Grove,2589,medium,750956.0,7862,7862 Receive Cabinet Hardware Allocation,1
8037,13477,Cardinal Grove,2589,medium,750956.0,7866,7866 Receive Door Hardware,1
8038,13477,Cardinal Grove,2589,medium,750956.0,7900,7900 Receive Cabinets Allocation,1
8039,13477,Cardinal Grove,2589,medium,750956.0,7901,7901 Cabinet Delivery Charges,1
8040,13477,Cardinal Grove,2589,medium,750956.0,7940,7940 Receive Vanity Tops,1
8041,13360,Peninsula Lakes,3496,medium,575090.0,7940,7940 Receive Vanity Tops,1
8042,13278,Mosaic,2320,medium,818814.0,8220,8220 Install Fireplace Surround/Mantel,1
8043,13477,Cardinal Grove,2589,medium,750956.0,8260,8260 Install Interior Railing,1
8044,13278,Mosaic,2320,medium,818814.0,8300,8300 Install Cabinets,2
8045,13277,Mosaic,1704,medium,561869.0,8420,8420 1st Paint,1
8046,13152,Marlin Chase,2710,medium,768496.0,8465,8465 Install Tiled Backsplash,1
8047,13501,Hailey's Glen,2736,medium,694771.0,8820,8820 Schedule Irrigation Well,1
8048,13520,Hailey's Glen,2792,medium,606920.0,8820,8820 Schedule Irrigation Well,1
8049,13152,Marlin Chase,2710,medium,768496.0,9020,9020 Electric Trim,5
8050,13120,Marsh Island,4291,medium,851477.0,9020,9020 Electric Trim,20
8051,13175,Peninsula Lakes,2245,low,567645.0,9020,9020 Electric Trim,2
8052,13120,Marsh Island,4291,medium,851477.0,9100,9100 HVAC Trim / Set Unit,3
8053,13113,Marlin Chase,2814,medium,750956.0,9110,9110 Gas Trim,1
8054,13120,Marsh Island,4291,medium,851477.0,9260,9260 Structured Wiring Trim,1
8055,13442,Walden,4633,medium,656370.0,9380,9380 Install Irrigation Well,1
8056,13465,Cardinal Grove,1764,medium,569722.0,9380,9380 Install Irrigation Well,1
8057,13339,Peninsula,5583,high,750956.0,9390,9390 Install Water Meter/Sewer Frame,1
8058,13442,Walden,4633,medium,656370.0,9420,9420 Install Solar Panels,1
8059,13035,Forest Hills,4024,medium,816522.0,9540,9540 Rec. GE Appliance Pkg1 Allocation,1
8060,13035,Forest Hills,4024,medium,816522.0,9620,9620 Install Appliances,1
8061,13139,Marlin Chase,2554,medium,704067.0,9755,9755 Rec. GE Appliance Pkg2 Allocation,1
8062,13442,Walden,4633,medium,656370.0,9820,9820 Install Gutters,5
8063,13465,Cardinal Grove,1764,medium,569722.0,9820,9820 Install Gutters,1
8064,13144,Marlin Chase,3055,medium,740636.0,9820,9820 Install Gutters,1
8065,12832,Peninsula,4562,high,1090397.0,9820,9820 Install Gutters,1
8066,13339,Peninsula,5583,high,750956.0,9900,9900 Water Lateral,1
8067,13339,Peninsula,5583,high,750956.0,9905,9905 Sewer Lateral,1
8068,13253,River Mill,2912,medium,692624.0,9910,9910 Utility Grade,1
8069,13088,Forest Hills,3580,medium,222544.0,9910,9910 Utility Grade,1
8070,12920,Peninsula,4116,high,1454538.0,10300,10300 Install Driveway,3
8071,12920,Peninsula,4116,high,1454538.0,10340,10340 Install Leadwalk & Comm. Sidewalk,3
8072,13088,Forest Hills,3580,medium,222544.0,10345,10345 Pour Concrete Steps,1
8073,13139,Marlin Chase,2554,medium,704067.0,10620,10620 Punch Out Allocation,1
8074,13360,Peninsula Lakes,3496,medium,575090.0,0,vancheck Check Vanity Tops/Windows for Damage,1
8075,13264,Welches Pond,3905,medium,915363.0,3,3 TRADES START,1
8076,13495,Welches Pond,2650,medium,674167.0,100,100 Framing DRAW 1,1
8077,13529,Governors,1901,medium,787652.0,3380,3380 1st Floor Wall Framing,2
8078,13462,Peninsula,4787,high,1490269.0,3780,3780 2nd Floor Deck Framing,1
8079,13495,Welches Pond,2650,medium,674167.0,4020,4020 Set Trusses,3
8080,13495,Welches Pond,2650,medium,674167.0,4230,4230 Receive Housewrap/Flashing,1
8081,13485,Peninsula,4241,medium,706147.0,4461,4461 Install Gas Lateral,1
8082,13264,Welches Pond,3905,medium,915363.0,4585,4585 Install Membrane Roofing,4
8083,13264,Welches Pond,3905,medium,915363.0,4591,4591 Install Metal Roof Flashing,1
8084,13468,Governors,2977,medium,869889.0,4700,4700 Internal Framing Inspection,1
8085,13339,Peninsula,5583,high,750956.0,4940,4940 Install Fireplace,13
8086,13277,Mosaic,1704,medium,561869.0,4981,4981 Deliver Sinks,1
8087,13264,Welches Pond,3905,medium,915363.0,5100,5100 HVAC Rough,2
8088,13264,Welches Pond,3905,medium,915363.0,5120,5120 HVAC Set Furnace,1
8089,13496,Hailey's Glen,3443,medium,316917.0,5260,5260 Mechanical Rough Inspection,1
8090,13468,Governors,2977,medium,869889.0,5300,5300 Municipal Electric Inspection,1
8091,13496,Hailey's Glen,3443,medium,316917.0,5580,5580 Structured Wiring Rough,1
8092,13496,Hailey's Glen,3443,medium,316917.0,5740,5740 Install Gas Lines,1
8093,13503,Marsh Island,4307,medium,892519.0,5941,5941 Order Cabinet Hardware,1
8094,13349,Peninsula Lakes,2188,medium,442826.0,6180,6180 Install Insulation,1
8095,13394,Peninsula Lakes,2154,medium,474879.0,6180,6180 Install Insulation,1
8096,13030,Peninsula,5546,high,1768191.0,6300,6300 Energy Inspection,1
8097,13035,Forest Hills,4024,medium,816522.0,6340,6340 Install Overhead Door,5
8098,13465,Cardinal Grove,1764,medium,569722.0,6340,6340 Install Overhead Door,1
8099,13030,Peninsula,5546,high,1768191.0,6345,6345 Stock Drywall,1
8100,13476,Durham Farms,4277,medium,750956.0,6620,6620 Receive Vinyl Siding,11
8101,13476,Durham Farms,4277,medium,750956.0,6740,6740 Receive PVC Exterior Trim,1
8102,13392,Marsh Island,2795,medium,771707.0,6860,6860 Siding Installation,15
8103,13349,Peninsula Lakes,2188,medium,442826.0,6860,6860 Siding Installation,8
8104,12832,Peninsula,4562,high,1090397.0,7140,7140 Exterior Painting,1
8105,13442,Walden,4633,medium,656370.0,7140,7140 Exterior Painting,43
8106,13465,Cardinal Grove,1764,medium,569722.0,7140,7140 Exterior Painting,1
8107,13088,Forest Hills,3580,medium,222544.0,7140,7140 Exterior Painting,1
8108,13408,NewMarket,3940,medium,889253.0,7180,7180 Install Exterior Railings,1
8109,13477,Cardinal Grove,2589,medium,750956.0,7860,7860 Install Interior Trim,2
8110,13277,Mosaic,1704,medium,561869.0,7862,7862 Receive Cabinet Hardware Allocation,1
8111,13277,Mosaic,1704,medium,561869.0,7900,7900 Receive Cabinets Allocation,1
8112,13277,Mosaic,1704,medium,561869.0,7901,7901 Cabinet Delivery Charges,1
8113,13277,Mosaic,1704,medium,561869.0,7940,7940 Receive Vanity Tops,1
8114,13277,Mosaic,1704,medium,561869.0,8220,8220 Install Fireplace Surround/Mantel,1
8115,13112,Marlin Chase,3171,medium,634940.0,8300,8300 Install Cabinets,2
8116,13278,Mosaic,2320,medium,818814.0,8380,8380 Template Countertops,1
8117,13465,Cardinal Grove,1764,medium,569722.0,8420,8420 1st Paint,1
8118,12920,Peninsula,4116,high,1454538.0,8460,8460 Install Countertops,1
8119,13035,Forest Hills,4024,medium,816522.0,8579,8579 Template Shower Enclosure,1
8120,12993,Peninsula,5996,high,750956.0,8940,8940 Plumbing Trim,5
8121,13140,Marlin Chase,2824,medium,766881.0,9110,9110 Gas Trim,1
8122,13465,Cardinal Grove,1764,medium,569722.0,9140,9140 2nd Stage Air Seal,1
8123,13485,Peninsula,4241,medium,706147.0,9390,9390 Install Water Meter/Sewer Frame,1
8124,13140,Marlin Chase,2824,medium,766881.0,9755,9755 Rec. GE Appliance Pkg2 Allocation,1
8125,13476,Durham Farms,4277,medium,750956.0,9900,9900 Water Lateral,15
8126,13485,Peninsula,4241,medium,706147.0,9900,9900 Water Lateral,1
8127,13485,Peninsula,4241,medium,706147.0,9905,9905 Sewer Lateral,1
8128,13476,Durham Farms,4277,medium,750956.0,9905,9905 Sewer Lateral,15
8129,13092,Marlin Chase,2079,medium,433351.0,9980,9980 Final Cleaning,1
8130,13145,Marlin Chase,3204,medium,841553.0,9980,9980 Final Cleaning,1
8131,13113,Marlin Chase,2814,medium,750956.0,10100,10100 Irrigation Installation,1
8132,12993,Peninsula,5996,high,750956.0,10300,10300 Install Driveway,1
8133,12993,Peninsula,5996,high,750956.0,10340,10340 Install Leadwalk & Comm. Sidewalk,1
8134,12920,Peninsula,4116,high,1454538.0,10500,10500 Paint 2,5
8135,13140,Marlin Chase,2824,medium,766881.0,10620,10620 Punch Out Allocation,1
8136,12920,Peninsula,4116,high,1454538.0,0,vancheck Check Vanity Tops/Windows for Damage,1
8137,13139,Marlin Chase,2554,medium,704067.0,0,vancheck Check Vanity Tops/Windows for Damage,1
8138,13462,Peninsula,4787,high,1490269.0,100,100 Framing DRAW 1,1
8139,13030,Peninsula,5546,high,1768191.0,3140,3140 Pour Porch Slab,1
8140,13258,River Mill,3064,medium,670416.0,3140,3140 Pour Porch Slab,1
8141,13462,Peninsula,4787,high,1490269.0,3820,3820 2nd Floor Wall Framing,2
8142,13164,Welches Pond,4497,medium,1024665.0,4071,4071 Receive Exterior Decking,1
8143,13264,Welches Pond,3905,medium,915363.0,4100,4100 Exterior Deck Framing,1
8144,13529,Governors,1901,medium,787652.0,4230,4230 Receive Housewrap/Flashing,1
8145,13164,Welches Pond,4497,medium,1024665.0,4260,4260 Receive Windows,1
8146,13164,Welches Pond,4497,medium,1024665.0,4390,4390 Receive Roofing Material,1
8147,13164,Welches Pond,4497,medium,1024665.0,4580,4580 Install Roofing,2
8148,13496,Hailey's Glen,3443,medium,316917.0,4591,4591 Install Metal Roof Flashing,1
8149,13462,Peninsula,4787,high,1490269.0,4660,4660 Schedule Elevator Rough,1
8150,13496,Hailey's Glen,3443,medium,316917.0,4940,4940 Install Fireplace,1
8151,13496,Hailey's Glen,3443,medium,316917.0,5120,5120 HVAC Set Furnace,1
8152,13388,Marsh Island,5848,high,750956.0,5177,5177 Electric Meter Connection,1
8153,13520,Hailey's Glen,2792,medium,606920.0,5180,5180 Electric Rough,3
8154,13485,Peninsula,4241,medium,706147.0,5180,5180 Electric Rough,5
8155,13503,Marsh Island,4307,medium,892519.0,5260,5260 Mechanical Rough Inspection,1
8156,13503,Marsh Island,4307,medium,892519.0,5580,5580 Structured Wiring Rough,1
8157,13520,Hailey's Glen,2792,medium,606920.0,5740,5740 Install Gas Lines,1
8158,13394,Peninsula Lakes,2154,medium,474879.0,6300,6300 Energy Inspection,1
8159,13423,Governors,2974,medium,884692.0,6300,6300 Energy Inspection,1
8160,13349,Peninsula Lakes,2188,medium,442826.0,6300,6300 Energy Inspection,1
8161,13281,Marlin Chase,3558,medium,786910.0,6300,6300 Energy Inspection,1
8162,13152,Marlin Chase,2710,medium,768496.0,6340,6340 Install Overhead Door,5
8163,13423,Governors,2974,medium,884692.0,6345,6345 Stock Drywall,1
8164,13349,Peninsula Lakes,2188,medium,442826.0,6345,6345 Stock Drywall,1
8165,13394,Peninsula Lakes,2154,medium,474879.0,6345,6345 Stock Drywall,1
8166,13281,Marlin Chase,3558,medium,786910.0,6345,6345 Stock Drywall,1
8167,13030,Peninsula,5546,high,1768191.0,6380,6380 Install Drywall,12
8168,13485,Peninsula,4241,medium,706147.0,6390,6390 Schedule Gas Meter,1
8169,13030,Peninsula,5546,high,1768191.0,6620,6620 Receive Vinyl Siding,1
8170,13030,Peninsula,5546,high,1768191.0,6660,6660 Receive Fiber Cement Siding,1
8171,13030,Peninsula,5546,high,1768191.0,6700,6700 Receive Composite Ext Trim,1
8172,13030,Peninsula,5546,high,1768191.0,6720,6720 Receive Siding Accents,1
8173,13030,Peninsula,5546,high,1768191.0,6725,6725 Receive Shutters,1
8174,13030,Peninsula,5546,high,1768191.0,6740,6740 Receive PVC Exterior Trim,1
8175,13030,Peninsula,5546,high,1768191.0,6781,6781 Receive Column Wrap/Flower Bx/Pediment,1
8176,13030,Peninsula,5546,high,1768191.0,6820,6820 Receive Deck Skirting,1
8177,13394,Peninsula Lakes,2154,medium,474879.0,6860,6860 Siding Installation,8
8178,13112,Marlin Chase,3171,medium,634940.0,6884,6884 Measure Screen Porch Enclosure,1
8179,12832,Peninsula,4562,high,1090397.0,7180,7180 Install Exterior Railings,1
8180,13465,Cardinal Grove,1764,medium,569722.0,7340,7340 Install Ceramic Tile,2
8181,13278,Mosaic,2320,medium,818814.0,7340,7340 Install Ceramic Tile,3
8182,13465,Cardinal Grove,1764,medium,569722.0,7350,7350 Install Shower Tile,3
8183,13278,Mosaic,2320,medium,818814.0,7350,7350 Install Shower Tile,3
8184,13465,Cardinal Grove,1764,medium,569722.0,8220,8220 Install Fireplace Surround/Mantel,1
8185,13477,Cardinal Grove,2589,medium,750956.0,8300,8300 Install Cabinets,2
8186,13277,Mosaic,1704,medium,561869.0,8300,8300 Install Cabinets,2
8187,13091,Marlin Chase,2591,medium,562928.0,8420,8420 1st Paint,1
8188,13401,Welches Pond,2927,medium,731557.0,8465,8465 Install Tiled Backsplash,13
8189,13477,Cardinal Grove,2589,medium,750956.0,8579,8579 Template Shower Enclosure,1
8190,13144,Marlin Chase,3055,medium,740636.0,8920,8920 Install Water Heater/1st Trim,1
8191,12920,Peninsula,4116,high,1454538.0,8920,8920 Install Water Heater/1st Trim,1
8192,13507,Welches Pond,2852,medium,845914.0,9140,9140 2nd Stage Air Seal,1
8193,13408,NewMarket,3940,medium,889253.0,9140,9140 2nd Stage Air Seal,1
8194,13503,Marsh Island,4307,medium,892519.0,9390,9390 Install Water Meter/Sewer Frame,1
8195,13501,Hailey's Glen,2736,medium,694771.0,9390,9390 Install Water Meter/Sewer Frame,4
8196,13520,Hailey's Glen,2792,medium,606920.0,9390,9390 Install Water Meter/Sewer Frame,7
8197,13465,Cardinal Grove,1764,medium,569722.0,9460,9460 Attic Insulation,1
8198,13477,Cardinal Grove,2589,medium,750956.0,9540,9540 Rec. GE Appliance Pkg1 Allocation,1
8199,13477,Cardinal Grove,2589,medium,750956.0,9620,9620 Install Appliances,1
8200,12671,Peninsula,5870,high,750956.0,9756,9756 Receive N/S Appliance Pkg 2,1
8201,13120,Marsh Island,4291,medium,851477.0,9790,9790 Basement Blanket Insulation,1
8202,13503,Marsh Island,4307,medium,892519.0,9900,9900 Water Lateral,1
8203,13503,Marsh Island,4307,medium,892519.0,9905,9905 Sewer Lateral,1
8204,13113,Marlin Chase,2814,medium,750956.0,10020,10020 Final Grade,1
8205,13138,Marlin Chase,3171,medium,859133.0,10300,10300 Install Driveway,1
8206,13139,Marlin Chase,2554,medium,704067.0,10300,10300 Install Driveway,1
8207,13152,Marlin Chase,2710,medium,768496.0,10340,10340 Install Leadwalk & Comm. Sidewalk,2
8208,12993,Peninsula,5996,high,750956.0,10380,10380 As Built Survey,1
8209,13112,Marlin Chase,3171,medium,634940.0,10460,10460 Drywall Touch Up,2
8210,13035,Forest Hills,4024,medium,816522.0,10460,10460 Drywall Touch Up,2
8211,13092,Marlin Chase,2079,medium,433351.0,10620,10620 Punch Out Allocation,1
8212,13468,Governors,2977,medium,869889.0,10940,10940 Framing Retainage,1
8213,13529,Governors,1901,medium,787652.0,100,100 Framing DRAW 1,1
8214,13394,Peninsula Lakes,2154,medium,474879.0,3140,3140 Pour Porch Slab,1
8215,13349,Peninsula Lakes,2188,medium,442826.0,3140,3140 Pour Porch Slab,1
8216,13281,Marlin Chase,3558,medium,786910.0,3140,3140 Pour Porch Slab,1
8217,13529,Governors,1901,medium,787652.0,4020,4020 Set Trusses,2
8218,13164,Welches Pond,4497,medium,1024665.0,4380,4380 Roof Sheathing,4
8219,13496,Hailey's Glen,3443,medium,316917.0,4700,4700 Internal Framing Inspection,1
8220,13164,Welches Pond,4497,medium,1024665.0,4701,4701 Frame Check,1
8221,13264,Welches Pond,3905,medium,915363.0,4940,4940 Install Fireplace,1
8222,13520,Hailey's Glen,2792,medium,606920.0,4940,4940 Install Fireplace,1
8223,13468,Governors,2977,medium,869889.0,4940,4940 Install Fireplace,1
8224,13264,Welches Pond,3905,medium,915363.0,4980,4980 Plumbing Rough,2
8225,13465,Cardinal Grove,1764,medium,569722.0,4981,4981 Deliver Sinks,1
8226,13503,Marsh Island,4307,medium,892519.0,5300,5300 Municipal Electric Inspection,1
8227,13485,Peninsula,4241,medium,706147.0,5580,5580 Structured Wiring Rough,1
8228,13503,Marsh Island,4307,medium,892519.0,5740,5740 Install Gas Lines,1
8229,13339,Peninsula,5583,high,750956.0,5740,5740 Install Gas Lines,1
8230,13496,Hailey's Glen,3443,medium,316917.0,5820,5820 Framing Inspection,1
8231,13503,Marsh Island,4307,medium,892519.0,5900,5900 Air Seal,1
8232,13281,Marlin Chase,3558,medium,786910.0,6380,6380 Install Drywall,10
8233,13394,Peninsula Lakes,2154,medium,474879.0,6380,6380 Install Drywall,10
8234,12993,Peninsula,5996,high,750956.0,6381,6381 Drywall Punch,1
8235,13258,River Mill,3064,medium,670416.0,6391,6391 Install Gas Meter,1
8236,13281,Marlin Chase,3558,medium,786910.0,6620,6620 Receive Vinyl Siding,1
8237,13423,Governors,2974,medium,884692.0,6620,6620 Receive Vinyl Siding,1
8238,13423,Governors,2974,medium,884692.0,6700,6700 Receive Composite Ext Trim,1
8239,13281,Marlin Chase,3558,medium,786910.0,6700,6700 Receive Composite Ext Trim,1
8240,13281,Marlin Chase,3558,medium,786910.0,6720,6720 Receive Siding Accents,1
8241,13423,Governors,2974,medium,884692.0,6720,6720 Receive Siding Accents,1
8242,13423,Governors,2974,medium,884692.0,6725,6725 Receive Shutters,1
8243,13423,Governors,2974,medium,884692.0,6740,6740 Receive PVC Exterior Trim,1
8244,13281,Marlin Chase,3558,medium,786910.0,6740,6740 Receive PVC Exterior Trim,1
8245,13281,Marlin Chase,3558,medium,786910.0,6781,6781 Receive Column Wrap/Flower Bx/Pediment,1
8246,13423,Governors,2974,medium,884692.0,6781,6781 Receive Column Wrap/Flower Bx/Pediment,1
8247,13423,Governors,2974,medium,884692.0,6820,6820 Receive Deck Skirting,1
8248,13281,Marlin Chase,3558,medium,786910.0,6820,6820 Receive Deck Skirting,1
8249,13253,River Mill,2912,medium,692624.0,7060,7060 Exterior Masonry Installation,2
8250,13465,Cardinal Grove,1764,medium,569722.0,7300,7300 Receive Interior Trim,1
8251,13465,Cardinal Grove,1764,medium,569722.0,7304,7304 Receive Goodie Box,1
8252,13091,Marlin Chase,2591,medium,562928.0,7340,7340 Install Ceramic Tile,2
8253,13091,Marlin Chase,2591,medium,562928.0,7350,7350 Install Shower Tile,3
8254,13465,Cardinal Grove,1764,medium,569722.0,7700,7700 Receive Interior Doors,1
8255,13465,Cardinal Grove,1764,medium,569722.0,7862,7862 Receive Cabinet Hardware Allocation,1
8256,13465,Cardinal Grove,1764,medium,569722.0,7866,7866 Receive Door Hardware,1
8257,13465,Cardinal Grove,1764,medium,569722.0,7900,7900 Receive Cabinets Allocation,1
8258,13465,Cardinal Grove,1764,medium,569722.0,7901,7901 Cabinet Delivery Charges,1
8259,13465,Cardinal Grove,1764,medium,569722.0,7940,7940 Receive Vanity Tops,1
8260,13465,Cardinal Grove,1764,medium,569722.0,8020,8020 Receive Interior Railing,1
8261,13091,Marlin Chase,2591,medium,562928.0,8020,8020 Receive Interior Railing,1
8262,13360,Peninsula Lakes,3496,medium,575090.0,8220,8220 Install Fireplace Surround/Mantel,1
8263,13091,Marlin Chase,2591,medium,562928.0,8260,8260 Install Interior Railing,1
8264,13112,Marlin Chase,3171,medium,634940.0,8380,8380 Template Countertops,2
8265,13360,Peninsula Lakes,3496,medium,575090.0,8460,8460 Install Countertops,1
8266,13264,Welches Pond,3905,medium,915363.0,8820,8820 Schedule Irrigation Well,1
8267,13360,Peninsula Lakes,3496,medium,575090.0,9020,9020 Electric Trim,6
8268,13360,Peninsula Lakes,3496,medium,575090.0,9100,9100 HVAC Trim / Set Unit,6
8269,13144,Marlin Chase,3055,medium,740636.0,9100,9100 HVAC Trim / Set Unit,1
8270,13136,Marlin Chase,3170,medium,806102.0,9110,9110 Gas Trim,1
8271,13360,Peninsula Lakes,3496,medium,575090.0,9260,9260 Structured Wiring Trim,1
8272,13281,Marlin Chase,3558,medium,786910.0,9390,9390 Install Water Meter/Sewer Frame,1
8273,13408,NewMarket,3940,medium,889253.0,9460,9460 Attic Insulation,1
8274,13507,Welches Pond,2852,medium,845914.0,9460,9460 Attic Insulation,17
8275,13360,Peninsula Lakes,3496,medium,575090.0,9540,9540 Rec. GE Appliance Pkg1 Allocation,1
8276,13503,Marsh Island,4307,medium,892519.0,9910,9910 Utility Grade,1
8277,12993,Peninsula,5996,high,750956.0,9980,9980 Final Cleaning,7
8278,13144,Marlin Chase,3055,medium,740636.0,10340,10340 Install Leadwalk & Comm. Sidewalk,11
8279,13144,Marlin Chase,3055,medium,740636.0,10345,10345 Pour Concrete Steps,1
8280,12920,Peninsula,4116,high,1454538.0,10380,10380 As Built Survey,1
8281,13477,Cardinal Grove,2589,medium,750956.0,10460,10460 Drywall Touch Up,2
8282,13164,Welches Pond,4497,medium,1024665.0,3140,3140 Pour Porch Slab,1
8283,13462,Peninsula,4787,high,1490269.0,3700,3700 Receive Trusses,1
8284,13462,Peninsula,4787,high,1490269.0,3940,3940 3rd Floor Deck Framing,1
8285,13495,Welches Pond,2650,medium,674167.0,4260,4260 Receive Windows,1
8286,13495,Welches Pond,2650,medium,674167.0,4300,4300 Receive Window/Door Flashings,1
8287,13495,Welches Pond,2650,medium,674167.0,4340,4340 Receive Exterior Doors,1
8288,13164,Welches Pond,4497,medium,1024665.0,4340,4340 Receive Exterior Doors,1
8289,13495,Welches Pond,2650,medium,674167.0,4380,4380 Roof Sheathing,3
8290,13495,Welches Pond,2650,medium,674167.0,4390,4390 Receive Roofing Material,1
8291,13476,Durham Farms,4277,medium,750956.0,4460,4460 Schedule Gas Lateral Contractor,1
8292,13339,Peninsula,5583,high,750956.0,4461,4461 Install Gas Lateral,1
8293,13164,Welches Pond,4497,medium,1024665.0,4540,4540 Install Windows,1
8294,13164,Welches Pond,4497,medium,1024665.0,4582,4582 Install Temp Poly,1
8295,13112,Marlin Chase,3171,medium,634940.0,4590,4590 Install Metal Roofing,1
8296,13164,Welches Pond,4497,medium,1024665.0,4591,4591 Install Metal Roof Flashing,1
8297,13503,Marsh Island,4307,medium,892519.0,4700,4700 Internal Framing Inspection,1
8298,13495,Welches Pond,2650,medium,674167.0,4777,4777 Receive Box Stairs,1
8299,13339,Peninsula,5583,high,750956.0,5180,5180 Electric Rough,10
8300,13520,Hailey's Glen,2792,medium,606920.0,5260,5260 Mechanical Rough Inspection,1
8301,13520,Hailey's Glen,2792,medium,606920.0,5580,5580 Structured Wiring Rough,1
8302,13468,Governors,2977,medium,869889.0,5820,5820 Framing Inspection,1
8303,13164,Welches Pond,4497,medium,1024665.0,5825,5825 Frame Punch,1
8304,13258,River Mill,3064,medium,670416.0,6180,6180 Install Insulation,2
8305,13476,Durham Farms,4277,medium,750956.0,6340,6340 Install Overhead Door,1
8306,13112,Marlin Chase,3171,medium,634940.0,6391,6391 Install Gas Meter,1
8307,13477,Cardinal Grove,2589,medium,750956.0,6885,6885 Install Screen Porch Enclosure,1
8308,13401,Welches Pond,2927,medium,731557.0,6887,6887 Install Outdoor Trash/Shower Encl.,16
8309,13112,Marlin Chase,3171,medium,634940.0,7220,7220 Install Deck Skirting/Flower Boxes,1
8310,13091,Marlin Chase,2591,medium,562928.0,7300,7300 Receive Interior Trim,1
8311,13278,Mosaic,2320,medium,818814.0,7300,7300 Receive Interior Trim,1
8312,13278,Mosaic,2320,medium,818814.0,7304,7304 Receive Goodie Box,1
8313,13091,Marlin Chase,2591,medium,562928.0,7304,7304 Receive Goodie Box,1
8314,13277,Mosaic,1704,medium,561869.0,7340,7340 Install Ceramic Tile,3
8315,13277,Mosaic,1704,medium,561869.0,7350,7350 Install Shower Tile,3
8316,13091,Marlin Chase,2591,medium,562928.0,7700,7700 Receive Interior Doors,1
8317,13278,Mosaic,2320,medium,818814.0,7700,7700 Receive Interior Doors,1
8318,13465,Cardinal Grove,1764,medium,569722.0,7860,7860 Install Interior Trim,2
8319,13401,Welches Pond,2927,medium,731557.0,7861,7861 Interior Trim Punch,1
8320,13091,Marlin Chase,2591,medium,562928.0,7862,7862 Receive Cabinet Hardware Allocation,1
8321,13091,Marlin Chase,2591,medium,562928.0,7866,7866 Receive Door Hardware,1
8322,13091,Marlin Chase,2591,medium,562928.0,7900,7900 Receive Cabinets Allocation,1
8323,13091,Marlin Chase,2591,medium,562928.0,7901,7901 Cabinet Delivery Charges,1
8324,13278,Mosaic,2320,medium,818814.0,8020,8020 Receive Interior Railing,1
8325,13477,Cardinal Grove,2589,medium,750956.0,8380,8380 Template Countertops,1
8326,13120,Marsh Island,4291,medium,851477.0,8390,8390 Stone Interior Fireplace,8
8327,13476,Durham Farms,4277,medium,750956.0,8420,8420 1st Paint,1
8328,12920,Peninsula,4116,high,1454538.0,8465,8465 Install Tiled Backsplash,1
8329,13360,Peninsula Lakes,3496,medium,575090.0,8920,8920 Install Water Heater/1st Trim,1
8330,13152,Marlin Chase,2710,medium,768496.0,8920,8920 Install Water Heater/1st Trim,1
8331,13401,Welches Pond,2927,medium,731557.0,8940,8940 Plumbing Trim,1
8332,12993,Peninsula,5996,high,750956.0,9060,9060 Final Electric Inspection,1
8333,12920,Peninsula,4116,high,1454538.0,9100,9100 HVAC Trim / Set Unit,1
8334,13401,Welches Pond,2927,medium,731557.0,9101,9101 HVAC Startup,20
8335,13471,Cardinal Grove,2233,medium,517387.0,9140,9140 2nd Stage Air Seal,1
8336,13264,Welches Pond,3905,medium,915363.0,9390,9390 Install Water Meter/Sewer Frame,1
8337,13360,Peninsula Lakes,3496,medium,575090.0,9620,9620 Install Appliances,1
8338,12993,Peninsula,5996,high,750956.0,9740,9740 Fireplace Start Up,1
8339,12993,Peninsula,5996,high,750956.0,9755,9755 Rec. GE Appliance Pkg2 Allocation,1
8340,13281,Marlin Chase,3558,medium,786910.0,9900,9900 Water Lateral,1
8341,13258,River Mill,3064,medium,670416.0,9900,9900 Water Lateral,1
8342,13264,Welches Pond,3905,medium,915363.0,9900,9900 Water Lateral,1
8343,13264,Welches Pond,3905,medium,915363.0,9905,9905 Sewer Lateral,1
8344,13281,Marlin Chase,3558,medium,786910.0,9905,9905 Sewer Lateral,1
8345,13258,River Mill,3064,medium,670416.0,9905,9905 Sewer Lateral,1
8346,13113,Marlin Chase,2814,medium,750956.0,9990,9990 2nd Stage Termite Treatment,1
8347,13092,Marlin Chase,2079,medium,433351.0,10100,10100 Irrigation Installation,1
8348,13112,Marlin Chase,3171,medium,634940.0,10500,10500 Paint 2,3
8349,13140,Marlin Chase,2824,medium,766881.0,10501,10501 Paint Retouch,1
8350,12993,Peninsula,5996,high,750956.0,10501,10501 Paint Retouch,1
8351,12993,Peninsula,5996,high,750956.0,10620,10620 Punch Out Allocation,1
8352,13496,Hailey's Glen,3443,medium,316917.0,10940,10940 Framing Retainage,1
8353,13164,Welches Pond,4497,medium,1024665.0,3,3 TRADES START,1
8354,13164,Welches Pond,4497,medium,1024665.0,140,140 Framing DRAW 2,1
8355,13408,NewMarket,3940,medium,889253.0,3140,3140 Pour Porch Slab,1
8356,13476,Durham Farms,4277,medium,750956.0,3140,3140 Pour Porch Slab,1
8357,13495,Welches Pond,2650,medium,674167.0,4071,4071 Receive Exterior Decking,1
8358,13462,Peninsula,4787,high,1490269.0,4230,4230 Receive Housewrap/Flashing,1
8359,13529,Governors,1901,medium,787652.0,4380,4380 Roof Sheathing,2
8360,13529,Governors,1901,medium,787652.0,4460,4460 Schedule Gas Lateral Contractor,1
8361,13496,Hailey's Glen,3443,medium,316917.0,4461,4461 Install Gas Lateral,1
8362,13520,Hailey's Glen,2792,medium,606920.0,4461,4461 Install Gas Lateral,1
8363,13501,Hailey's Glen,2736,medium,694771.0,4461,4461 Install Gas Lateral,1
8364,13349,Peninsula Lakes,2188,medium,442826.0,4461,4461 Install Gas Lateral,1
8365,13495,Welches Pond,2650,medium,674167.0,4540,4540 Install Windows,1
8366,13495,Welches Pond,2650,medium,674167.0,4580,4580 Install Roofing,2
8367,13507,Welches Pond,2852,medium,845914.0,4590,4590 Install Metal Roofing,1
8368,13471,Cardinal Grove,2233,medium,517387.0,4590,4590 Install Metal Roofing,1
8369,13495,Welches Pond,2650,medium,674167.0,4701,4701 Frame Check,1
8370,13164,Welches Pond,4497,medium,1024665.0,4775,4775 Receive Hardwood Stairs,1
8371,13164,Welches Pond,4497,medium,1024665.0,5100,5100 HVAC Rough,5
8372,13468,Governors,2977,medium,869889.0,5177,5177 Electric Meter Connection,18
8373,13520,Hailey's Glen,2792,medium,606920.0,5220,5220 Solar Rough,1
8374,13496,Hailey's Glen,3443,medium,316917.0,5300,5300 Municipal Electric Inspection,1
8375,13520,Hailey's Glen,2792,medium,606920.0,5300,5300 Municipal Electric Inspection,1
8376,13264,Welches Pond,3905,medium,915363.0,5740,5740 Install Gas Lines,1
8377,13503,Marsh Island,4307,medium,892519.0,5820,5820 Framing Inspection,1
8378,13496,Hailey's Glen,3443,medium,316917.0,5900,5900 Air Seal,1
8379,13520,Hailey's Glen,2792,medium,606920.0,5900,5900 Air Seal,1
8380,13442,Walden,4633,medium,656370.0,6180,6180 Install Insulation,2
8381,13468,Governors,2977,medium,869889.0,6180,6180 Install Insulation,2
8382,13507,Welches Pond,2852,medium,845914.0,6340,6340 Install Overhead Door,39
8383,13507,Welches Pond,2852,medium,845914.0,6391,6391 Install Gas Meter,1
8384,13277,Mosaic,1704,medium,561869.0,6391,6391 Install Gas Meter,1
8385,13471,Cardinal Grove,2233,medium,517387.0,6391,6391 Install Gas Meter,1
8386,13476,Durham Farms,4277,medium,750956.0,6660,6660 Receive Fiber Cement Siding,1
8387,13476,Durham Farms,4277,medium,750956.0,6720,6720 Receive Siding Accents,1
8388,13030,Peninsula,5546,high,1768191.0,6860,6860 Siding Installation,21
8389,13471,Cardinal Grove,2233,medium,517387.0,6884,6884 Measure Screen Porch Enclosure,1
8390,13507,Welches Pond,2852,medium,845914.0,6884,6884 Measure Screen Porch Enclosure,1
8391,13507,Welches Pond,2852,medium,845914.0,7060,7060 Exterior Masonry Installation,2
8392,13258,River Mill,3064,medium,670416.0,7060,7060 Exterior Masonry Installation,2
8393,13258,River Mill,3064,medium,670416.0,7140,7140 Exterior Painting,1
8394,13471,Cardinal Grove,2233,medium,517387.0,7180,7180 Install Exterior Railings,1
8395,13471,Cardinal Grove,2233,medium,517387.0,7220,7220 Install Deck Skirting/Flower Boxes,1
8396,13507,Welches Pond,2852,medium,845914.0,7220,7220 Install Deck Skirting/Flower Boxes,1
8397,13476,Durham Farms,4277,medium,750956.0,7340,7340 Install Ceramic Tile,2
8398,13476,Durham Farms,4277,medium,750956.0,7350,7350 Install Shower Tile,5
8399,13091,Marlin Chase,2591,medium,562928.0,7860,7860 Install Interior Trim,2
8400,13278,Mosaic,2320,medium,818814.0,7860,7860 Install Interior Trim,2
8401,13476,Durham Farms,4277,medium,750956.0,8220,8220 Install Fireplace Surround/Mantel,1
8402,13465,Cardinal Grove,1764,medium,569722.0,8300,8300 Install Cabinets,2
8403,13477,Cardinal Grove,2589,medium,750956.0,8390,8390 Stone Interior Fireplace,2
8404,13408,NewMarket,3940,medium,889253.0,8420,8420 1st Paint,1
8405,13507,Welches Pond,2852,medium,845914.0,8420,8420 1st Paint,1
8406,13138,Marlin Chase,3171,medium,859133.0,8540,8540 Install Bath Accessories,1
8407,13138,Marlin Chase,3171,medium,859133.0,8545,8545 Install Mirrors,1
8408,13465,Cardinal Grove,1764,medium,569722.0,8579,8579 Template Shower Enclosure,1
8409,13278,Mosaic,2320,medium,818814.0,8579,8579 Template Shower Enclosure,4
8410,13138,Marlin Chase,3171,medium,859133.0,8580,8580 Install Shower Enclosures,1
8411,13401,Welches Pond,2927,medium,731557.0,8980,8980 Final Plumbing Inspection,29
8412,13401,Welches Pond,2927,medium,731557.0,9110,9110 Gas Trim,1
8413,12993,Peninsula,5996,high,750956.0,9110,9110 Gas Trim,1
8414,13088,Forest Hills,3580,medium,222544.0,9140,9140 2nd Stage Air Seal,1
8415,13152,Marlin Chase,2710,medium,768496.0,9260,9260 Structured Wiring Trim,1
8416,13507,Welches Pond,2852,medium,845914.0,9380,9380 Install Irrigation Well,1
8417,13471,Cardinal Grove,2233,medium,517387.0,9380,9380 Install Irrigation Well,1
8418,13496,Hailey's Glen,3443,medium,316917.0,9390,9390 Install Water Meter/Sewer Frame,1
8419,13471,Cardinal Grove,2233,medium,517387.0,9460,9460 Attic Insulation,1
8420,13465,Cardinal Grove,1764,medium,569722.0,9540,9540 Rec. GE Appliance Pkg1 Allocation,1
8421,13120,Marsh Island,4291,medium,851477.0,9540,9540 Rec. GE Appliance Pkg1 Allocation,1
8422,13465,Cardinal Grove,1764,medium,569722.0,9620,9620 Install Appliances,1
8423,12993,Peninsula,5996,high,750956.0,9660,9660 Install Carpet Flooring,1
8424,13092,Marlin Chase,2079,medium,433351.0,9755,9755 Rec. GE Appliance Pkg2 Allocation,1
8425,13471,Cardinal Grove,2233,medium,517387.0,9820,9820 Install Gutters,1
8426,13507,Welches Pond,2852,medium,845914.0,9820,9820 Install Gutters,19
8427,13264,Welches Pond,3905,medium,915363.0,9910,9910 Utility Grade,1
8428,13401,Welches Pond,2927,medium,731557.0,10020,10020 Final Grade,1
8429,13092,Marlin Chase,2079,medium,433351.0,10140,10140 Sod Installation,1
8430,13092,Marlin Chase,2079,medium,433351.0,10180,10180 Shrub Installation,1
8431,13408,NewMarket,3940,medium,889253.0,10345,10345 Pour Concrete Steps,1
8432,13401,Welches Pond,2927,medium,731557.0,10380,10380 As Built Survey,10
8433,13035,Forest Hills,4024,medium,816522.0,10500,10500 Paint 2,3
8434,13477,Cardinal Grove,2589,medium,750956.0,10500,10500 Paint 2,4
8435,13503,Marsh Island,4307,medium,892519.0,10940,10940 Framing Retainage,1
8436,13112,Marlin Chase,3171,medium,634940.0,0,vancheck Check Vanity Tops/Windows for Damage,1
8437,13495,Welches Pond,2650,medium,674167.0,140,140 Framing DRAW 2,1
8438,13462,Peninsula,4787,high,1490269.0,3980,3980 3rd Floor Wall Framing,2
8439,13529,Governors,1901,medium,787652.0,4300,4300 Receive Window/Door Flashings,1
8440,13164,Welches Pond,4497,medium,1024665.0,4300,4300 Receive Window/Door Flashings,1
8441,13529,Governors,1901,medium,787652.0,4340,4340 Receive Exterior Doors,1
8442,13529,Governors,1901,medium,787652.0,4390,4390 Receive Roofing Material,1
8443,13264,Welches Pond,3905,medium,915363.0,4461,4461 Install Gas Lateral,1
8444,13113,Marlin Chase,2814,medium,750956.0,4461,4461 Install Gas Lateral,1
8445,13465,Cardinal Grove,1764,medium,569722.0,4542,4542 Measure/Order Window Coverings,1
8446,13529,Governors,1901,medium,787652.0,4580,4580 Install Roofing,2
8447,13495,Welches Pond,2650,medium,674167.0,4582,4582 Install Temp Poly,1
8448,13485,Peninsula,4241,medium,706147.0,4591,4591 Install Metal Roof Flashing,1
8449,13520,Hailey's Glen,2792,medium,606920.0,4700,4700 Internal Framing Inspection,3
8450,13529,Governors,1901,medium,787652.0,4777,4777 Receive Box Stairs,1
8451,13476,Durham Farms,4277,medium,750956.0,4982,4982 Receive Sinks,0
8452,13164,Welches Pond,4497,medium,1024665.0,5120,5120 HVAC Set Furnace,1
8453,13495,Welches Pond,2650,medium,674167.0,5825,5825 Frame Punch,1
8454,13397,Peninsula,5533,high,750956.0,5940,5940 Order Cabinets,1
8455,13397,Peninsula,5533,high,750956.0,5941,5941 Order Cabinet Hardware,1
8456,13503,Marsh Island,4307,medium,892519.0,6180,6180 Install Insulation,2
8457,13258,River Mill,3064,medium,670416.0,6300,6300 Energy Inspection,1
8458,13258,River Mill,3064,medium,670416.0,6305,6305 Energy Certification,1
8459,13401,Welches Pond,2927,medium,731557.0,6381,6381 Drywall Punch,4
8460,13501,Hailey's Glen,2736,medium,694771.0,6390,6390 Schedule Gas Meter,1
8461,13496,Hailey's Glen,3443,medium,316917.0,6390,6390 Schedule Gas Meter,1
8462,13520,Hailey's Glen,2792,medium,606920.0,6390,6390 Schedule Gas Meter,1
8463,13468,Governors,2977,medium,869889.0,6781,6781 Receive Column Wrap/Flower Bx/Pediment,1
8464,13281,Marlin Chase,3558,medium,786910.0,6860,6860 Siding Installation,11
8465,13423,Governors,2974,medium,884692.0,6860,6860 Siding Installation,10
8466,13507,Welches Pond,2852,medium,845914.0,7140,7140 Exterior Painting,9
8467,13137,Marlin Chase,2330,medium,637264.0,7140,7140 Exterior Painting,1
8468,13471,Cardinal Grove,2233,medium,517387.0,7140,7140 Exterior Painting,1
8469,13277,Mosaic,1704,medium,561869.0,7300,7300 Receive Interior Trim,1
8470,13476,Durham Farms,4277,medium,750956.0,7300,7300 Receive Interior Trim,3
8471,13277,Mosaic,1704,medium,561869.0,7304,7304 Receive Goodie Box,1
8472,13507,Welches Pond,2852,medium,845914.0,7340,7340 Install Ceramic Tile,14
8473,13507,Welches Pond,2852,medium,845914.0,7350,7350 Install Shower Tile,14
8474,13277,Mosaic,1704,medium,561869.0,7700,7700 Receive Interior Doors,1
8475,13476,Durham Farms,4277,medium,750956.0,7700,7700 Receive Interior Doors,1
8476,13476,Durham Farms,4277,medium,750956.0,7862,7862 Receive Cabinet Hardware Allocation,1
8477,13476,Durham Farms,4277,medium,750956.0,7865,7865 Receive Door Hardware Allocation,1
8478,13476,Durham Farms,4277,medium,750956.0,7900,7900 Receive Cabinets Allocation,1
8479,13476,Durham Farms,4277,medium,750956.0,7901,7901 Cabinet Delivery Charges,1
8480,13091,Marlin Chase,2591,medium,562928.0,7940,7940 Receive Vanity Tops,1
8481,13408,NewMarket,3940,medium,889253.0,8020,8020 Receive Interior Railing,1
8482,13277,Mosaic,1704,medium,561869.0,8020,8020 Receive Interior Railing,1
8483,13507,Welches Pond,2852,medium,845914.0,8220,8220 Install Fireplace Surround/Mantel,1
8484,13408,NewMarket,3940,medium,889253.0,8220,8220 Install Fireplace Surround/Mantel,1
8485,13476,Durham Farms,4277,medium,750956.0,8260,8260 Install Interior Railing,1
8486,13476,Durham Farms,4277,medium,750956.0,8300,8300 Install Cabinets,4
8487,13091,Marlin Chase,2591,medium,562928.0,8300,8300 Install Cabinets,2
8488,13278,Mosaic,2320,medium,818814.0,8460,8460 Install Countertops,1
8489,13120,Marsh Island,4291,medium,851477.0,8460,8460 Install Countertops,1
8490,13091,Marlin Chase,2591,medium,562928.0,8579,8579 Template Shower Enclosure,1
8491,12920,Peninsula,4116,high,1454538.0,8580,8580 Install Shower Enclosures,1
8492,13092,Marlin Chase,2079,medium,433351.0,8900,8900 Install Closet Shelving,1
8493,12920,Peninsula,4116,high,1454538.0,9020,9020 Electric Trim,4
8494,12920,Peninsula,4116,high,1454538.0,9101,9101 HVAC Startup,1
8495,13476,Durham Farms,4277,medium,750956.0,9140,9140 2nd Stage Air Seal,13
8496,13088,Forest Hills,3580,medium,222544.0,9460,9460 Attic Insulation,1
8497,13091,Marlin Chase,2591,medium,562928.0,9540,9540 Rec. GE Appliance Pkg1 Allocation,1
8498,13476,Durham Farms,4277,medium,750956.0,9540,9540 Rec. GE Appliance Pkg1 Allocation,1
8499,13091,Marlin Chase,2591,medium,562928.0,9620,9620 Install Appliances,1
8500,13401,Welches Pond,2927,medium,731557.0,9740,9740 Fireplace Start Up,9
8501,13113,Marlin Chase,2814,medium,750956.0,9755,9755 Rec. GE Appliance Pkg2 Allocation,1
8502,13520,Hailey's Glen,2792,medium,606920.0,9900,9900 Water Lateral,7
8503,13520,Hailey's Glen,2792,medium,606920.0,9905,9905 Sewer Lateral,7
8504,13496,Hailey's Glen,3443,medium,316917.0,9910,9910 Utility Grade,1
8505,13485,Peninsula,4241,medium,706147.0,9910,9910 Utility Grade,1
8506,13401,Welches Pond,2927,medium,731557.0,9990,9990 2nd Stage Termite Treatment,1
8507,13401,Welches Pond,2927,medium,731557.0,10100,10100 Irrigation Installation,21
8508,13465,Cardinal Grove,1764,medium,569722.0,10460,10460 Drywall Touch Up,2
8509,13495,Welches Pond,2650,medium,674167.0,3,3 TRADES START,1
8510,13112,Marlin Chase,3171,medium,634940.0,2344,2344 Meter Pit Install,1
8511,13529,Governors,1901,medium,787652.0,4071,4071 Receive Exterior Decking,1
8512,13495,Welches Pond,2650,medium,674167.0,4100,4100 Exterior Deck Framing,1
8513,13529,Governors,1901,medium,787652.0,4100,4100 Exterior Deck Framing,1
8514,13164,Welches Pond,4497,medium,1024665.0,4100,4100 Exterior Deck Framing,1
8515,13529,Governors,1901,medium,787652.0,4260,4260 Receive Windows,1
8516,13529,Governors,1901,medium,787652.0,4540,4540 Install Windows,1
8517,13495,Welches Pond,2650,medium,674167.0,4591,4591 Install Metal Roof Flashing,1
8518,13529,Governors,1901,medium,787652.0,4701,4701 Frame Check,1
8519,13408,NewMarket,3940,medium,889253.0,4981,4981 Deliver Sinks,1
8520,13253,River Mill,2912,medium,692624.0,4981,4981 Deliver Sinks,1
8521,13507,Welches Pond,2852,medium,845914.0,4981,4981 Deliver Sinks,1
8522,13495,Welches Pond,2650,medium,674167.0,5100,5100 HVAC Rough,2
8523,13495,Welches Pond,2650,medium,674167.0,5120,5120 HVAC Set Furnace,1
8524,13423,Governors,2974,medium,884692.0,5177,5177 Electric Meter Connection,1
8525,13485,Peninsula,4241,medium,706147.0,5260,5260 Mechanical Rough Inspection,1
8526,13485,Peninsula,4241,medium,706147.0,5300,5300 Municipal Electric Inspection,1
8527,13264,Welches Pond,3905,medium,915363.0,5860,5860 Frame Stage Tour,1
8528,13485,Peninsula,4241,medium,706147.0,5900,5900 Air Seal,1
8529,13442,Walden,4633,medium,656370.0,6300,6300 Energy Inspection,1
8530,13468,Governors,2977,medium,869889.0,6300,6300 Energy Inspection,1
8531,13253,River Mill,2912,medium,692624.0,6340,6340 Install Overhead Door,1
8532,13471,Cardinal Grove,2233,medium,517387.0,6340,6340 Install Overhead Door,1
8533,13442,Walden,4633,medium,656370.0,6345,6345 Stock Drywall,1
8534,13258,River Mill,3064,medium,670416.0,6345,6345 Stock Drywall,1
8535,13468,Governors,2977,medium,869889.0,6345,6345 Stock Drywall,1
8536,13496,Hailey's Glen,3443,medium,316917.0,6345,6345 Stock Drywall,1
8537,13423,Governors,2974,medium,884692.0,6380,6380 Install Drywall,10
8538,13349,Peninsula Lakes,2188,medium,442826.0,6380,6380 Install Drywall,10
8539,13264,Welches Pond,3905,medium,915363.0,6390,6390 Schedule Gas Meter,1
8540,13468,Governors,2977,medium,869889.0,6620,6620 Receive Vinyl Siding,1
8541,13468,Governors,2977,medium,869889.0,6700,6700 Receive Composite Ext Trim,1
8542,13468,Governors,2977,medium,869889.0,6720,6720 Receive Siding Accents,1
8543,13468,Governors,2977,medium,869889.0,6740,6740 Receive PVC Exterior Trim,1
8544,13468,Governors,2977,medium,869889.0,6820,6820 Receive Deck Skirting,1
8545,13501,Hailey's Glen,2736,medium,694771.0,6860,6860 Siding Installation,5
8546,13253,River Mill,2912,medium,692624.0,7140,7140 Exterior Painting,1
8547,13253,River Mill,2912,medium,692624.0,7300,7300 Receive Interior Trim,1
8548,13507,Welches Pond,2852,medium,845914.0,7300,7300 Receive Interior Trim,1
8549,13408,NewMarket,3940,medium,889253.0,7300,7300 Receive Interior Trim,1
8550,13408,NewMarket,3940,medium,889253.0,7304,7304 Receive Goodie Box,1
8551,13253,River Mill,2912,medium,692624.0,7304,7304 Receive Goodie Box,1
8552,13507,Welches Pond,2852,medium,845914.0,7304,7304 Receive Goodie Box,1
8553,13253,River Mill,2912,medium,692624.0,7700,7700 Receive Interior Doors,1
8554,13507,Welches Pond,2852,medium,845914.0,7700,7700 Receive Interior Doors,1
8555,13408,NewMarket,3940,medium,889253.0,7700,7700 Receive Interior Doors,1
8556,13408,NewMarket,3940,medium,889253.0,7860,7860 Install Interior Trim,2
8557,13277,Mosaic,1704,medium,561869.0,7860,7860 Install Interior Trim,2
8558,13137,Marlin Chase,2330,medium,637264.0,7861,7861 Interior Trim Punch,1
8559,13253,River Mill,2912,medium,692624.0,7862,7862 Receive Cabinet Hardware Allocation,1
8560,13507,Welches Pond,2852,medium,845914.0,7862,7862 Receive Cabinet Hardware Allocation,1
8561,13408,NewMarket,3940,medium,889253.0,7862,7862 Receive Cabinet Hardware Allocation,1
8562,13408,NewMarket,3940,medium,889253.0,7866,7866 Receive Door Hardware,1
8563,13507,Welches Pond,2852,medium,845914.0,7866,7866 Receive Door Hardware,1
8564,13476,Durham Farms,4277,medium,750956.0,7866,7866 Receive Door Hardware,1
8565,13408,NewMarket,3940,medium,889253.0,7900,7900 Receive Cabinets Allocation,1
8566,13507,Welches Pond,2852,medium,845914.0,7900,7900 Receive Cabinets Allocation,1
8567,13507,Welches Pond,2852,medium,845914.0,7901,7901 Cabinet Delivery Charges,1
8568,13408,NewMarket,3940,medium,889253.0,7901,7901 Cabinet Delivery Charges,1
8569,13408,NewMarket,3940,medium,889253.0,7940,7940 Receive Vanity Tops,1
8570,13507,Welches Pond,2852,medium,845914.0,7940,7940 Receive Vanity Tops,1
8571,13507,Welches Pond,2852,medium,845914.0,8020,8020 Receive Interior Railing,1
8572,13408,NewMarket,3940,medium,889253.0,8260,8260 Install Interior Railing,1
8573,13465,Cardinal Grove,1764,medium,569722.0,8380,8380 Template Countertops,1
8574,13091,Marlin Chase,2591,medium,562928.0,8380,8380 Template Countertops,1
8575,13253,River Mill,2912,medium,692624.0,8420,8420 1st Paint,1
8576,13471,Cardinal Grove,2233,medium,517387.0,8420,8420 1st Paint,1
8577,13360,Peninsula Lakes,3496,medium,575090.0,8465,8465 Install Tiled Backsplash,1
8578,12920,Peninsula,4116,high,1454538.0,8540,8540 Install Bath Accessories,1
8579,12920,Peninsula,4116,high,1454538.0,8545,8545 Install Mirrors,1
8580,12920,Peninsula,4116,high,1454538.0,8900,8900 Install Closet Shelving,1
8581,13120,Marsh Island,4291,medium,851477.0,8920,8920 Install Water Heater/1st Trim,1
8582,13137,Marlin Chase,2330,medium,637264.0,8940,8940 Plumbing Trim,1
8583,12993,Peninsula,5996,high,750956.0,8980,8980 Final Plumbing Inspection,1
8584,13112,Marlin Chase,3171,medium,634940.0,9020,9020 Electric Trim,5
8585,13501,Hailey's Glen,2736,medium,694771.0,9140,9140 2nd Stage Air Seal,1
8586,13440,Marlin Chase,3067,medium,714189.0,9755,9755 Rec. GE Appliance Pkg2 Allocation,1
8587,12993,Peninsula,5996,high,750956.0,9756,9756 Receive N/S Appliance Pkg 2,1
8588,13501,Hailey's Glen,2736,medium,694771.0,9905,9905 Sewer Lateral,7
8589,13113,Marlin Chase,2814,medium,750956.0,9980,9980 Final Cleaning,1
8590,13137,Marlin Chase,2330,medium,637264.0,10020,10020 Final Grade,1
8591,12920,Peninsula,4116,high,1454538.0,10260,10260 Install House Numbers,1
8592,13360,Peninsula Lakes,3496,medium,575090.0,10301,10301 Driveway Apron,1
8593,13278,Mosaic,2320,medium,818814.0,10460,10460 Drywall Touch Up,2
8594,13520,Hailey's Glen,2792,medium,606920.0,10940,10940 Framing Retainage,1
8595,13477,Cardinal Grove,2589,medium,750956.0,0,vancheck Check Vanity Tops/Windows for Damage,1
8596,13468,Governors,2977,medium,869889.0,0,GrillOrd Order Grill/Firebox,1
8597,12920,Peninsula,4116,high,1454538.0,0,cabcheck Check Cabinets for Damage,1
8598,13529,Governors,1901,medium,787652.0,140,140 Framing DRAW 2,1
8599,13462,Peninsula,4787,high,1490269.0,4020,4020 Set Trusses,3
8600,13462,Peninsula,4787,high,1490269.0,4460,4460 Schedule Gas Lateral Contractor,1
8601,13164,Welches Pond,4497,medium,1024665.0,4461,4461 Install Gas Lateral,1
8602,13394,Peninsula Lakes,2154,medium,474879.0,4461,4461 Install Gas Lateral,1
8603,13485,Peninsula,4241,medium,706147.0,4700,4700 Internal Framing Inspection,1
8604,13164,Welches Pond,4497,medium,1024665.0,4980,4980 Plumbing Rough,2
8605,13264,Welches Pond,3905,medium,915363.0,5180,5180 Electric Rough,4
8606,13529,Governors,1901,medium,787652.0,5825,5825 Frame Punch,1
8607,13520,Hailey's Glen,2792,medium,606920.0,5860,5860 Frame Stage Tour,1
8608,13503,Marsh Island,4307,medium,892519.0,6300,6300 Energy Inspection,1
8609,13088,Forest Hills,3580,medium,222544.0,6340,6340 Install Overhead Door,1
8610,13140,Marlin Chase,2824,medium,766881.0,6340,6340 Install Overhead Door,7
8611,13503,Marsh Island,4307,medium,892519.0,6345,6345 Stock Drywall,1
8612,13442,Walden,4633,medium,656370.0,6380,6380 Install Drywall,10
8613,13496,Hailey's Glen,3443,medium,316917.0,6380,6380 Install Drywall,12
8614,13468,Governors,2977,medium,869889.0,6380,6380 Install Drywall,9
8615,13137,Marlin Chase,2330,medium,637264.0,6381,6381 Drywall Punch,1
8616,13496,Hailey's Glen,3443,medium,316917.0,6781,6781 Receive Column Wrap/Flower Bx/Pediment,1
8617,13468,Governors,2977,medium,869889.0,6860,6860 Siding Installation,7
8618,13140,Marlin Chase,2824,medium,766881.0,6885,6885 Install Screen Porch Enclosure,1
8619,13152,Marlin Chase,2710,medium,768496.0,6885,6885 Install Screen Porch Enclosure,1
8620,13144,Marlin Chase,3055,medium,740636.0,6885,6885 Install Screen Porch Enclosure,1
8621,13258,River Mill,3064,medium,670416.0,6910,6910 Install Brick Façade,1
8622,13144,Marlin Chase,3055,medium,740636.0,7180,7180 Install Exterior Railings,1
8623,12920,Peninsula,4116,high,1454538.0,7180,7180 Install Exterior Railings,1
8624,13120,Marsh Island,4291,medium,851477.0,7180,7180 Install Exterior Railings,1
8625,13476,Durham Farms,4277,medium,750956.0,7304,7304 Receive Goodie Box,1
8626,13471,Cardinal Grove,2233,medium,517387.0,7340,7340 Install Ceramic Tile,2
8627,13471,Cardinal Grove,2233,medium,517387.0,7350,7350 Install Shower Tile,3
8628,13471,Cardinal Grove,2233,medium,517387.0,7380,7380 Install Vinyl Floors,1
8629,13253,River Mill,2912,medium,692624.0,7380,7380 Install Vinyl Floors,1
8630,13253,River Mill,2912,medium,692624.0,7860,7860 Install Interior Trim,2
8631,13507,Welches Pond,2852,medium,845914.0,7860,7860 Install Interior Trim,3
8632,13253,River Mill,2912,medium,692624.0,8020,8020 Receive Interior Railing,1
8633,13471,Cardinal Grove,2233,medium,517387.0,8020,8020 Receive Interior Railing,1
8634,13476,Durham Farms,4277,medium,750956.0,8020,8020 Receive Interior Railing,1
8635,13408,NewMarket,3940,medium,889253.0,8300,8300 Install Cabinets,2
8636,13277,Mosaic,1704,medium,561869.0,8380,8380 Template Countertops,1
8637,13465,Cardinal Grove,1764,medium,569722.0,8390,8390 Stone Interior Fireplace,2
8638,13088,Forest Hills,3580,medium,222544.0,8420,8420 1st Paint,1
8639,13035,Forest Hills,4024,medium,816522.0,8460,8460 Install Countertops,7
8640,13035,Forest Hills,4024,medium,816522.0,9100,9100 HVAC Trim / Set Unit,2
8641,13139,Marlin Chase,2554,medium,704067.0,9110,9110 Gas Trim,1
8642,13137,Marlin Chase,2330,medium,637264.0,9110,9110 Gas Trim,1
8643,12920,Peninsula,4116,high,1454538.0,9260,9260 Structured Wiring Trim,1
8644,13112,Marlin Chase,3171,medium,634940.0,9460,9460 Attic Insulation,1
8645,13408,NewMarket,3940,medium,889253.0,9540,9540 Rec. GE Appliance Pkg1 Allocation,1
8646,13408,NewMarket,3940,medium,889253.0,9620,9620 Install Appliances,1
8647,12920,Peninsula,4116,high,1454538.0,9700,9700 Install Hardwood Flooring,1
8648,13137,Marlin Chase,2330,medium,637264.0,9755,9755 Rec. GE Appliance Pkg2 Allocation,1
8649,13152,Marlin Chase,2710,medium,768496.0,9820,9820 Install Gutters,1
8650,12920,Peninsula,4116,high,1454538.0,9990,9990 2nd Stage Termite Treatment,1
8651,13136,Marlin Chase,3170,medium,806102.0,10020,10020 Final Grade,1
8652,13145,Marlin Chase,3204,medium,841553.0,10020,10020 Final Grade,1
8653,13136,Marlin Chase,3170,medium,806102.0,10100,10100 Irrigation Installation,1
8654,13145,Marlin Chase,3204,medium,841553.0,10100,10100 Irrigation Installation,1
8655,13137,Marlin Chase,2330,medium,637264.0,10100,10100 Irrigation Installation,1
8656,13152,Marlin Chase,2710,medium,768496.0,10260,10260 Install House Numbers,1
8657,13091,Marlin Chase,2591,medium,562928.0,10460,10460 Drywall Touch Up,2
8658,13465,Cardinal Grove,1764,medium,569722.0,10500,10500 Paint 2,4
8659,13113,Marlin Chase,2814,medium,750956.0,10501,10501 Paint Retouch,1
8660,13113,Marlin Chase,2814,medium,750956.0,10620,10620 Punch Out Allocation,1
8661,12832,Peninsula,4562,high,1090397.0,0,vancheck Check Vanity Tops/Windows for Damage,1
8662,13529,Governors,1901,medium,787652.0,3,3 TRADES START,1
8663,13495,Welches Pond,2650,medium,674167.0,4940,4940 Install Fireplace,1
8664,13495,Welches Pond,2650,medium,674167.0,4980,4980 Plumbing Rough,2
8665,13471,Cardinal Grove,2233,medium,517387.0,4981,4981 Deliver Sinks,1
8666,13529,Governors,1901,medium,787652.0,5100,5100 HVAC Rough,2
8667,13397,Peninsula,5533,high,750956.0,5100,5100 HVAC Rough,3
8668,13529,Governors,1901,medium,787652.0,5120,5120 HVAC Set Furnace,1
8669,13397,Peninsula,5533,high,750956.0,5120,5120 HVAC Set Furnace,1
8670,13030,Peninsula,5546,high,1768191.0,5177,5177 Electric Meter Connection,1
8671,13485,Peninsula,4241,medium,706147.0,5820,5820 Framing Inspection,1
8672,13339,Peninsula,5583,high,750956.0,5860,5860 Frame Stage Tour,1
8673,13496,Hailey's Glen,3443,medium,316917.0,6180,6180 Install Insulation,2
8674,13503,Marsh Island,4307,medium,892519.0,6380,6380 Install Drywall,8
8675,13258,River Mill,3064,medium,670416.0,6380,6380 Install Drywall,8
8676,13277,Mosaic,1704,medium,561869.0,6381,6381 Drywall Punch,2
8677,13164,Welches Pond,4497,medium,1024665.0,6390,6390 Schedule Gas Meter,1
8678,13503,Marsh Island,4307,medium,892519.0,6620,6620 Receive Vinyl Siding,1
8679,13496,Hailey's Glen,3443,medium,316917.0,6620,6620 Receive Vinyl Siding,1
8680,13503,Marsh Island,4307,medium,892519.0,6700,6700 Receive Composite Ext Trim,1
8681,13503,Marsh Island,4307,medium,892519.0,6720,6720 Receive Siding Accents,1
8682,13496,Hailey's Glen,3443,medium,316917.0,6720,6720 Receive Siding Accents,2
8683,13503,Marsh Island,4307,medium,892519.0,6740,6740 Receive PVC Exterior Trim,1
8684,13503,Marsh Island,4307,medium,892519.0,6820,6820 Receive Deck Skirting,1
8685,13471,Cardinal Grove,2233,medium,517387.0,7300,7300 Receive Interior Trim,1
8686,13471,Cardinal Grove,2233,medium,517387.0,7304,7304 Receive Goodie Box,1
8687,13088,Forest Hills,3580,medium,222544.0,7340,7340 Install Ceramic Tile,26
8688,13088,Forest Hills,3580,medium,222544.0,7350,7350 Install Shower Tile,26
8689,13471,Cardinal Grove,2233,medium,517387.0,7700,7700 Receive Interior Doors,1
8690,13476,Durham Farms,4277,medium,750956.0,7860,7860 Install Interior Trim,2
8691,13471,Cardinal Grove,2233,medium,517387.0,7862,7862 Receive Cabinet Hardware Allocation,1
8692,13471,Cardinal Grove,2233,medium,517387.0,7866,7866 Receive Door Hardware,1
8693,13471,Cardinal Grove,2233,medium,517387.0,7900,7900 Receive Cabinets Allocation,1
8694,13471,Cardinal Grove,2233,medium,517387.0,7901,7901 Cabinet Delivery Charges,1
8695,13471,Cardinal Grove,2233,medium,517387.0,7940,7940 Receive Vanity Tops,1
8696,13471,Cardinal Grove,2233,medium,517387.0,8260,8260 Install Interior Railing,1
8697,13476,Durham Farms,4277,medium,750956.0,8260,8260 Install Interior Railing,6
8698,13253,River Mill,2912,medium,692624.0,8260,8260 Install Interior Railing,1
8699,13477,Cardinal Grove,2589,medium,750956.0,8460,8460 Install Countertops,1
8700,13507,Welches Pond,2852,medium,845914.0,8579,8579 Template Shower Enclosure,1
8701,13495,Welches Pond,2650,medium,674167.0,8820,8820 Schedule Irrigation Well,1
8702,13477,Cardinal Grove,2589,medium,750956.0,9020,9020 Electric Trim,2
8703,13035,Forest Hills,4024,medium,816522.0,9020,9020 Electric Trim,6
8704,13112,Marlin Chase,3171,medium,634940.0,9100,9100 HVAC Trim / Set Unit,1
8705,13477,Cardinal Grove,2589,medium,750956.0,9100,9100 HVAC Trim / Set Unit,1
8706,13360,Peninsula Lakes,3496,medium,575090.0,9110,9110 Gas Trim,1
8707,12920,Peninsula,4116,high,1454538.0,9110,9110 Gas Trim,1
8708,13392,Marsh Island,2795,medium,771707.0,9140,9140 2nd Stage Air Seal,1
8709,13477,Cardinal Grove,2589,medium,750956.0,9260,9260 Structured Wiring Trim,1
8710,13349,Peninsula Lakes,2188,medium,442826.0,9420,9420 Install Solar Panels,1
8711,13253,River Mill,2912,medium,692624.0,9540,9540 Rec. GE Appliance Pkg1 Allocation,1
8712,13476,Durham Farms,4277,medium,750956.0,9620,9620 Install Appliances,6
8713,13120,Marsh Island,4291,medium,851477.0,9660,9660 Install Carpet Flooring,1
8714,13137,Marlin Chase,2330,medium,637264.0,9740,9740 Fireplace Start Up,1
8715,13501,Hailey's Glen,2736,medium,694771.0,9900,9900 Water Lateral,7
8716,13137,Marlin Chase,2330,medium,637264.0,9980,9980 Final Cleaning,1
8717,13138,Marlin Chase,3171,medium,859133.0,9990,9990 2nd Stage Termite Treatment,1
8718,13136,Marlin Chase,3170,medium,806102.0,9990,9990 2nd Stage Termite Treatment,1
8719,13440,Marlin Chase,3067,medium,714189.0,10100,10100 Irrigation Installation,1
8720,13278,Mosaic,2320,medium,818814.0,10500,10500 Paint 2,3
8721,13485,Peninsula,4241,medium,706147.0,10940,10940 Framing Retainage,1
8722,13465,Cardinal Grove,1764,medium,569722.0,0,vancheck Check Vanity Tops/Windows for Damage,1
8723,13030,Peninsula,5546,high,1768191.0,0,GrillOrd Order Grill/Firebox,1
8724,13092,Marlin Chase,2079,medium,433351.0,0,vancheck Check Vanity Tops/Windows for Damage,1
8725,13496,Hailey's Glen,3443,medium,316917.0,3140,3140 Pour Porch Slab,1
8726,13091,Marlin Chase,2591,medium,562928.0,4461,4461 Install Gas Lateral,1
8727,13035,Forest Hills,4024,medium,816522.0,4590,4590 Install Metal Roofing,4
8728,13164,Welches Pond,4497,medium,1024665.0,4940,4940 Install Fireplace,1
8729,13088,Forest Hills,3580,medium,222544.0,4981,4981 Deliver Sinks,1
8730,13164,Welches Pond,4497,medium,1024665.0,5180,5180 Electric Rough,3
8731,13164,Welches Pond,4497,medium,1024665.0,5740,5740 Install Gas Lines,1
8732,13164,Welches Pond,4497,medium,1024665.0,5860,5860 Frame Stage Tour,1
8733,13462,Peninsula,4787,high,1490269.0,5940,5940 Order Cabinets,1
8734,13462,Peninsula,4787,high,1490269.0,5941,5941 Order Cabinet Hardware,1
8735,13485,Peninsula,4241,medium,706147.0,6180,6180 Install Insulation,2
8736,13496,Hailey's Glen,3443,medium,316917.0,6700,6700 Receive Composite Ext Trim,1
8737,13496,Hailey's Glen,3443,medium,316917.0,6740,6740 Receive PVC Exterior Trim,1
8738,13496,Hailey's Glen,3443,medium,316917.0,6820,6820 Receive Deck Skirting,1
8739,13496,Hailey's Glen,3443,medium,316917.0,6860,6860 Siding Installation,11
8740,13503,Marsh Island,4307,medium,892519.0,6860,6860 Siding Installation,9
8741,13101,Marlin Chase,2461,medium,682900.0,7140,7140 Exterior Painting,1
8742,13471,Cardinal Grove,2233,medium,517387.0,7860,7860 Install Interior Trim,2
8743,12920,Peninsula,4116,high,1454538.0,7861,7861 Interior Trim Punch,2
8744,13507,Welches Pond,2852,medium,845914.0,8300,8300 Install Cabinets,2
8745,13476,Durham Farms,4277,medium,750956.0,8380,8380 Template Countertops,5
8746,13120,Marsh Island,4291,medium,851477.0,8465,8465 Install Tiled Backsplash,1
8747,13476,Durham Farms,4277,medium,750956.0,8579,8579 Template Shower Enclosure,1
8748,13477,Cardinal Grove,2589,medium,750956.0,8920,8920 Install Water Heater/1st Trim,1
8749,12920,Peninsula,4116,high,1454538.0,8940,8940 Plumbing Trim,3
8750,13394,Peninsula Lakes,2154,medium,474879.0,9140,9140 2nd Stage Air Seal,1
8751,13253,River Mill,2912,medium,692624.0,9140,9140 2nd Stage Air Seal,1
8752,13281,Marlin Chase,3558,medium,786910.0,9140,9140 2nd Stage Air Seal,1
8753,13035,Forest Hills,4024,medium,816522.0,9260,9260 Structured Wiring Trim,1
8754,13112,Marlin Chase,3171,medium,634940.0,9260,9260 Structured Wiring Trim,1
8755,13164,Welches Pond,4497,medium,1024665.0,9390,9390 Install Water Meter/Sewer Frame,1
8756,13495,Welches Pond,2650,medium,674167.0,9390,9390 Install Water Meter/Sewer Frame,10
8757,13507,Welches Pond,2852,medium,845914.0,9540,9540 Rec. GE Appliance Pkg1 Allocation,14
8758,13507,Welches Pond,2852,medium,845914.0,9541,9541 Receive N/S Appliance Pkg 1,1
8759,13507,Welches Pond,2852,medium,845914.0,9620,9620 Install Appliances,1
8760,12920,Peninsula,4116,high,1454538.0,9740,9740 Fireplace Start Up,1
8761,13112,Marlin Chase,3171,medium,634940.0,9820,9820 Install Gutters,1
8762,13495,Welches Pond,2650,medium,674167.0,9900,9900 Water Lateral,10
8763,13164,Welches Pond,4497,medium,1024665.0,9900,9900 Water Lateral,7
8764,13164,Welches Pond,4497,medium,1024665.0,9905,9905 Sewer Lateral,7
8765,13495,Welches Pond,2650,medium,674167.0,9905,9905 Sewer Lateral,10
8766,13496,Hailey's Glen,3443,medium,316917.0,9905,9905 Sewer Lateral,1
8767,13138,Marlin Chase,3171,medium,859133.0,9980,9980 Final Cleaning,1
8768,13152,Marlin Chase,2710,medium,768496.0,9990,9990 2nd Stage Termite Treatment,1
8769,12993,Peninsula,5996,high,750956.0,9990,9990 2nd Stage Termite Treatment,1
8770,13401,Welches Pond,2927,medium,731557.0,10260,10260 Install House Numbers,1
8771,13477,Cardinal Grove,2589,medium,750956.0,10301,10301 Driveway Apron,1
8772,13477,Cardinal Grove,2589,medium,750956.0,10340,10340 Install Leadwalk & Comm. Sidewalk,1
8773,13360,Peninsula Lakes,3496,medium,575090.0,10340,10340 Install Leadwalk & Comm. Sidewalk,24
8774,13253,River Mill,2912,medium,692624.0,10460,10460 Drywall Touch Up,2
8775,13091,Marlin Chase,2591,medium,562928.0,10500,10500 Paint 2,3
8776,13137,Marlin Chase,2330,medium,637264.0,10620,10620 Punch Out Allocation,1
8777,13138,Marlin Chase,3171,medium,859133.0,0,cabcheck Check Cabinets for Damage,1
8778,13091,Marlin Chase,2591,medium,562928.0,0,vancheck Check Vanity Tops/Windows for Damage,1
8779,13397,Peninsula,5533,high,750956.0,3,3 TRADES START,1
8780,13462,Peninsula,4787,high,1490269.0,4380,4380 Roof Sheathing,2
8781,13507,Welches Pond,2852,medium,845914.0,4542,4542 Measure/Order Window Coverings,1
8782,13091,Marlin Chase,2591,medium,562928.0,4590,4590 Install Metal Roofing,1
8783,13462,Peninsula,4787,high,1490269.0,4775,4775 Receive Hardwood Stairs,1
8784,13529,Governors,1901,medium,787652.0,4940,4940 Install Fireplace,1
8785,13529,Governors,1901,medium,787652.0,4980,4980 Plumbing Rough,2
8786,13264,Welches Pond,3905,medium,915363.0,5260,5260 Mechanical Rough Inspection,1
8787,13264,Welches Pond,3905,medium,915363.0,5580,5580 Structured Wiring Rough,1
8788,13495,Welches Pond,2650,medium,674167.0,5740,5740 Install Gas Lines,1
8789,13495,Welches Pond,2650,medium,674167.0,5860,5860 Frame Stage Tour,1
8790,13408,NewMarket,3940,medium,889253.0,6340,6340 Install Overhead Door,1
8791,13091,Marlin Chase,2591,medium,562928.0,6390,6390 Schedule Gas Meter,1
8792,13091,Marlin Chase,2591,medium,562928.0,6391,6391 Install Gas Meter,1
8793,13088,Forest Hills,3580,medium,222544.0,6391,6391 Install Gas Meter,1
8794,13476,Durham Farms,4277,medium,750956.0,6705,6705 Receive Trellis Material,4
8795,13476,Durham Farms,4277,medium,750956.0,6721,6721 Receive Brackets,10
8796,13476,Durham Farms,4277,medium,750956.0,6781,6781 Receive Column Wrap/Flower Bx/Pediment,4
8797,13423,Governors,2974,medium,884692.0,6884,6884 Measure Screen Porch Enclosure,1
8798,13091,Marlin Chase,2591,medium,562928.0,6884,6884 Measure Screen Porch Enclosure,1
8799,13442,Walden,4633,medium,656370.0,6885,6885 Install Screen Porch Enclosure,32
8800,13465,Cardinal Grove,1764,medium,569722.0,6885,6885 Install Screen Porch Enclosure,1
8801,12832,Peninsula,4562,high,1090397.0,6885,6885 Install Screen Porch Enclosure,1
8802,12993,Peninsula,5996,high,750956.0,7060,7060 Exterior Masonry Installation,16
8803,12920,Peninsula,4116,high,1454538.0,7060,7060 Exterior Masonry Installation,2
8804,13360,Peninsula Lakes,3496,medium,575090.0,7180,7180 Install Exterior Railings,1
8805,13112,Marlin Chase,3171,medium,634940.0,7180,7180 Install Exterior Railings,1
8806,13091,Marlin Chase,2591,medium,562928.0,7220,7220 Install Deck Skirting/Flower Boxes,1
8807,13088,Forest Hills,3580,medium,222544.0,7862,7862 Receive Cabinet Hardware Allocation,1
8808,13088,Forest Hills,3580,medium,222544.0,7900,7900 Receive Cabinets Allocation,1
8809,13088,Forest Hills,3580,medium,222544.0,7901,7901 Cabinet Delivery Charges,1
8810,13088,Forest Hills,3580,medium,222544.0,7940,7940 Receive Vanity Tops,1
8811,13088,Forest Hills,3580,medium,222544.0,8220,8220 Install Fireplace Surround/Mantel,1
8812,13471,Cardinal Grove,2233,medium,517387.0,8300,8300 Install Cabinets,2
8813,13277,Mosaic,1704,medium,561869.0,8460,8460 Install Countertops,1
8814,13471,Cardinal Grove,2233,medium,517387.0,8579,8579 Template Shower Enclosure,1
8815,13278,Mosaic,2320,medium,818814.0,8920,8920 Install Water Heater/1st Trim,1
8816,13020,Peninsula Lakes,2100,low,578095.0,8940,8940 Plumbing Trim,1
8817,13477,Cardinal Grove,2589,medium,750956.0,9060,9060 Final Electric Inspection,1
8818,13278,Mosaic,2320,medium,818814.0,9100,9100 HVAC Trim / Set Unit,2
8819,13477,Cardinal Grove,2589,medium,750956.0,9101,9101 HVAC Startup,26
8820,13030,Peninsula,5546,high,1768191.0,9140,9140 2nd Stage Air Seal,3
8821,13501,Hailey's Glen,2736,medium,694771.0,9460,9460 Attic Insulation,1
8822,13253,River Mill,2912,medium,692624.0,9460,9460 Attic Insulation,1
8823,13471,Cardinal Grove,2233,medium,517387.0,9540,9540 Rec. GE Appliance Pkg1 Allocation,1
8824,13278,Mosaic,2320,medium,818814.0,9540,9540 Rec. GE Appliance Pkg1 Allocation,1
8825,13278,Mosaic,2320,medium,818814.0,9541,9541 Receive N/S Appliance Pkg 1,1
8826,13471,Cardinal Grove,2233,medium,517387.0,9620,9620 Install Appliances,1
8827,12920,Peninsula,4116,high,1454538.0,9660,9660 Install Carpet Flooring,1
8828,13360,Peninsula Lakes,3496,medium,575090.0,9740,9740 Fireplace Start Up,1
8829,12993,Peninsula,5996,high,750956.0,10020,10020 Final Grade,1
8830,13477,Cardinal Grove,2589,medium,750956.0,10300,10300 Install Driveway,1
8831,13507,Welches Pond,2852,medium,845914.0,10460,10460 Drywall Touch Up,2
8832,13277,Mosaic,1704,medium,561869.0,10500,10500 Paint 2,3
8833,13495,Welches Pond,2650,medium,674167.0,4461,4461 Install Gas Lateral,1
8834,13501,Hailey's Glen,2736,medium,694771.0,4590,4590 Install Metal Roofing,1
8835,13339,Peninsula,5583,high,750956.0,4665,4665 Elevator Rough,2
8836,13339,Peninsula,5583,high,750956.0,4700,4700 Internal Framing Inspection,1
8837,13091,Marlin Chase,2591,medium,562928.0,4981,4981 Deliver Sinks,1
8838,13112,Marlin Chase,3171,medium,634940.0,5177,5177 Electric Meter Connection,1
8839,13092,Marlin Chase,2079,medium,433351.0,5177,5177 Electric Meter Connection,1
8840,13088,Forest Hills,3580,medium,222544.0,5177,5177 Electric Meter Connection,1
8841,13495,Welches Pond,2650,medium,674167.0,5180,5180 Electric Rough,3
8842,13164,Welches Pond,4497,medium,1024665.0,5260,5260 Mechanical Rough Inspection,1
8843,13264,Welches Pond,3905,medium,915363.0,5300,5300 Municipal Electric Inspection,1
8844,13164,Welches Pond,4497,medium,1024665.0,5580,5580 Structured Wiring Rough,1
8845,13529,Governors,1901,medium,787652.0,5740,5740 Install Gas Lines,1
8846,13529,Governors,1901,medium,787652.0,5860,5860 Frame Stage Tour,1
8847,13264,Welches Pond,3905,medium,915363.0,5900,5900 Air Seal,1
8848,13339,Peninsula,5583,high,750956.0,5900,5900 Air Seal,6
8849,13485,Peninsula,4241,medium,706147.0,6300,6300 Energy Inspection,1
8850,13485,Peninsula,4241,medium,706147.0,6345,6345 Stock Drywall,1
8851,12920,Peninsula,4116,high,1454538.0,6381,6381 Drywall Punch,1
8852,13339,Peninsula,5583,high,750956.0,6390,6390 Schedule Gas Meter,2
8853,13501,Hailey's Glen,2736,medium,694771.0,6391,6391 Install Gas Meter,1
8854,13476,Durham Farms,4277,medium,750956.0,6860,6860 Siding Installation,25
8855,13501,Hailey's Glen,2736,medium,694771.0,6884,6884 Measure Screen Porch Enclosure,1
8856,13091,Marlin Chase,2591,medium,562928.0,7140,7140 Exterior Painting,1
8857,13032,Welches Pond,2812,medium,643995.0,7140,7140 Exterior Painting,8
8858,13501,Hailey's Glen,2736,medium,694771.0,7220,7220 Install Deck Skirting/Flower Boxes,1
8859,13088,Forest Hills,3580,medium,222544.0,7300,7300 Receive Interior Trim,1
8860,13088,Forest Hills,3580,medium,222544.0,7304,7304 Receive Goodie Box,1
8861,13088,Forest Hills,3580,medium,222544.0,7700,7700 Receive Interior Doors,1
8862,13088,Forest Hills,3580,medium,222544.0,8020,8020 Receive Interior Railing,1
8863,13088,Forest Hills,3580,medium,222544.0,8300,8300 Install Cabinets,1
8864,13507,Welches Pond,2852,medium,845914.0,8380,8380 Template Countertops,1
8865,13112,Marlin Chase,3171,medium,634940.0,8390,8390 Stone Interior Fireplace,5
8866,13392,Marsh Island,2795,medium,771707.0,8420,8420 1st Paint,1
8867,13091,Marlin Chase,2591,medium,562928.0,8460,8460 Install Countertops,1
8868,13465,Cardinal Grove,1764,medium,569722.0,8460,8460 Install Countertops,1
8869,13477,Cardinal Grove,2589,medium,750956.0,8465,8465 Install Tiled Backsplash,1
8870,13465,Cardinal Grove,1764,medium,569722.0,9020,9020 Electric Trim,2
8871,13278,Mosaic,2320,medium,818814.0,9020,9020 Electric Trim,2
8872,12920,Peninsula,4116,high,1454538.0,9060,9060 Final Electric Inspection,1
8873,13465,Cardinal Grove,1764,medium,569722.0,9100,9100 HVAC Trim / Set Unit,1
8874,13035,Forest Hills,4024,medium,816522.0,9101,9101 HVAC Startup,3
8875,13020,Peninsula Lakes,2100,low,578095.0,9110,9110 Gas Trim,1
8876,13465,Cardinal Grove,1764,medium,569722.0,9260,9260 Structured Wiring Trim,1
8877,13501,Hailey's Glen,2736,medium,694771.0,9380,9380 Install Irrigation Well,1
8878,13392,Marsh Island,2795,medium,771707.0,9460,9460 Attic Insulation,1
8879,12993,Peninsula,5996,high,750956.0,9500,9500 Blower Door/Ductblaster,1
8880,13278,Mosaic,2320,medium,818814.0,9620,9620 Install Appliances,1
8881,13152,Marlin Chase,2710,medium,768496.0,9980,9980 Final Cleaning,1
8882,13477,Cardinal Grove,2589,medium,750956.0,10020,10020 Final Grade,1
8883,12993,Peninsula,5996,high,750956.0,10100,10100 Irrigation Installation,1
8884,13277,Mosaic,1704,medium,561869.0,10300,10300 Install Driveway,1
8885,13277,Mosaic,1704,medium,561869.0,10301,10301 Driveway Apron,1
8886,13277,Mosaic,1704,medium,561869.0,10340,10340 Install Leadwalk & Comm. Sidewalk,1
8887,13092,Marlin Chase,2079,medium,433351.0,10380,10380 As Built Survey,1
8888,13477,Cardinal Grove,2589,medium,750956.0,10380,10380 As Built Survey,1
8889,13471,Cardinal Grove,2233,medium,517387.0,10460,10460 Drywall Touch Up,2
8890,13253,River Mill,2912,medium,692624.0,10500,10500 Paint 2,4
8891,13092,Marlin Chase,2079,medium,433351.0,10745,10745 Install Window Coverings,1
8892,13462,Peninsula,4787,high,1490269.0,4260,4260 Receive Windows,1
8893,13462,Peninsula,4787,high,1490269.0,4300,4300 Receive Window/Door Flashings,1
8894,13462,Peninsula,4787,high,1490269.0,4340,4340 Receive Exterior Doors,1
8895,13476,Durham Farms,4277,medium,750956.0,4461,4461 Install Gas Lateral,6
8896,13264,Welches Pond,3905,medium,915363.0,4700,4700 Internal Framing Inspection,1
8897,13112,Marlin Chase,3171,medium,634940.0,4981,4981 Deliver Sinks,1
8898,13152,Marlin Chase,2710,medium,768496.0,5177,5177 Electric Meter Connection,1
8899,13091,Marlin Chase,2591,medium,562928.0,5177,5177 Electric Meter Connection,1
8900,13440,Marlin Chase,3067,medium,714189.0,5177,5177 Electric Meter Connection,1
8901,13136,Marlin Chase,3170,medium,806102.0,5177,5177 Electric Meter Connection,1
8902,13529,Governors,1901,medium,787652.0,5180,5180 Electric Rough,3
8903,13164,Welches Pond,4497,medium,1024665.0,5300,5300 Municipal Electric Inspection,1
8904,13264,Welches Pond,3905,medium,915363.0,5820,5820 Framing Inspection,1
8905,13520,Hailey's Glen,2792,medium,606920.0,5820,5820 Framing Inspection,1
8906,13164,Welches Pond,4497,medium,1024665.0,5900,5900 Air Seal,1
8907,13175,Peninsula Lakes,2245,low,567645.0,6340,6340 Install Overhead Door,1
8908,13485,Peninsula,4241,medium,706147.0,6380,6380 Install Drywall,10
8909,13495,Welches Pond,2650,medium,674167.0,6390,6390 Schedule Gas Meter,1
8910,13485,Peninsula,4241,medium,706147.0,6620,6620 Receive Vinyl Siding,1
8911,13485,Peninsula,4241,medium,706147.0,6660,6660 Receive Fiber Cement Siding,1
8912,13485,Peninsula,4241,medium,706147.0,6700,6700 Receive Composite Ext Trim,1
8913,13485,Peninsula,4241,medium,706147.0,6705,6705 Receive Trellis Material,1
8914,13485,Peninsula,4241,medium,706147.0,6720,6720 Receive Siding Accents,1
8915,13485,Peninsula,4241,medium,706147.0,6721,6721 Receive Brackets,1
8916,13485,Peninsula,4241,medium,706147.0,6725,6725 Receive Shutters,1
8917,13485,Peninsula,4241,medium,706147.0,6740,6740 Receive PVC Exterior Trim,1
8918,13485,Peninsula,4241,medium,706147.0,6781,6781 Receive Column Wrap/Flower Bx/Pediment,1
8919,13485,Peninsula,4241,medium,706147.0,6820,6820 Receive Deck Skirting,1
8920,13112,Marlin Chase,3171,medium,634940.0,6885,6885 Install Screen Porch Enclosure,1
8921,12993,Peninsula,5996,high,750956.0,6887,6887 Install Outdoor Trash/Shower Encl.,1
8922,13501,Hailey's Glen,2736,medium,694771.0,7140,7140 Exterior Painting,1
8923,13152,Marlin Chase,2710,medium,768496.0,7180,7180 Install Exterior Railings,1
8924,13145,Marlin Chase,3204,medium,841553.0,7180,7180 Install Exterior Railings,1
8925,13392,Marsh Island,2795,medium,771707.0,7340,7340 Install Ceramic Tile,2
8926,13408,NewMarket,3940,medium,889253.0,7340,7340 Install Ceramic Tile,2
8927,13408,NewMarket,3940,medium,889253.0,7350,7350 Install Shower Tile,3
8928,13088,Forest Hills,3580,medium,222544.0,7860,7860 Install Interior Trim,2
8929,13035,Forest Hills,4024,medium,816522.0,7866,7866 Receive Door Hardware,1
8930,13392,Marsh Island,2795,medium,771707.0,8020,8020 Receive Interior Railing,1
8931,13392,Marsh Island,2795,medium,771707.0,8220,8220 Install Fireplace Surround/Mantel,1
8932,13253,River Mill,2912,medium,692624.0,8220,8220 Install Fireplace Surround/Mantel,1
8933,13088,Forest Hills,3580,medium,222544.0,8260,8260 Install Interior Railing,14
8934,13408,NewMarket,3940,medium,889253.0,8380,8380 Template Countertops,1
8935,13471,Cardinal Grove,2233,medium,517387.0,8380,8380 Template Countertops,1
8936,13281,Marlin Chase,3558,medium,786910.0,8420,8420 1st Paint,1
8937,13394,Peninsula Lakes,2154,medium,474879.0,8420,8420 1st Paint,1
8938,13112,Marlin Chase,3171,medium,634940.0,8460,8460 Install Countertops,1
8939,13139,Marlin Chase,2554,medium,704067.0,8540,8540 Install Bath Accessories,1
8940,12832,Peninsula,4562,high,1090397.0,8540,8540 Install Bath Accessories,1
8941,12832,Peninsula,4562,high,1090397.0,8545,8545 Install Mirrors,1
8942,13139,Marlin Chase,2554,medium,704067.0,8545,8545 Install Mirrors,1
8943,13112,Marlin Chase,3171,medium,634940.0,8579,8579 Template Shower Enclosure,1
8944,13139,Marlin Chase,2554,medium,704067.0,8580,8580 Install Shower Enclosures,1
8945,12832,Peninsula,4562,high,1090397.0,8580,8580 Install Shower Enclosures,1
8946,12832,Peninsula,4562,high,1090397.0,8900,8900 Install Closet Shelving,1
8947,13139,Marlin Chase,2554,medium,704067.0,8900,8900 Install Closet Shelving,1
8948,13035,Forest Hills,4024,medium,816522.0,8920,8920 Install Water Heater/1st Trim,1
8949,13465,Cardinal Grove,1764,medium,569722.0,8920,8920 Install Water Heater/1st Trim,1
8950,13091,Marlin Chase,2591,medium,562928.0,9020,9020 Electric Trim,4
8951,13091,Marlin Chase,2591,medium,562928.0,9100,9100 HVAC Trim / Set Unit,1
8952,13277,Mosaic,1704,medium,561869.0,9100,9100 HVAC Trim / Set Unit,2
8953,13092,Marlin Chase,2079,medium,433351.0,9101,9101 HVAC Startup,1
8954,13440,Marlin Chase,3067,medium,714189.0,9110,9110 Gas Trim,1
8955,13278,Mosaic,2320,medium,818814.0,9260,9260 Structured Wiring Trim,1
8956,13091,Marlin Chase,2591,medium,562928.0,9260,9260 Structured Wiring Trim,1
8957,13091,Marlin Chase,2591,medium,562928.0,9860,9860 Final Utility Connection,0
8958,13136,Marlin Chase,3170,medium,806102.0,9860,9860 Final Utility Connection,1
8959,13520,Hailey's Glen,2792,medium,606920.0,9910,9910 Utility Grade,1
8960,13164,Welches Pond,4497,medium,1024665.0,9910,9910 Utility Grade,1
8961,12993,Peninsula,5996,high,750956.0,9985,9985 Final Clean 2,1
8962,13477,Cardinal Grove,2589,medium,750956.0,9990,9990 2nd Stage Termite Treatment,1
8963,13477,Cardinal Grove,2589,medium,750956.0,10100,10100 Irrigation Installation,1
8964,12993,Peninsula,5996,high,750956.0,10180,10180 Shrub Installation,1
8965,12832,Peninsula,4562,high,1090397.0,10260,10260 Install House Numbers,1
8966,13139,Marlin Chase,2554,medium,704067.0,10260,10260 Install House Numbers,1
8967,13091,Marlin Chase,2591,medium,562928.0,10301,10301 Driveway Apron,1
8968,13465,Cardinal Grove,1764,medium,569722.0,10301,10301 Driveway Apron,1
8969,13465,Cardinal Grove,1764,medium,569722.0,10340,10340 Install Leadwalk & Comm. Sidewalk,1
8970,13091,Marlin Chase,2591,medium,562928.0,10340,10340 Install Leadwalk & Comm. Sidewalk,1
8971,13091,Marlin Chase,2591,medium,562928.0,10345,10345 Pour Concrete Steps,1
8972,13507,Welches Pond,2852,medium,845914.0,10500,10500 Paint 2,5
8973,13152,Marlin Chase,2710,medium,768496.0,10501,10501 Paint Retouch,1
8974,13152,Marlin Chase,2710,medium,768496.0,10620,10620 Punch Out Allocation,1
8975,13339,Peninsula,5583,high,750956.0,140,140 Framing DRAW 2,1
8976,13462,Peninsula,4787,high,1490269.0,4100,4100 Exterior Deck Framing,1
8977,13388,Marsh Island,5848,high,750956.0,4260,4260 Receive Windows,1
8978,13462,Peninsula,4787,high,1490269.0,4390,4390 Receive Roofing Material,1
8979,13462,Peninsula,4787,high,1490269.0,4540,4540 Install Windows,1
8980,13468,Governors,2977,medium,869889.0,4590,4590 Install Metal Roofing,7
8981,13164,Welches Pond,4497,medium,1024665.0,4700,4700 Internal Framing Inspection,4
8982,13462,Peninsula,4787,high,1490269.0,4701,4701 Frame Check,1
8983,13397,Peninsula,5533,high,750956.0,4980,4980 Plumbing Rough,3
8984,13392,Marsh Island,2795,medium,771707.0,4981,4981 Deliver Sinks,1
8985,13258,River Mill,3064,medium,670416.0,5177,5177 Electric Meter Connection,1
8986,13113,Marlin Chase,2814,medium,750956.0,5177,5177 Electric Meter Connection,1
8987,13020,Peninsula Lakes,2100,low,578095.0,5177,5177 Electric Meter Connection,1
8988,13339,Peninsula,5583,high,750956.0,5220,5220 Solar Rough,4
8989,13495,Welches Pond,2650,medium,674167.0,5260,5260 Mechanical Rough Inspection,1
8990,13339,Peninsula,5583,high,750956.0,5300,5300 Municipal Electric Inspection,1
8991,13495,Welches Pond,2650,medium,674167.0,5580,5580 Structured Wiring Rough,1
8992,13264,Welches Pond,3905,medium,915363.0,6180,6180 Install Insulation,2
8993,13496,Hailey's Glen,3443,medium,316917.0,6300,6300 Energy Inspection,1
8994,13144,Marlin Chase,3055,medium,740636.0,6340,6340 Install Overhead Door,1
8995,13440,Marlin Chase,3067,medium,714189.0,6381,6381 Drywall Punch,1
8996,13253,River Mill,2912,medium,692624.0,6391,6391 Install Gas Meter,1
8997,13113,Marlin Chase,2814,medium,750956.0,6391,6391 Install Gas Meter,1
8998,13485,Peninsula,4241,medium,706147.0,6860,6860 Siding Installation,17
8999,13277,Mosaic,1704,medium,561869.0,6884,6884 Measure Screen Porch Enclosure,1
9000,13397,Peninsula,5533,high,750956.0,6900,6900 Schedule Septic Installation,1
9001,13392,Marsh Island,2795,medium,771707.0,7300,7300 Receive Interior Trim,1
9002,13281,Marlin Chase,3558,medium,786910.0,7340,7340 Install Ceramic Tile,2
9003,13394,Peninsula Lakes,2154,medium,474879.0,7340,7340 Install Ceramic Tile,2
9004,13394,Peninsula Lakes,2154,medium,474879.0,7350,7350 Install Shower Tile,3
9005,13281,Marlin Chase,3558,medium,786910.0,7350,7350 Install Shower Tile,7
9006,13394,Peninsula Lakes,2154,medium,474879.0,7380,7380 Install Vinyl Floors,1
9007,13392,Marsh Island,2795,medium,771707.0,7700,7700 Receive Interior Doors,1
9008,13440,Marlin Chase,3067,medium,714189.0,7861,7861 Interior Trim Punch,1
9009,13392,Marsh Island,2795,medium,771707.0,7862,7862 Receive Cabinet Hardware Allocation,1
9010,13394,Peninsula Lakes,2154,medium,474879.0,8020,8020 Receive Interior Railing,1
9011,13281,Marlin Chase,3558,medium,786910.0,8020,8020 Receive Interior Railing,1
9012,13392,Marsh Island,2795,medium,771707.0,8260,8260 Install Interior Railing,1
9013,13035,Forest Hills,4024,medium,816522.0,8390,8390 Stone Interior Fireplace,2
9014,13501,Hailey's Glen,2736,medium,694771.0,8420,8420 1st Paint,1
9015,13030,Peninsula,5546,high,1768191.0,8420,8420 1st Paint,1
9016,13092,Marlin Chase,2079,medium,433351.0,8540,8540 Install Bath Accessories,1
9017,13152,Marlin Chase,2710,medium,768496.0,8540,8540 Install Bath Accessories,1
9018,13152,Marlin Chase,2710,medium,768496.0,8545,8545 Install Mirrors,1
9019,13092,Marlin Chase,2079,medium,433351.0,8545,8545 Install Mirrors,1
9020,13408,NewMarket,3940,medium,889253.0,8579,8579 Template Shower Enclosure,1
9021,13092,Marlin Chase,2079,medium,433351.0,8580,8580 Install Shower Enclosures,1
9022,13152,Marlin Chase,2710,medium,768496.0,8900,8900 Install Closet Shelving,1
9023,13440,Marlin Chase,3067,medium,714189.0,8940,8940 Plumbing Trim,1
9024,13136,Marlin Chase,3170,medium,806102.0,9060,9060 Final Electric Inspection,1
9025,13465,Cardinal Grove,1764,medium,569722.0,9060,9060 Final Electric Inspection,1
9026,13465,Cardinal Grove,1764,medium,569722.0,9101,9101 HVAC Startup,23
9027,13092,Marlin Chase,2079,medium,433351.0,9110,9110 Gas Trim,1
9028,13468,Governors,2977,medium,869889.0,9140,9140 2nd Stage Air Seal,1
9029,13349,Peninsula Lakes,2188,medium,442826.0,9140,9140 2nd Stage Air Seal,1
9030,13423,Governors,2974,medium,884692.0,9140,9140 2nd Stage Air Seal,1
9031,13476,Durham Farms,4277,medium,750956.0,9460,9460 Attic Insulation,7
9032,13394,Peninsula Lakes,2154,medium,474879.0,9460,9460 Attic Insulation,1
9033,13277,Mosaic,1704,medium,561869.0,9540,9540 Rec. GE Appliance Pkg1 Allocation,1
9034,13088,Forest Hills,3580,medium,222544.0,9540,9540 Rec. GE Appliance Pkg1 Allocation,1
9035,13088,Forest Hills,3580,medium,222544.0,9620,9620 Install Appliances,1
9036,13112,Marlin Chase,3171,medium,634940.0,9620,9620 Install Appliances,1
9037,13092,Marlin Chase,2079,medium,433351.0,9700,9700 Install Hardwood Flooring,1
9038,12920,Peninsula,4116,high,1454538.0,9755,9755 Rec. GE Appliance Pkg2 Allocation,1
9039,12920,Peninsula,4116,high,1454538.0,9756,9756 Receive N/S Appliance Pkg 2,1
9040,13278,Mosaic,2320,medium,818814.0,9820,9820 Install Gutters,1
9041,13277,Mosaic,1704,medium,561869.0,9820,9820 Install Gutters,1
9042,13501,Hailey's Glen,2736,medium,694771.0,9910,9910 Utility Grade,1
9043,12993,Peninsula,5996,high,750956.0,10140,10140 Sod Installation,1
9044,13477,Cardinal Grove,2589,medium,750956.0,10140,10140 Sod Installation,1
9045,13477,Cardinal Grove,2589,medium,750956.0,10180,10180 Shrub Installation,1
9046,13092,Marlin Chase,2079,medium,433351.0,10260,10260 Install House Numbers,1
9047,13152,Marlin Chase,2710,medium,768496.0,10300,10300 Install Driveway,1
9048,13144,Marlin Chase,3055,medium,740636.0,10300,10300 Install Driveway,1
9049,13465,Cardinal Grove,1764,medium,569722.0,10300,10300 Install Driveway,1
9050,13112,Marlin Chase,3171,medium,634940.0,10301,10301 Driveway Apron,1
9051,13112,Marlin Chase,3171,medium,634940.0,10340,10340 Install Leadwalk & Comm. Sidewalk,5
9052,13281,Marlin Chase,3558,medium,786910.0,10340,10340 Install Leadwalk & Comm. Sidewalk,1
9053,13471,Cardinal Grove,2233,medium,517387.0,10500,10500 Paint 2,4
9054,12920,Peninsula,4116,high,1454538.0,10501,10501 Paint Retouch,1
9055,12920,Peninsula,4116,high,1454538.0,10620,10620 Punch Out Allocation,1
9056,13264,Welches Pond,3905,medium,915363.0,10940,10940 Framing Retainage,1
9057,13462,Peninsula,4787,high,1490269.0,140,140 Framing DRAW 2,1
9058,13529,Governors,1901,medium,787652.0,2344,2344 Meter Pit Install,1
9059,13462,Peninsula,4787,high,1490269.0,4580,4580 Install Roofing,2
9060,13529,Governors,1901,medium,787652.0,4591,4591 Install Metal Roof Flashing,1
9061,13394,Peninsula Lakes,2154,medium,474879.0,4981,4981 Deliver Sinks,1
9062,13139,Marlin Chase,2554,medium,704067.0,5177,5177 Electric Meter Connection,1
9063,13145,Marlin Chase,3204,medium,841553.0,5177,5177 Electric Meter Connection,1
9064,13281,Marlin Chase,3558,medium,786910.0,5177,5177 Electric Meter Connection,1
9065,13175,Peninsula Lakes,2245,low,567645.0,5177,5177 Electric Meter Connection,1
9066,13140,Marlin Chase,2824,medium,766881.0,5177,5177 Electric Meter Connection,1
9067,13529,Governors,1901,medium,787652.0,5260,5260 Mechanical Rough Inspection,1
9068,13339,Peninsula,5583,high,750956.0,5260,5260 Mechanical Rough Inspection,1
9069,13495,Welches Pond,2650,medium,674167.0,5300,5300 Municipal Electric Inspection,1
9070,13529,Governors,1901,medium,787652.0,5580,5580 Structured Wiring Rough,1
9071,13164,Welches Pond,4497,medium,1024665.0,5820,5820 Framing Inspection,1
9072,13462,Peninsula,4787,high,1490269.0,5825,5825 Frame Punch,1
9073,13495,Welches Pond,2650,medium,674167.0,5900,5900 Air Seal,1
9074,12920,Peninsula,4116,high,1454538.0,6340,6340 Install Overhead Door,1
9075,13152,Marlin Chase,2710,medium,768496.0,6391,6391 Install Gas Meter,1
9076,13468,Governors,2977,medium,869889.0,6391,6391 Install Gas Meter,1
9077,13468,Governors,2977,medium,869889.0,7220,7220 Install Deck Skirting/Flower Boxes,1
9078,13394,Peninsula Lakes,2154,medium,474879.0,7300,7300 Receive Interior Trim,1
9079,13281,Marlin Chase,3558,medium,786910.0,7300,7300 Receive Interior Trim,1
9080,13281,Marlin Chase,3558,medium,786910.0,7304,7304 Receive Goodie Box,1
9081,13394,Peninsula Lakes,2154,medium,474879.0,7304,7304 Receive Goodie Box,1
9082,13501,Hailey's Glen,2736,medium,694771.0,7340,7340 Install Ceramic Tile,2
9083,13253,River Mill,2912,medium,692624.0,7340,7340 Install Ceramic Tile,2
9084,13030,Peninsula,5546,high,1768191.0,7340,7340 Install Ceramic Tile,4
9085,13030,Peninsula,5546,high,1768191.0,7350,7350 Install Shower Tile,17
9086,13394,Peninsula Lakes,2154,medium,474879.0,7700,7700 Receive Interior Doors,1
9087,13281,Marlin Chase,3558,medium,786910.0,7700,7700 Receive Interior Doors,1
9088,13020,Peninsula Lakes,2100,low,578095.0,7825,7825 Crawl Poly,1
9089,13092,Marlin Chase,2079,medium,433351.0,7825,7825 Crawl Poly,1
9090,13392,Marsh Island,2795,medium,771707.0,7860,7860 Install Interior Trim,2
9091,13281,Marlin Chase,3558,medium,786910.0,7862,7862 Receive Cabinet Hardware Allocation,1
9092,13394,Peninsula Lakes,2154,medium,474879.0,7862,7862 Receive Cabinet Hardware Allocation,1
9093,13035,Forest Hills,4024,medium,816522.0,7865,7865 Receive Door Hardware Allocation,1
9094,13394,Peninsula Lakes,2154,medium,474879.0,7866,7866 Receive Door Hardware,1
9095,13281,Marlin Chase,3558,medium,786910.0,7866,7866 Receive Door Hardware,1
9096,13281,Marlin Chase,3558,medium,786910.0,7900,7900 Receive Cabinets Allocation,1
9097,13394,Peninsula Lakes,2154,medium,474879.0,7900,7900 Receive Cabinets Allocation,1
9098,13394,Peninsula Lakes,2154,medium,474879.0,7901,7901 Cabinet Delivery Charges,1
9099,13281,Marlin Chase,3558,medium,786910.0,7901,7901 Cabinet Delivery Charges,1
9100,13281,Marlin Chase,3558,medium,786910.0,7940,7940 Receive Vanity Tops,1
9101,13394,Peninsula Lakes,2154,medium,474879.0,7940,7940 Receive Vanity Tops,1
9102,13030,Peninsula,5546,high,1768191.0,8020,8020 Receive Interior Railing,1
9103,13501,Hailey's Glen,2736,medium,694771.0,8020,8020 Receive Interior Railing,1
9104,13501,Hailey's Glen,2736,medium,694771.0,8220,8220 Install Fireplace Surround/Mantel,1
9105,13030,Peninsula,5546,high,1768191.0,8220,8220 Install Fireplace Surround/Mantel,1
9106,13394,Peninsula Lakes,2154,medium,474879.0,8260,8260 Install Interior Railing,1
9107,13281,Marlin Chase,3558,medium,786910.0,8260,8260 Install Interior Railing,1
9108,13465,Cardinal Grove,1764,medium,569722.0,8465,8465 Install Tiled Backsplash,1
9109,13035,Forest Hills,4024,medium,816522.0,8540,8540 Install Bath Accessories,1
9110,13035,Forest Hills,4024,medium,816522.0,8545,8545 Install Mirrors,1
9111,13401,Welches Pond,2927,medium,731557.0,8545,8545 Install Mirrors,1
9112,13035,Forest Hills,4024,medium,816522.0,8580,8580 Install Shower Enclosures,5
9113,13035,Forest Hills,4024,medium,816522.0,8900,8900 Install Closet Shelving,1
9114,13401,Welches Pond,2927,medium,731557.0,8900,8900 Install Closet Shelving,1
9115,13112,Marlin Chase,3171,medium,634940.0,8920,8920 Install Water Heater/1st Trim,1
9116,12920,Peninsula,4116,high,1454538.0,8980,8980 Final Plumbing Inspection,1
9117,13277,Mosaic,1704,medium,561869.0,9020,9020 Electric Trim,3
9118,13020,Peninsula Lakes,2100,low,578095.0,9101,9101 HVAC Startup,1
9119,13278,Mosaic,2320,medium,818814.0,9101,9101 HVAC Startup,16
9120,13152,Marlin Chase,2710,medium,768496.0,9101,9101 HVAC Startup,1
9121,13440,Marlin Chase,3067,medium,714189.0,9101,9101 HVAC Startup,1
9122,13136,Marlin Chase,3170,medium,806102.0,9101,9101 HVAC Startup,1
9123,13144,Marlin Chase,3055,medium,740636.0,9110,9110 Gas Trim,1
9124,13503,Marsh Island,4307,medium,892519.0,9140,9140 2nd Stage Air Seal,1
9125,13496,Hailey's Glen,3443,medium,316917.0,9380,9380 Install Irrigation Well,1
9126,13397,Peninsula,5533,high,750956.0,9390,9390 Install Water Meter/Sewer Frame,1
9127,13349,Peninsula Lakes,2188,medium,442826.0,9460,9460 Attic Insulation,1
9128,13468,Governors,2977,medium,869889.0,9460,9460 Attic Insulation,1
9129,13277,Mosaic,1704,medium,561869.0,9620,9620 Install Appliances,1
9130,13092,Marlin Chase,2079,medium,433351.0,9660,9660 Install Carpet Flooring,1
9131,13101,Marlin Chase,2461,medium,682900.0,9660,9660 Install Carpet Flooring,1
9132,13145,Marlin Chase,3204,medium,841553.0,9860,9860 Final Utility Connection,1
9133,13137,Marlin Chase,2330,medium,637264.0,9860,9860 Final Utility Connection,0
9134,13140,Marlin Chase,2824,medium,766881.0,9860,9860 Final Utility Connection,0
9135,13152,Marlin Chase,2710,medium,768496.0,9860,9860 Final Utility Connection,0
9136,13113,Marlin Chase,2814,medium,750956.0,9860,9860 Final Utility Connection,1
9137,13175,Peninsula Lakes,2245,low,567645.0,9860,9860 Final Utility Connection,0
9138,13281,Marlin Chase,3558,medium,786910.0,9860,9860 Final Utility Connection,0
9139,13397,Peninsula,5533,high,750956.0,9900,9900 Water Lateral,1
9140,13397,Peninsula,5533,high,750956.0,9905,9905 Sewer Lateral,1
9141,13360,Peninsula Lakes,3496,medium,575090.0,9910,9910 Utility Grade,1
9142,12993,Peninsula,5996,high,750956.0,9940,9940 Final Inspection,1
9143,13440,Marlin Chase,3067,medium,714189.0,9980,9980 Final Cleaning,1
9144,13465,Cardinal Grove,1764,medium,569722.0,10020,10020 Final Grade,1
9145,13092,Marlin Chase,2079,medium,433351.0,10020,10020 Final Grade,1
9146,13468,Governors,2977,medium,869889.0,10110,10110 Hardscape Installation,5
9147,13035,Forest Hills,4024,medium,816522.0,10260,10260 Install House Numbers,1
9148,13360,Peninsula Lakes,3496,medium,575090.0,10300,10300 Install Driveway,1
9149,13120,Marsh Island,4291,medium,851477.0,10301,10301 Driveway Apron,1
9150,13120,Marsh Island,4291,medium,851477.0,10340,10340 Install Leadwalk & Comm. Sidewalk,1
9151,13281,Marlin Chase,3558,medium,786910.0,10345,10345 Pour Concrete Steps,1
9152,13465,Cardinal Grove,1764,medium,569722.0,10380,10380 As Built Survey,1
9153,13175,Peninsula Lakes,2245,low,567645.0,10380,10380 As Built Survey,1
9154,13020,Peninsula Lakes,2100,low,578095.0,10380,10380 As Built Survey,1
9155,13440,Marlin Chase,3067,medium,714189.0,10380,10380 As Built Survey,1
9156,13476,Durham Farms,4277,medium,750956.0,10460,10460 Drywall Touch Up,2
9157,13164,Welches Pond,4497,medium,1024665.0,10940,10940 Framing Retainage,1
9158,13339,Peninsula,5583,high,750956.0,10940,10940 Framing Retainage,1
9159,13020,Peninsula Lakes,2100,low,578095.0,0,cabcheck Check Cabinets for Damage,1
9160,13394,Peninsula Lakes,2154,medium,474879.0,4590,4590 Install Metal Roofing,1
9161,13423,Governors,2974,medium,884692.0,4590,4590 Install Metal Roofing,5
9162,13349,Peninsula Lakes,2188,medium,442826.0,4590,4590 Install Metal Roofing,1
9163,13392,Marsh Island,2795,medium,771707.0,4590,4590 Install Metal Roofing,1
9164,13495,Welches Pond,2650,medium,674167.0,4700,4700 Internal Framing Inspection,1
9165,13030,Peninsula,5546,high,1768191.0,4981,4981 Deliver Sinks,1
9166,13520,Hailey's Glen,2792,medium,606920.0,5177,5177 Electric Meter Connection,1
9167,13101,Marlin Chase,2461,medium,682900.0,5177,5177 Electric Meter Connection,1
9168,13144,Marlin Chase,3055,medium,740636.0,5177,5177 Electric Meter Connection,1
9169,13495,Welches Pond,2650,medium,674167.0,5820,5820 Framing Inspection,1
9170,13529,Governors,1901,medium,787652.0,5900,5900 Air Seal,1
9171,13520,Hailey's Glen,2792,medium,606920.0,6180,6180 Install Insulation,1
9172,13164,Welches Pond,4497,medium,1024665.0,6180,6180 Install Insulation,2
9173,13264,Welches Pond,3905,medium,915363.0,6300,6300 Energy Inspection,1
9174,13258,River Mill,3064,medium,670416.0,6340,6340 Install Overhead Door,1
9175,13264,Welches Pond,3905,medium,915363.0,6345,6345 Stock Drywall,1
9176,13423,Governors,2974,medium,884692.0,6391,6391 Install Gas Meter,1
9177,13520,Hailey's Glen,2792,medium,606920.0,6620,6620 Receive Vinyl Siding,1
9178,13520,Hailey's Glen,2792,medium,606920.0,6700,6700 Receive Composite Ext Trim,1
9179,13520,Hailey's Glen,2792,medium,606920.0,6720,6720 Receive Siding Accents,1
9180,13520,Hailey's Glen,2792,medium,606920.0,6740,6740 Receive PVC Exterior Trim,1
9181,13520,Hailey's Glen,2792,medium,606920.0,6781,6781 Receive Column Wrap/Flower Bx/Pediment,1
9182,13520,Hailey's Glen,2792,medium,606920.0,6820,6820 Receive Deck Skirting,1
9183,13392,Marsh Island,2795,medium,771707.0,6884,6884 Measure Screen Porch Enclosure,1
9184,13507,Welches Pond,2852,medium,845914.0,6885,6885 Install Screen Porch Enclosure,8
9185,13091,Marlin Chase,2591,medium,562928.0,6885,6885 Install Screen Porch Enclosure,1
9186,13471,Cardinal Grove,2233,medium,517387.0,6885,6885 Install Screen Porch Enclosure,1
9187,13468,Governors,2977,medium,869889.0,7140,7140 Exterior Painting,9
9188,13392,Marsh Island,2795,medium,771707.0,7220,7220 Install Deck Skirting/Flower Boxes,1
9189,13423,Governors,2974,medium,884692.0,7220,7220 Install Deck Skirting/Flower Boxes,1
9190,13501,Hailey's Glen,2736,medium,694771.0,7300,7300 Receive Interior Trim,1
9191,13030,Peninsula,5546,high,1768191.0,7300,7300 Receive Interior Trim,1
9192,13030,Peninsula,5546,high,1768191.0,7304,7304 Receive Goodie Box,1
9193,13501,Hailey's Glen,2736,medium,694771.0,7304,7304 Receive Goodie Box,1
9194,13030,Peninsula,5546,high,1768191.0,7380,7380 Install Vinyl Floors,1
9195,13030,Peninsula,5546,high,1768191.0,7700,7700 Receive Interior Doors,1
9196,13501,Hailey's Glen,2736,medium,694771.0,7700,7700 Receive Interior Doors,1
9197,13175,Peninsula Lakes,2245,low,567645.0,7825,7825 Crawl Poly,1
9198,13394,Peninsula Lakes,2154,medium,474879.0,7860,7860 Install Interior Trim,2
9199,13281,Marlin Chase,3558,medium,786910.0,7860,7860 Install Interior Trim,2
9200,13501,Hailey's Glen,2736,medium,694771.0,7862,7862 Receive Cabinet Hardware Allocation,1
9201,13030,Peninsula,5546,high,1768191.0,7862,7862 Receive Cabinet Hardware Allocation,1
9202,13030,Peninsula,5546,high,1768191.0,7866,7866 Receive Door Hardware,1
9203,13501,Hailey's Glen,2736,medium,694771.0,7866,7866 Receive Door Hardware,1
9204,13501,Hailey's Glen,2736,medium,694771.0,7900,7900 Receive Cabinets Allocation,1
9205,13030,Peninsula,5546,high,1768191.0,7900,7900 Receive Cabinets Allocation,1
9206,13030,Peninsula,5546,high,1768191.0,7901,7901 Cabinet Delivery Charges,1
9207,13501,Hailey's Glen,2736,medium,694771.0,7901,7901 Cabinet Delivery Charges,1
9208,13501,Hailey's Glen,2736,medium,694771.0,7940,7940 Receive Vanity Tops,1
9209,13030,Peninsula,5546,high,1768191.0,7940,7940 Receive Vanity Tops,1
9210,13030,Peninsula,5546,high,1768191.0,8260,8260 Install Interior Railing,1
9211,13281,Marlin Chase,3558,medium,786910.0,8300,8300 Install Cabinets,2
9212,13112,Marlin Chase,3171,medium,634940.0,8465,8465 Install Tiled Backsplash,2
9213,13020,Peninsula Lakes,2100,low,578095.0,8540,8540 Install Bath Accessories,1
9214,13020,Peninsula Lakes,2100,low,578095.0,8580,8580 Install Shower Enclosures,1
9215,13152,Marlin Chase,2710,medium,768496.0,8580,8580 Install Shower Enclosures,1
9216,13020,Peninsula Lakes,2100,low,578095.0,8900,8900 Install Closet Shelving,1
9217,13092,Marlin Chase,2079,medium,433351.0,8940,8940 Plumbing Trim,1
9218,13139,Marlin Chase,2554,medium,704067.0,9101,9101 HVAC Startup,1
9219,13145,Marlin Chase,3204,medium,841553.0,9101,9101 HVAC Startup,1
9220,13140,Marlin Chase,2824,medium,766881.0,9101,9101 HVAC Startup,1
9221,13113,Marlin Chase,2814,medium,750956.0,9101,9101 HVAC Startup,1
9222,13442,Walden,4633,medium,656370.0,9140,9140 2nd Stage Air Seal,1
9223,13277,Mosaic,1704,medium,561869.0,9260,9260 Structured Wiring Trim,1
9224,13503,Marsh Island,4307,medium,892519.0,9380,9380 Install Irrigation Well,1
9225,13423,Governors,2974,medium,884692.0,9460,9460 Attic Insulation,1
9226,13112,Marlin Chase,3171,medium,634940.0,9540,9540 Rec. GE Appliance Pkg1 Allocation,1
9227,13392,Marsh Island,2795,medium,771707.0,9540,9540 Rec. GE Appliance Pkg1 Allocation,1
9228,13392,Marsh Island,2795,medium,771707.0,9620,9620 Install Appliances,1
9229,13152,Marlin Chase,2710,medium,768496.0,9700,9700 Install Hardwood Flooring,1
9230,13113,Marlin Chase,2814,medium,750956.0,9700,9700 Install Hardwood Flooring,1
9231,13440,Marlin Chase,3067,medium,714189.0,9700,9700 Install Hardwood Flooring,1
9232,13136,Marlin Chase,3170,medium,806102.0,9700,9700 Install Hardwood Flooring,1
9233,13020,Peninsula Lakes,2100,low,578095.0,9700,9700 Install Hardwood Flooring,1
9234,13020,Peninsula Lakes,2100,low,578095.0,9740,9740 Fireplace Start Up,1
9235,13440,Marlin Chase,3067,medium,714189.0,9740,9740 Fireplace Start Up,1
9236,13468,Governors,2977,medium,869889.0,9820,9820 Install Gutters,1
9237,13423,Governors,2974,medium,884692.0,9820,9820 Install Gutters,13
9238,13138,Marlin Chase,3171,medium,859133.0,9860,9860 Final Utility Connection,0
9239,13020,Peninsula Lakes,2100,low,578095.0,9860,9860 Final Utility Connection,0
9240,13496,Hailey's Glen,3443,medium,316917.0,9900,9900 Water Lateral,1
9241,12920,Peninsula,4116,high,1454538.0,9980,9980 Final Cleaning,1
9242,13465,Cardinal Grove,1764,medium,569722.0,9990,9990 2nd Stage Termite Treatment,1
9243,13465,Cardinal Grove,1764,medium,569722.0,10100,10100 Irrigation Installation,1
9244,13360,Peninsula Lakes,3496,medium,575090.0,10220,10220 Install Mailbox,1
9245,13020,Peninsula Lakes,2100,low,578095.0,10260,10260 Install House Numbers,1
9246,13120,Marsh Island,4291,medium,851477.0,10300,10300 Install Driveway,1
9247,13088,Forest Hills,3580,medium,222544.0,10460,10460 Drywall Touch Up,2
9248,13440,Marlin Chase,3067,medium,714189.0,10501,10501 Paint Retouch,1
9249,13440,Marlin Chase,3067,medium,714189.0,10620,10620 Punch Out Allocation,1
9250,13175,Peninsula Lakes,2245,low,567645.0,0,cabcheck Check Cabinets for Damage,1
9251,12920,Peninsula,4116,high,1454538.0,0,appcheck Check Appliances for Damage,1
9252,13507,Welches Pond,2852,medium,845914.0,0,vancheck Check Vanity Tops/Windows for Damage,1
9253,13462,Peninsula,4787,high,1490269.0,3,3 TRADES START,1
9254,13264,Welches Pond,3905,medium,915363.0,3140,3140 Pour Porch Slab,1
9255,13397,Peninsula,5533,high,750956.0,4260,4260 Receive Windows,1
9256,13462,Peninsula,4787,high,1490269.0,4585,4585 Install Membrane Roofing,2
9257,13281,Marlin Chase,3558,medium,786910.0,4590,4590 Install Metal Roofing,1
9258,13462,Peninsula,4787,high,1490269.0,4591,4591 Install Metal Roof Flashing,1
9259,13529,Governors,1901,medium,787652.0,4700,4700 Internal Framing Inspection,1
9260,13462,Peninsula,4787,high,1490269.0,5100,5100 HVAC Rough,4
9261,13360,Peninsula Lakes,3496,medium,575090.0,5177,5177 Electric Meter Connection,1
9262,13137,Marlin Chase,2330,medium,637264.0,5177,5177 Electric Meter Connection,1
9263,13397,Peninsula,5533,high,750956.0,5740,5740 Install Gas Lines,1
9264,13520,Hailey's Glen,2792,medium,606920.0,6300,6300 Energy Inspection,1
9265,13423,Governors,2974,medium,884692.0,6340,6340 Install Overhead Door,22
9266,13468,Governors,2977,medium,869889.0,6340,6340 Install Overhead Door,22
9267,13520,Hailey's Glen,2792,medium,606920.0,6345,6345 Stock Drywall,1
9268,13264,Welches Pond,3905,medium,915363.0,6380,6380 Install Drywall,9
9269,13281,Marlin Chase,3558,medium,786910.0,6391,6391 Install Gas Meter,1
9270,13264,Welches Pond,3905,medium,915363.0,6620,6620 Receive Vinyl Siding,1
9271,13264,Welches Pond,3905,medium,915363.0,6700,6700 Receive Composite Ext Trim,1
9272,13264,Welches Pond,3905,medium,915363.0,6705,6705 Receive Trellis Material,1
9273,13264,Welches Pond,3905,medium,915363.0,6720,6720 Receive Siding Accents,1
9274,13264,Welches Pond,3905,medium,915363.0,6721,6721 Receive Brackets,1
9275,13264,Welches Pond,3905,medium,915363.0,6725,6725 Receive Shutters,1
9276,13264,Welches Pond,3905,medium,915363.0,6740,6740 Receive PVC Exterior Trim,1
9277,13264,Welches Pond,3905,medium,915363.0,6781,6781 Receive Column Wrap/Flower Bx/Pediment,1
9278,13264,Welches Pond,3905,medium,915363.0,6820,6820 Receive Deck Skirting,1
9279,13520,Hailey's Glen,2792,medium,606920.0,6860,6860 Siding Installation,5
9280,13281,Marlin Chase,3558,medium,786910.0,6884,6884 Measure Screen Porch Enclosure,1
9281,13423,Governors,2974,medium,884692.0,7140,7140 Exterior Painting,8
9282,13423,Governors,2974,medium,884692.0,7180,7180 Install Exterior Railings,7
9283,13468,Governors,2977,medium,869889.0,7180,7180 Install Exterior Railings,6
9284,13281,Marlin Chase,3558,medium,786910.0,7220,7220 Install Deck Skirting/Flower Boxes,1
9285,13253,River Mill,2912,medium,692624.0,7350,7350 Install Shower Tile,3
9286,13137,Marlin Chase,2330,medium,637264.0,7825,7825 Crawl Poly,1
9287,13152,Marlin Chase,2710,medium,768496.0,7825,7825 Crawl Poly,1
9288,13501,Hailey's Glen,2736,medium,694771.0,7860,7860 Install Interior Trim,2
9289,13030,Peninsula,5546,high,1768191.0,7860,7860 Install Interior Trim,8
9290,13394,Peninsula Lakes,2154,medium,474879.0,8300,8300 Install Cabinets,2
9291,13468,Governors,2977,medium,869889.0,8420,8420 1st Paint,1
9292,13423,Governors,2974,medium,884692.0,8420,8420 1st Paint,1
9293,13349,Peninsula Lakes,2188,medium,442826.0,8420,8420 1st Paint,1
9294,13503,Marsh Island,4307,medium,892519.0,8420,8420 1st Paint,1
9295,13258,River Mill,3064,medium,670416.0,8420,8420 1st Paint,1
9296,13507,Welches Pond,2852,medium,845914.0,8460,8460 Install Countertops,7
9297,13035,Forest Hills,4024,medium,816522.0,8465,8465 Install Tiled Backsplash,13
9298,13394,Peninsula Lakes,2154,medium,474879.0,8579,8579 Template Shower Enclosure,1
9299,13091,Marlin Chase,2591,medium,562928.0,8920,8920 Install Water Heater/1st Trim,1
9300,13278,Mosaic,2320,medium,818814.0,8940,8940 Plumbing Trim,1
9301,13092,Marlin Chase,2079,medium,433351.0,8980,8980 Final Plumbing Inspection,1
9302,13101,Marlin Chase,2461,medium,682900.0,8980,8980 Final Plumbing Inspection,1
9303,13092,Marlin Chase,2079,medium,433351.0,9060,9060 Final Electric Inspection,1
9304,13101,Marlin Chase,2461,medium,682900.0,9060,9060 Final Electric Inspection,1
9305,13440,Marlin Chase,3067,medium,714189.0,9060,9060 Final Electric Inspection,1
9306,13101,Marlin Chase,2461,medium,682900.0,9101,9101 HVAC Startup,1
9307,13137,Marlin Chase,2330,medium,637264.0,9101,9101 HVAC Startup,1
9308,13138,Marlin Chase,3171,medium,859133.0,9101,9101 HVAC Startup,1
9309,13144,Marlin Chase,3055,medium,740636.0,9101,9101 HVAC Startup,1
9310,13175,Peninsula Lakes,2245,low,567645.0,9101,9101 HVAC Startup,1
9311,13442,Walden,4633,medium,656370.0,9460,9460 Attic Insulation,1
9312,12920,Peninsula,4116,high,1454538.0,9500,9500 Blower Door/Ductblaster,1
9313,13281,Marlin Chase,3558,medium,786910.0,9620,9620 Install Appliances,1
9314,13440,Marlin Chase,3067,medium,714189.0,9660,9660 Install Carpet Flooring,1
9315,13136,Marlin Chase,3170,medium,806102.0,9660,9660 Install Carpet Flooring,1
9316,13145,Marlin Chase,3204,medium,841553.0,9660,9660 Install Carpet Flooring,1
9317,13137,Marlin Chase,2330,medium,637264.0,9660,9660 Install Carpet Flooring,1
9318,13152,Marlin Chase,2710,medium,768496.0,9660,9660 Install Carpet Flooring,1
9319,13113,Marlin Chase,2814,medium,750956.0,9660,9660 Install Carpet Flooring,1
9320,13138,Marlin Chase,3171,medium,859133.0,9700,9700 Install Hardwood Flooring,1
9321,13140,Marlin Chase,2824,medium,766881.0,9700,9700 Install Hardwood Flooring,1
9322,13175,Peninsula Lakes,2245,low,567645.0,9700,9700 Install Hardwood Flooring,1
9323,13139,Marlin Chase,2554,medium,704067.0,9700,9700 Install Hardwood Flooring,1
9324,13144,Marlin Chase,3055,medium,740636.0,9740,9740 Fireplace Start Up,1
9325,13501,Hailey's Glen,2736,medium,694771.0,9820,9820 Install Gutters,1
9326,13465,Cardinal Grove,1764,medium,569722.0,10140,10140 Sod Installation,1
9327,13465,Cardinal Grove,1764,medium,569722.0,10180,10180 Shrub Installation,1
9328,13264,Welches Pond,3905,medium,915363.0,10345,10345 Pour Concrete Steps,1
9329,12993,Peninsula,5996,high,750956.0,10420,10420 Powerwash,1
9330,13392,Marsh Island,2795,medium,771707.0,10460,10460 Drywall Touch Up,2
9331,13476,Durham Farms,4277,medium,750956.0,10500,10500 Paint 2,3
9332,13495,Welches Pond,2650,medium,674167.0,10940,10940 Framing Retainage,1
9333,13397,Peninsula,5533,high,750956.0,4300,4300 Receive Window/Door Flashings,1
9334,13397,Peninsula,5533,high,750956.0,4340,4340 Receive Exterior Doors,1
9335,13397,Peninsula,5533,high,750956.0,4461,4461 Install Gas Lateral,1
9336,13397,Peninsula,5533,high,750956.0,4540,4540 Install Windows,2
9337,13088,Forest Hills,3580,medium,222544.0,4590,4590 Install Metal Roofing,5
9338,13397,Peninsula,5533,high,750956.0,4701,4701 Frame Check,1
9339,13397,Peninsula,5533,high,750956.0,4940,4940 Install Fireplace,1
9340,13496,Hailey's Glen,3443,medium,316917.0,5177,5177 Electric Meter Connection,1
9341,13485,Peninsula,4241,medium,706147.0,5177,5177 Electric Meter Connection,1
9342,13529,Governors,1901,medium,787652.0,5300,5300 Municipal Electric Inspection,1
9343,13339,Peninsula,5583,high,750956.0,5820,5820 Framing Inspection,1
9344,13388,Marsh Island,5848,high,750956.0,5820,5820 Framing Inspection,1
9345,13495,Welches Pond,2650,medium,674167.0,6180,6180 Install Insulation,2
9346,13164,Welches Pond,4497,medium,1024665.0,6300,6300 Energy Inspection,1
9347,13442,Walden,4633,medium,656370.0,6340,6340 Install Overhead Door,16
9348,13164,Welches Pond,4497,medium,1024665.0,6345,6345 Stock Drywall,1
9349,13520,Hailey's Glen,2792,medium,606920.0,6380,6380 Install Drywall,10
9350,13020,Peninsula Lakes,2100,low,578095.0,6381,6381 Drywall Punch,1
9351,13092,Marlin Chase,2079,medium,433351.0,6381,6381 Drywall Punch,1
9352,13164,Welches Pond,4497,medium,1024665.0,6620,6620 Receive Vinyl Siding,1
9353,13164,Welches Pond,4497,medium,1024665.0,6700,6700 Receive Composite Ext Trim,1
9354,13164,Welches Pond,4497,medium,1024665.0,6720,6720 Receive Siding Accents,1
9355,13164,Welches Pond,4497,medium,1024665.0,6725,6725 Receive Shutters,1
9356,13164,Welches Pond,4497,medium,1024665.0,6740,6740 Receive PVC Exterior Trim,1
9357,13164,Welches Pond,4497,medium,1024665.0,6820,6820 Receive Deck Skirting,1
9358,13264,Welches Pond,3905,medium,915363.0,6860,6860 Siding Installation,5
9359,13281,Marlin Chase,3558,medium,786910.0,7140,7140 Exterior Painting,1
9360,13258,River Mill,3064,medium,670416.0,7300,7300 Receive Interior Trim,1
9361,13258,River Mill,3064,medium,670416.0,7304,7304 Receive Goodie Box,1
9362,13503,Marsh Island,4307,medium,892519.0,7340,7340 Install Ceramic Tile,2
9363,13468,Governors,2977,medium,869889.0,7340,7340 Install Ceramic Tile,9
9364,13423,Governors,2974,medium,884692.0,7340,7340 Install Ceramic Tile,6
9365,13349,Peninsula Lakes,2188,medium,442826.0,7340,7340 Install Ceramic Tile,2
9366,13423,Governors,2974,medium,884692.0,7350,7350 Install Shower Tile,12
9367,13501,Hailey's Glen,2736,medium,694771.0,7350,7350 Install Shower Tile,3
9368,13349,Peninsula Lakes,2188,medium,442826.0,7350,7350 Install Shower Tile,3
9369,13468,Governors,2977,medium,869889.0,7350,7350 Install Shower Tile,13
9370,13503,Marsh Island,4307,medium,892519.0,7350,7350 Install Shower Tile,6
9371,13349,Peninsula Lakes,2188,medium,442826.0,7380,7380 Install Vinyl Floors,1
9372,13258,River Mill,3064,medium,670416.0,7700,7700 Receive Interior Doors,1
9373,13138,Marlin Chase,3171,medium,859133.0,7825,7825 Crawl Poly,1
9374,13139,Marlin Chase,2554,medium,704067.0,7825,7825 Crawl Poly,1
9375,13136,Marlin Chase,3170,medium,806102.0,7861,7861 Interior Trim Punch,1
9376,13175,Peninsula Lakes,2245,low,567645.0,7861,7861 Interior Trim Punch,1
9377,13020,Peninsula Lakes,2100,low,578095.0,7861,7861 Interior Trim Punch,1
9378,13423,Governors,2974,medium,884692.0,8020,8020 Receive Interior Railing,1
9379,13349,Peninsula Lakes,2188,medium,442826.0,8020,8020 Receive Interior Railing,1
9380,13503,Marsh Island,4307,medium,892519.0,8020,8020 Receive Interior Railing,1
9381,13258,River Mill,3064,medium,670416.0,8020,8020 Receive Interior Railing,1
9382,13468,Governors,2977,medium,869889.0,8020,8020 Receive Interior Railing,1
9383,13468,Governors,2977,medium,869889.0,8220,8220 Install Fireplace Surround/Mantel,1
9384,13423,Governors,2974,medium,884692.0,8220,8220 Install Fireplace Surround/Mantel,1
9385,13349,Peninsula Lakes,2188,medium,442826.0,8220,8220 Install Fireplace Surround/Mantel,1
9386,13258,River Mill,3064,medium,670416.0,8260,8260 Install Interior Railing,1
9387,13501,Hailey's Glen,2736,medium,694771.0,8300,8300 Install Cabinets,2
9388,13442,Walden,4633,medium,656370.0,8420,8420 1st Paint,1
9389,13408,NewMarket,3940,medium,889253.0,8460,8460 Install Countertops,1
9390,13471,Cardinal Grove,2233,medium,517387.0,8460,8460 Install Countertops,1
9391,13175,Peninsula Lakes,2245,low,567645.0,8540,8540 Install Bath Accessories,1
9392,13137,Marlin Chase,2330,medium,637264.0,8540,8540 Install Bath Accessories,1
9393,13144,Marlin Chase,3055,medium,740636.0,8540,8540 Install Bath Accessories,1
9394,13091,Marlin Chase,2591,medium,562928.0,8540,8540 Install Bath Accessories,1
9395,13137,Marlin Chase,2330,medium,637264.0,8545,8545 Install Mirrors,1
9396,13144,Marlin Chase,3055,medium,740636.0,8545,8545 Install Mirrors,1
9397,13175,Peninsula Lakes,2245,low,567645.0,8545,8545 Install Mirrors,1
9398,13020,Peninsula Lakes,2100,low,578095.0,8545,8545 Install Mirrors,1
9399,13392,Marsh Island,2795,medium,771707.0,8579,8579 Template Shower Enclosure,1
9400,13175,Peninsula Lakes,2245,low,567645.0,8580,8580 Install Shower Enclosures,1
9401,13137,Marlin Chase,2330,medium,637264.0,8580,8580 Install Shower Enclosures,1
9402,13144,Marlin Chase,3055,medium,740636.0,8580,8580 Install Shower Enclosures,1
9403,13137,Marlin Chase,2330,medium,637264.0,8900,8900 Install Closet Shelving,1
9404,13138,Marlin Chase,3171,medium,859133.0,8900,8900 Install Closet Shelving,1
9405,13144,Marlin Chase,3055,medium,740636.0,8900,8900 Install Closet Shelving,1
9406,13091,Marlin Chase,2591,medium,562928.0,8900,8900 Install Closet Shelving,1
9407,13175,Peninsula Lakes,2245,low,567645.0,8900,8900 Install Closet Shelving,1
9408,13507,Welches Pond,2852,medium,845914.0,8920,8920 Install Water Heater/1st Trim,1
9409,13152,Marlin Chase,2710,medium,768496.0,8940,8940 Plumbing Trim,1
9410,13136,Marlin Chase,3170,medium,806102.0,8940,8940 Plumbing Trim,1
9411,13035,Forest Hills,4024,medium,816522.0,8940,8940 Plumbing Trim,1
9412,13020,Peninsula Lakes,2100,low,578095.0,8980,8980 Final Plumbing Inspection,1
9413,13507,Welches Pond,2852,medium,845914.0,9020,9020 Electric Trim,6
9414,13471,Cardinal Grove,2233,medium,517387.0,9020,9020 Electric Trim,2
9415,13138,Marlin Chase,3171,medium,859133.0,9060,9060 Final Electric Inspection,1
9416,13112,Marlin Chase,3171,medium,634940.0,9060,9060 Final Electric Inspection,1
9417,13145,Marlin Chase,3204,medium,841553.0,9060,9060 Final Electric Inspection,1
9418,13471,Cardinal Grove,2233,medium,517387.0,9100,9100 HVAC Trim / Set Unit,1
9419,13507,Welches Pond,2852,medium,845914.0,9100,9100 HVAC Trim / Set Unit,1
9420,13277,Mosaic,1704,medium,561869.0,9101,9101 HVAC Startup,1
9421,13278,Mosaic,2320,medium,818814.0,9110,9110 Gas Trim,1
9422,13258,River Mill,3064,medium,670416.0,9140,9140 2nd Stage Air Seal,1
9423,13496,Hailey's Glen,3443,medium,316917.0,9140,9140 2nd Stage Air Seal,1
9424,13471,Cardinal Grove,2233,medium,517387.0,9260,9260 Structured Wiring Trim,1
9425,13503,Marsh Island,4307,medium,892519.0,9460,9460 Attic Insulation,1
9426,13091,Marlin Chase,2591,medium,562928.0,9460,9460 Attic Insulation,1
9427,13092,Marlin Chase,2079,medium,433351.0,9500,9500 Blower Door/Ductblaster,1
9428,13501,Hailey's Glen,2736,medium,694771.0,9540,9540 Rec. GE Appliance Pkg1 Allocation,1
9429,13501,Hailey's Glen,2736,medium,694771.0,9620,9620 Install Appliances,1
9430,13138,Marlin Chase,3171,medium,859133.0,9660,9660 Install Carpet Flooring,1
9431,13140,Marlin Chase,2824,medium,766881.0,9660,9660 Install Carpet Flooring,1
9432,13139,Marlin Chase,2554,medium,704067.0,9660,9660 Install Carpet Flooring,1
9433,13144,Marlin Chase,3055,medium,740636.0,9700,9700 Install Hardwood Flooring,1
9434,13112,Marlin Chase,3171,medium,634940.0,9700,9700 Install Hardwood Flooring,1
9435,13092,Marlin Chase,2079,medium,433351.0,9740,9740 Fireplace Start Up,1
9436,13020,Peninsula Lakes,2100,low,578095.0,9755,9755 Rec. GE Appliance Pkg2 Allocation,1
9437,13144,Marlin Chase,3055,medium,740636.0,9860,9860 Final Utility Connection,0
9438,13138,Marlin Chase,3171,medium,859133.0,10260,10260 Install House Numbers,1
9439,13144,Marlin Chase,3055,medium,740636.0,10260,10260 Install House Numbers,1
9440,13091,Marlin Chase,2591,medium,562928.0,10260,10260 Install House Numbers,1
9441,13175,Peninsula Lakes,2245,low,567645.0,10260,10260 Install House Numbers,1
9442,13137,Marlin Chase,2330,medium,637264.0,10260,10260 Install House Numbers,1
9443,13394,Peninsula Lakes,2154,medium,474879.0,10460,10460 Drywall Touch Up,2
9444,13281,Marlin Chase,3558,medium,786910.0,10460,10460 Drywall Touch Up,2
9445,13088,Forest Hills,3580,medium,222544.0,10500,10500 Paint 2,3
9446,12993,Peninsula,5996,high,750956.0,10660,10660 Quality Inspection,1
9447,13529,Governors,1901,medium,787652.0,10940,10940 Framing Retainage,1
9448,13476,Durham Farms,4277,medium,750956.0,0,vancheck Check Vanity Tops/Windows for Damage,1
9449,13120,Marsh Island,4291,medium,851477.0,0,cabcheck Check Cabinets for Damage,1
9450,13394,Peninsula Lakes,2154,medium,474879.0,4542,4542 Measure/Order Window Coverings,1
9451,13503,Marsh Island,4307,medium,892519.0,4590,4590 Install Metal Roofing,1
9452,13503,Marsh Island,4307,medium,892519.0,4981,4981 Deliver Sinks,1
9453,13468,Governors,2977,medium,869889.0,4981,4981 Deliver Sinks,1
9454,13423,Governors,2974,medium,884692.0,4981,4981 Deliver Sinks,1
9455,13349,Peninsula Lakes,2188,medium,442826.0,4981,4981 Deliver Sinks,1
9456,13462,Peninsula,4787,high,1490269.0,5120,5120 HVAC Set Furnace,1
9457,13120,Marsh Island,4291,medium,851477.0,5177,5177 Electric Meter Connection,1
9458,13394,Peninsula Lakes,2154,medium,474879.0,5177,5177 Electric Meter Connection,1
9459,13253,River Mill,2912,medium,692624.0,5177,5177 Electric Meter Connection,1
9460,13349,Peninsula Lakes,2188,medium,442826.0,5177,5177 Electric Meter Connection,1
9461,13397,Peninsula,5533,high,750956.0,5180,5180 Electric Rough,4
9462,13529,Governors,1901,medium,787652.0,5820,5820 Framing Inspection,1
9463,13397,Peninsula,5533,high,750956.0,5825,5825 Frame Punch,1
9464,13339,Peninsula,5583,high,750956.0,6180,6180 Install Insulation,2
9465,13388,Marsh Island,5848,high,750956.0,6180,6180 Install Insulation,2
9466,13277,Mosaic,1704,medium,561869.0,6340,6340 Install Overhead Door,1
9467,13278,Mosaic,2320,medium,818814.0,6340,6340 Install Overhead Door,1
9468,13120,Marsh Island,4291,medium,851477.0,6340,6340 Install Overhead Door,1
9469,13164,Welches Pond,4497,medium,1024665.0,6380,6380 Install Drywall,7
9470,13136,Marlin Chase,3170,medium,806102.0,6381,6381 Drywall Punch,1
9471,13397,Peninsula,5533,high,750956.0,6390,6390 Schedule Gas Meter,1
9472,13164,Welches Pond,4497,medium,1024665.0,6860,6860 Siding Installation,12
9473,13278,Mosaic,2320,medium,818814.0,6884,6884 Measure Screen Porch Enclosure,1
9474,13120,Marsh Island,4291,medium,851477.0,7140,7140 Exterior Painting,1
9475,13501,Hailey's Glen,2736,medium,694771.0,7180,7180 Install Exterior Railings,1
9476,13507,Welches Pond,2852,medium,845914.0,7180,7180 Install Exterior Railings,5
9477,13503,Marsh Island,4307,medium,892519.0,7220,7220 Install Deck Skirting/Flower Boxes,1
9478,13503,Marsh Island,4307,medium,892519.0,7300,7300 Receive Interior Trim,1
9479,13423,Governors,2974,medium,884692.0,7300,7300 Receive Interior Trim,1
9480,13349,Peninsula Lakes,2188,medium,442826.0,7300,7300 Receive Interior Trim,1
9481,13468,Governors,2977,medium,869889.0,7300,7300 Receive Interior Trim,1
9482,13468,Governors,2977,medium,869889.0,7304,7304 Receive Goodie Box,1
9483,13423,Governors,2974,medium,884692.0,7304,7304 Receive Goodie Box,1
9484,13349,Peninsula Lakes,2188,medium,442826.0,7304,7304 Receive Goodie Box,1
9485,13442,Walden,4633,medium,656370.0,7340,7340 Install Ceramic Tile,2
9486,13442,Walden,4633,medium,656370.0,7350,7350 Install Shower Tile,9
9487,13392,Marsh Island,2795,medium,771707.0,7350,7350 Install Shower Tile,2
9488,13423,Governors,2974,medium,884692.0,7700,7700 Receive Interior Doors,1
9489,13349,Peninsula Lakes,2188,medium,442826.0,7700,7700 Receive Interior Doors,1
9490,13468,Governors,2977,medium,869889.0,7700,7700 Receive Interior Doors,1
9491,13503,Marsh Island,4307,medium,892519.0,7700,7700 Receive Interior Doors,1
9492,13144,Marlin Chase,3055,medium,740636.0,7825,7825 Crawl Poly,1
9493,13112,Marlin Chase,3171,medium,634940.0,7825,7825 Crawl Poly,1
9494,13258,River Mill,3064,medium,670416.0,7860,7860 Install Interior Trim,2
9495,13138,Marlin Chase,3171,medium,859133.0,7861,7861 Interior Trim Punch,1
9496,13423,Governors,2974,medium,884692.0,7862,7862 Receive Cabinet Hardware Allocation,1
9497,13349,Peninsula Lakes,2188,medium,442826.0,7862,7862 Receive Cabinet Hardware Allocation,1
9498,13503,Marsh Island,4307,medium,892519.0,7862,7862 Receive Cabinet Hardware Allocation,1
9499,13468,Governors,2977,medium,869889.0,7862,7862 Receive Cabinet Hardware Allocation,1
9500,13468,Governors,2977,medium,869889.0,7866,7866 Receive Door Hardware,1
9501,13423,Governors,2974,medium,884692.0,7866,7866 Receive Door Hardware,1
9502,13349,Peninsula Lakes,2188,medium,442826.0,7866,7866 Receive Door Hardware,1
9503,13423,Governors,2974,medium,884692.0,7900,7900 Receive Cabinets Allocation,1
9504,13253,River Mill,2912,medium,692624.0,7900,7900 Receive Cabinets Allocation,1
9505,13349,Peninsula Lakes,2188,medium,442826.0,7900,7900 Receive Cabinets Allocation,1
9506,13468,Governors,2977,medium,869889.0,7900,7900 Receive Cabinets Allocation,1
9507,13468,Governors,2977,medium,869889.0,7901,7901 Cabinet Delivery Charges,1
9508,13423,Governors,2974,medium,884692.0,7901,7901 Cabinet Delivery Charges,1
9509,13253,River Mill,2912,medium,692624.0,7901,7901 Cabinet Delivery Charges,1
9510,13349,Peninsula Lakes,2188,medium,442826.0,7901,7901 Cabinet Delivery Charges,1
9511,13423,Governors,2974,medium,884692.0,7940,7940 Receive Vanity Tops,1
9512,13253,River Mill,2912,medium,692624.0,7940,7940 Receive Vanity Tops,1
9513,13349,Peninsula Lakes,2188,medium,442826.0,7940,7940 Receive Vanity Tops,1
9514,13476,Durham Farms,4277,medium,750956.0,7940,7940 Receive Vanity Tops,8
9515,13468,Governors,2977,medium,869889.0,7940,7940 Receive Vanity Tops,1
9516,13442,Walden,4633,medium,656370.0,8020,8020 Receive Interior Railing,1
9517,13442,Walden,4633,medium,656370.0,8220,8220 Install Fireplace Surround/Mantel,7
9518,13503,Marsh Island,4307,medium,892519.0,8260,8260 Install Interior Railing,1
9519,13423,Governors,2974,medium,884692.0,8260,8260 Install Interior Railing,1
9520,13349,Peninsula Lakes,2188,medium,442826.0,8260,8260 Install Interior Railing,1
9521,13468,Governors,2977,medium,869889.0,8260,8260 Install Interior Railing,1
9522,13030,Peninsula,5546,high,1768191.0,8300,8300 Install Cabinets,3
9523,13394,Peninsula Lakes,2154,medium,474879.0,8380,8380 Template Countertops,1
9524,13281,Marlin Chase,3558,medium,786910.0,8380,8380 Template Countertops,1
9525,13476,Durham Farms,4277,medium,750956.0,8460,8460 Install Countertops,7
9526,13471,Cardinal Grove,2233,medium,517387.0,8920,8920 Install Water Heater/1st Trim,1
9527,13139,Marlin Chase,2554,medium,704067.0,8940,8940 Plumbing Trim,1
9528,13138,Marlin Chase,3171,medium,859133.0,8940,8940 Plumbing Trim,1
9529,13175,Peninsula Lakes,2245,low,567645.0,8940,8940 Plumbing Trim,1
9530,13137,Marlin Chase,2330,medium,637264.0,8980,8980 Final Plumbing Inspection,1
9531,13138,Marlin Chase,3171,medium,859133.0,8980,8980 Final Plumbing Inspection,1
9532,13136,Marlin Chase,3170,medium,806102.0,8980,8980 Final Plumbing Inspection,1
9533,13137,Marlin Chase,2330,medium,637264.0,9060,9060 Final Electric Inspection,1
9534,13152,Marlin Chase,2710,medium,768496.0,9060,9060 Final Electric Inspection,1
9535,13175,Peninsula Lakes,2245,low,567645.0,9060,9060 Final Electric Inspection,1
9536,13020,Peninsula Lakes,2100,low,578095.0,9060,9060 Final Electric Inspection,1
9537,13035,Forest Hills,4024,medium,816522.0,9110,9110 Gas Trim,1
9538,13468,Governors,2977,medium,869889.0,9360,9360 Receive Grill/Firebox,12
9539,13175,Peninsula Lakes,2245,low,567645.0,9660,9660 Install Carpet Flooring,4
9540,13144,Marlin Chase,3055,medium,740636.0,9660,9660 Install Carpet Flooring,1
9541,13112,Marlin Chase,3171,medium,634940.0,9660,9660 Install Carpet Flooring,1
9542,13035,Forest Hills,4024,medium,816522.0,9700,9700 Install Hardwood Flooring,1
9543,13278,Mosaic,2320,medium,818814.0,9740,9740 Fireplace Start Up,1
9544,13392,Marsh Island,2795,medium,771707.0,9820,9820 Install Gutters,1
9545,13349,Peninsula Lakes,2188,medium,442826.0,9910,9910 Utility Grade,1
9546,13394,Peninsula Lakes,2154,medium,474879.0,9910,9910 Utility Grade,1
9547,12920,Peninsula,4116,high,1454538.0,9940,9940 Final Inspection,1
9548,13020,Peninsula Lakes,2100,low,578095.0,9980,9980 Final Cleaning,1
9549,13144,Marlin Chase,3055,medium,740636.0,9990,9990 2nd Stage Termite Treatment,1
9550,13035,Forest Hills,4024,medium,816522.0,10300,10300 Install Driveway,1
9551,13035,Forest Hills,4024,medium,816522.0,10301,10301 Driveway Apron,1
9552,13408,NewMarket,3940,medium,889253.0,10301,10301 Driveway Apron,1
9553,13471,Cardinal Grove,2233,medium,517387.0,10301,10301 Driveway Apron,1
9554,13408,NewMarket,3940,medium,889253.0,10340,10340 Install Leadwalk & Comm. Sidewalk,1
9555,13471,Cardinal Grove,2233,medium,517387.0,10340,10340 Install Leadwalk & Comm. Sidewalk,1
9556,13035,Forest Hills,4024,medium,816522.0,10340,10340 Install Leadwalk & Comm. Sidewalk,1
9557,13360,Peninsula Lakes,3496,medium,575090.0,10380,10380 As Built Survey,1
9558,13032,Welches Pond,2812,medium,643995.0,10380,10380 As Built Survey,1
9559,13408,NewMarket,3940,medium,889253.0,10460,10460 Drywall Touch Up,3
9560,13501,Hailey's Glen,2736,medium,694771.0,10460,10460 Drywall Touch Up,2
9561,13392,Marsh Island,2795,medium,771707.0,10500,10500 Paint 2,29
9562,13277,Mosaic,1704,medium,561869.0,6885,6885 Install Screen Porch Enclosure,14
9563,13277,Mosaic,1704,medium,561869.0,8920,8920 Install Water Heater/1st Trim,1
9564,13145,Marlin Chase,3204,medium,841553.0,0,appcheck Check Appliances for Damage,1
9565,13145,Marlin Chase,3204,medium,841553.0,0,cabcheck Check Cabinets for Damage,1
9566,13397,Peninsula,5533,high,750956.0,140,140 Framing DRAW 2,1
9567,13442,Walden,4633,medium,656370.0,4981,4981 Deliver Sinks,1
9568,13032,Welches Pond,2812,medium,643995.0,5177,5177 Electric Meter Connection,1
9569,13392,Marsh Island,2795,medium,771707.0,5177,5177 Electric Meter Connection,1
9570,13529,Governors,1901,medium,787652.0,6180,6180 Install Insulation,1
9571,13495,Welches Pond,2650,medium,674167.0,6300,6300 Energy Inspection,1
9572,13091,Marlin Chase,2591,medium,562928.0,6340,6340 Install Overhead Door,1
9573,13495,Welches Pond,2650,medium,674167.0,6345,6345 Stock Drywall,1
9574,13138,Marlin Chase,3171,medium,859133.0,6381,6381 Drywall Punch,1
9575,13175,Peninsula Lakes,2245,low,567645.0,6381,6381 Drywall Punch,1
9576,13139,Marlin Chase,2554,medium,704067.0,6381,6381 Drywall Punch,1
9577,13388,Marsh Island,5848,high,750956.0,6620,6620 Receive Vinyl Siding,1
9578,13388,Marsh Island,5848,high,750956.0,6660,6660 Receive Fiber Cement Siding,1
9579,13388,Marsh Island,5848,high,750956.0,6700,6700 Receive Composite Ext Trim,1
9580,13164,Welches Pond,4497,medium,1024665.0,6705,6705 Receive Trellis Material,1
9581,13388,Marsh Island,5848,high,750956.0,6720,6720 Receive Siding Accents,1
9582,13164,Welches Pond,4497,medium,1024665.0,6721,6721 Receive Brackets,1
9583,13388,Marsh Island,5848,high,750956.0,6725,6725 Receive Shutters,1
9584,13388,Marsh Island,5848,high,750956.0,6740,6740 Receive PVC Exterior Trim,1
9585,13164,Welches Pond,4497,medium,1024665.0,6781,6781 Receive Column Wrap/Flower Bx/Pediment,1
9586,13388,Marsh Island,5848,high,750956.0,6820,6820 Receive Deck Skirting,1
9587,13468,Governors,2977,medium,869889.0,6884,6884 Measure Screen Porch Enclosure,1
9588,13253,River Mill,2912,medium,692624.0,6884,6884 Measure Screen Porch Enclosure,1
9589,13281,Marlin Chase,3558,medium,786910.0,7180,7180 Install Exterior Railings,1
9590,13442,Walden,4633,medium,656370.0,7300,7300 Receive Interior Trim,1
9591,13442,Walden,4633,medium,656370.0,7304,7304 Receive Goodie Box,1
9592,13442,Walden,4633,medium,656370.0,7700,7700 Receive Interior Doors,1
9593,13035,Forest Hills,4024,medium,816522.0,7825,7825 Crawl Poly,1
9594,13468,Governors,2977,medium,869889.0,7860,7860 Install Interior Trim,2
9595,13423,Governors,2974,medium,884692.0,7860,7860 Install Interior Trim,2
9596,13349,Peninsula Lakes,2188,medium,442826.0,7860,7860 Install Interior Trim,2
9597,13503,Marsh Island,4307,medium,892519.0,7860,7860 Install Interior Trim,2
9598,13152,Marlin Chase,2710,medium,768496.0,7861,7861 Interior Trim Punch,1
9599,13144,Marlin Chase,3055,medium,740636.0,7861,7861 Interior Trim Punch,1
9600,13112,Marlin Chase,3171,medium,634940.0,7861,7861 Interior Trim Punch,1
9601,13442,Walden,4633,medium,656370.0,7862,7862 Receive Cabinet Hardware Allocation,1
9602,13442,Walden,4633,medium,656370.0,7866,7866 Receive Door Hardware,1
9603,13442,Walden,4633,medium,656370.0,7900,7900 Receive Cabinets Allocation,1
9604,13442,Walden,4633,medium,656370.0,7901,7901 Cabinet Delivery Charges,1
9605,13442,Walden,4633,medium,656370.0,7940,7940 Receive Vanity Tops,1
9606,13442,Walden,4633,medium,656370.0,8260,8260 Install Interior Railing,1
9607,13253,River Mill,2912,medium,692624.0,8300,8300 Install Cabinets,2
9608,13349,Peninsula Lakes,2188,medium,442826.0,8300,8300 Install Cabinets,2
9609,13501,Hailey's Glen,2736,medium,694771.0,8380,8380 Template Countertops,1
9610,13496,Hailey's Glen,3443,medium,316917.0,8420,8420 1st Paint,1
9611,13120,Marsh Island,4291,medium,851477.0,8540,8540 Install Bath Accessories,1
9612,13120,Marsh Island,4291,medium,851477.0,8545,8545 Install Mirrors,1
9613,13091,Marlin Chase,2591,medium,562928.0,8545,8545 Install Mirrors,1
9614,13253,River Mill,2912,medium,692624.0,8579,8579 Template Shower Enclosure,1
9615,13120,Marsh Island,4291,medium,851477.0,8580,8580 Install Shower Enclosures,1
9616,13120,Marsh Island,4291,medium,851477.0,8900,8900 Install Closet Shelving,1
9617,13144,Marlin Chase,3055,medium,740636.0,8940,8940 Plumbing Trim,1
9618,13277,Mosaic,1704,medium,561869.0,8940,8940 Plumbing Trim,1
9619,13140,Marlin Chase,2824,medium,766881.0,8980,8980 Final Plumbing Inspection,1
9620,13113,Marlin Chase,2814,medium,750956.0,8980,8980 Final Plumbing Inspection,1
9621,13139,Marlin Chase,2554,medium,704067.0,8980,8980 Final Plumbing Inspection,1
9622,13145,Marlin Chase,3204,medium,841553.0,8980,8980 Final Plumbing Inspection,1
9623,13175,Peninsula Lakes,2245,low,567645.0,8980,8980 Final Plumbing Inspection,1
9624,13476,Durham Farms,4277,medium,750956.0,9020,9020 Electric Trim,17
9625,13139,Marlin Chase,2554,medium,704067.0,9060,9060 Final Electric Inspection,1
9626,13140,Marlin Chase,2824,medium,766881.0,9060,9060 Final Electric Inspection,1
9627,13113,Marlin Chase,2814,medium,750956.0,9060,9060 Final Electric Inspection,1
9628,13144,Marlin Chase,3055,medium,740636.0,9060,9060 Final Electric Inspection,1
9629,13471,Cardinal Grove,2233,medium,517387.0,9060,9060 Final Electric Inspection,1
9630,13476,Durham Farms,4277,medium,750956.0,9100,9100 HVAC Trim / Set Unit,3
9631,13360,Peninsula Lakes,3496,medium,575090.0,9101,9101 HVAC Startup,1
9632,13120,Marsh Island,4291,medium,851477.0,9101,9101 HVAC Startup,1
9633,13471,Cardinal Grove,2233,medium,517387.0,9101,9101 HVAC Startup,17
9634,13507,Welches Pond,2852,medium,845914.0,9101,9101 HVAC Startup,6
9635,13091,Marlin Chase,2591,medium,562928.0,9101,9101 HVAC Startup,1
9636,13175,Peninsula Lakes,2245,low,567645.0,9110,9110 Gas Trim,1
9637,13485,Peninsula,4241,medium,706147.0,9140,9140 2nd Stage Air Seal,1
9638,13529,Governors,1901,medium,787652.0,9390,9390 Install Water Meter/Sewer Frame,1
9639,13394,Peninsula Lakes,2154,medium,474879.0,9540,9540 Rec. GE Appliance Pkg1 Allocation,1
9640,13035,Forest Hills,4024,medium,816522.0,9660,9660 Install Carpet Flooring,2
9641,13278,Mosaic,2320,medium,818814.0,9700,9700 Install Hardwood Flooring,1
9642,13035,Forest Hills,4024,medium,816522.0,9740,9740 Fireplace Start Up,1
9643,13136,Marlin Chase,3170,medium,806102.0,9755,9755 Rec. GE Appliance Pkg2 Allocation,1
9644,13529,Governors,1901,medium,787652.0,9900,9900 Water Lateral,1
9645,13529,Governors,1901,medium,787652.0,9905,9905 Sewer Lateral,1
9646,13495,Welches Pond,2650,medium,674167.0,9910,9910 Utility Grade,1
9647,13258,River Mill,3064,medium,670416.0,9910,9910 Utility Grade,1
9648,13136,Marlin Chase,3170,medium,806102.0,9980,9980 Final Cleaning,1
9649,13020,Peninsula Lakes,2100,low,578095.0,9990,9990 2nd Stage Termite Treatment,1
9650,12920,Peninsula,4116,high,1454538.0,10020,10020 Final Grade,1
9651,13408,NewMarket,3940,medium,889253.0,10100,10100 Irrigation Installation,1
9652,13120,Marsh Island,4291,medium,851477.0,10260,10260 Install House Numbers,1
9653,13408,NewMarket,3940,medium,889253.0,10300,10300 Install Driveway,1
9654,13471,Cardinal Grove,2233,medium,517387.0,10300,10300 Install Driveway,1
9655,13120,Marsh Island,4291,medium,851477.0,10380,10380 As Built Survey,1
9656,13394,Peninsula Lakes,2154,medium,474879.0,10500,10500 Paint 2,4
9657,13281,Marlin Chase,3558,medium,786910.0,10500,10500 Paint 2,4
9658,13020,Peninsula Lakes,2100,low,578095.0,10501,10501 Paint Retouch,1
9659,13020,Peninsula Lakes,2100,low,578095.0,10620,10620 Punch Out Allocation,1
9660,13278,Mosaic,2320,medium,818814.0,0,vancheck Check Vanity Tops/Windows for Damage,1
9661,13101,Marlin Chase,2461,medium,682900.0,0,vancheck Check Vanity Tops/Windows for Damage,1
9662,13360,Peninsula Lakes,3496,medium,575090.0,0,cabcheck Check Cabinets for Damage,1
9663,13035,Forest Hills,4024,medium,816522.0,0,vancheck Check Vanity Tops/Windows for Damage,1
9664,13495,Welches Pond,2650,medium,674167.0,3140,3140 Pour Porch Slab,1
9665,13496,Hailey's Glen,3443,medium,316917.0,4590,4590 Install Metal Roofing,1
9666,13476,Durham Farms,4277,medium,750956.0,4590,4590 Install Metal Roofing,1
9667,13462,Peninsula,4787,high,1490269.0,4980,4980 Plumbing Rough,2
9668,13394,Peninsula Lakes,2154,medium,474879.0,5120,5120 HVAC Set Furnace,1
9669,13349,Peninsula Lakes,2188,medium,442826.0,5120,5120 HVAC Set Furnace,1
9670,13529,Governors,1901,medium,787652.0,6300,6300 Energy Inspection,1
9671,13339,Peninsula,5583,high,750956.0,6300,6300 Energy Inspection,1
9672,13388,Marsh Island,5848,high,750956.0,6300,6300 Energy Inspection,1
9673,13529,Governors,1901,medium,787652.0,6345,6345 Stock Drywall,1
9674,13339,Peninsula,5583,high,750956.0,6345,6345 Stock Drywall,1
9675,13388,Marsh Island,5848,high,750956.0,6345,6345 Stock Drywall,1
9676,13495,Welches Pond,2650,medium,674167.0,6380,6380 Install Drywall,8
9677,13144,Marlin Chase,3055,medium,740636.0,6381,6381 Drywall Punch,1
9678,13112,Marlin Chase,3171,medium,634940.0,6381,6381 Drywall Punch,1
9679,13349,Peninsula Lakes,2188,medium,442826.0,6390,6390 Schedule Gas Meter,1
9680,13394,Peninsula Lakes,2154,medium,474879.0,6390,6390 Schedule Gas Meter,1
9681,13495,Welches Pond,2650,medium,674167.0,6620,6620 Receive Vinyl Siding,1
9682,13495,Welches Pond,2650,medium,674167.0,6700,6700 Receive Composite Ext Trim,1
9683,13495,Welches Pond,2650,medium,674167.0,6720,6720 Receive Siding Accents,1
9684,13495,Welches Pond,2650,medium,674167.0,6725,6725 Receive Shutters,1
9685,13495,Welches Pond,2650,medium,674167.0,6740,6740 Receive PVC Exterior Trim,1
9686,13495,Welches Pond,2650,medium,674167.0,6781,6781 Receive Column Wrap/Flower Bx/Pediment,1
9687,13495,Welches Pond,2650,medium,674167.0,6820,6820 Receive Deck Skirting,1
9688,13388,Marsh Island,5848,high,750956.0,6860,6860 Siding Installation,26
9689,13462,Peninsula,4787,high,1490269.0,6900,6900 Schedule Septic Installation,1
9690,13349,Peninsula Lakes,2188,medium,442826.0,7140,7140 Exterior Painting,1
9691,13496,Hailey's Glen,3443,medium,316917.0,7220,7220 Install Deck Skirting/Flower Boxes,1
9692,13091,Marlin Chase,2591,medium,562928.0,7825,7825 Crawl Poly,1
9693,13442,Walden,4633,medium,656370.0,7860,7860 Install Interior Trim,5
9694,13496,Hailey's Glen,3443,medium,316917.0,8020,8020 Receive Interior Railing,1
9695,13258,River Mill,3064,medium,670416.0,8220,8220 Install Fireplace Surround/Mantel,1
9696,13501,Hailey's Glen,2736,medium,694771.0,8260,8260 Install Interior Railing,1
9697,13423,Governors,2974,medium,884692.0,8300,8300 Install Cabinets,2
9698,13468,Governors,2977,medium,869889.0,8300,8300 Install Cabinets,2
9699,13278,Mosaic,2320,medium,818814.0,8465,8465 Install Tiled Backsplash,1
9700,13360,Peninsula Lakes,3496,medium,575090.0,8540,8540 Install Bath Accessories,1
9701,13360,Peninsula Lakes,3496,medium,575090.0,8545,8545 Install Mirrors,1
9702,13501,Hailey's Glen,2736,medium,694771.0,8579,8579 Template Shower Enclosure,1
9703,13349,Peninsula Lakes,2188,medium,442826.0,8579,8579 Template Shower Enclosure,1
9704,13281,Marlin Chase,3558,medium,786910.0,8579,8579 Template Shower Enclosure,1
9705,13360,Peninsula Lakes,3496,medium,575090.0,8900,8900 Install Closet Shelving,1
9706,13144,Marlin Chase,3055,medium,740636.0,8980,8980 Final Plumbing Inspection,1
9707,13088,Forest Hills,3580,medium,222544.0,9100,9100 HVAC Trim / Set Unit,2
9708,13152,Marlin Chase,2710,medium,768496.0,9110,9110 Gas Trim,1
9709,13277,Mosaic,1704,medium,561869.0,9110,9110 Gas Trim,1
9710,13030,Peninsula,5546,high,1768191.0,9460,9460 Attic Insulation,1
9711,13349,Peninsula Lakes,2188,medium,442826.0,9540,9540 Rec. GE Appliance Pkg1 Allocation,1
9712,13423,Governors,2974,medium,884692.0,9540,9540 Rec. GE Appliance Pkg1 Allocation,1
9713,13468,Governors,2977,medium,869889.0,9540,9540 Rec. GE Appliance Pkg1 Allocation,1
9714,13468,Governors,2977,medium,869889.0,9541,9541 Receive N/S Appliance Pkg 1,1
9715,13468,Governors,2977,medium,869889.0,9620,9620 Install Appliances,3
9716,13423,Governors,2974,medium,884692.0,9620,9620 Install Appliances,3
9717,13349,Peninsula Lakes,2188,medium,442826.0,9620,9620 Install Appliances,1
9718,13278,Mosaic,2320,medium,818814.0,9660,9660 Install Carpet Flooring,1
9719,13091,Marlin Chase,2591,medium,562928.0,9700,9700 Install Hardwood Flooring,1
9720,13120,Marsh Island,4291,medium,851477.0,9700,9700 Install Hardwood Flooring,1
9721,13277,Mosaic,1704,medium,561869.0,9740,9740 Fireplace Start Up,1
9722,13529,Governors,1901,medium,787652.0,9910,9910 Utility Grade,1
9723,13175,Peninsula Lakes,2245,low,567645.0,9980,9980 Final Cleaning,1
9724,12920,Peninsula,4116,high,1454538.0,9985,9985 Final Clean 2,1
9725,13175,Peninsula Lakes,2245,low,567645.0,9990,9990 2nd Stage Termite Treatment,1
9726,13175,Peninsula Lakes,2245,low,567645.0,10020,10020 Final Grade,1
9727,13020,Peninsula Lakes,2100,low,578095.0,10020,10020 Final Grade,1
9728,13152,Marlin Chase,2710,medium,768496.0,10020,10020 Final Grade,1
9729,13471,Cardinal Grove,2233,medium,517387.0,10020,10020 Final Grade,1
9730,13408,NewMarket,3940,medium,889253.0,10061,10061 Install Fence,1
9731,12920,Peninsula,4116,high,1454538.0,10100,10100 Irrigation Installation,1
9732,13360,Peninsula Lakes,3496,medium,575090.0,10260,10260 Install House Numbers,1
9733,13476,Durham Farms,4277,medium,750956.0,10300,10300 Install Driveway,6
9734,13495,Welches Pond,2650,medium,674167.0,10345,10345 Pour Concrete Steps,1
9735,13471,Cardinal Grove,2233,medium,517387.0,10380,10380 As Built Survey,1
9736,13258,River Mill,3064,medium,670416.0,10460,10460 Drywall Touch Up,2
9737,13136,Marlin Chase,3170,medium,806102.0,10501,10501 Paint Retouch,1
9738,13136,Marlin Chase,3170,medium,806102.0,10620,10620 Punch Out Allocation,1
9739,13401,Welches Pond,2927,medium,731557.0,0,cabcheck Check Cabinets for Damage,1
9740,13164,Welches Pond,4497,medium,1024665.0,0,GrillOrd Order Grill/Firebox,1
9741,13175,Peninsula Lakes,2245,low,567645.0,0,appcheck Check Appliances for Damage,1
9742,13339,Peninsula,5583,high,750956.0,3140,3140 Pour Porch Slab,1
9743,13388,Marsh Island,5848,high,750956.0,4540,4540 Install Windows,1
9744,13281,Marlin Chase,3558,medium,786910.0,4981,4981 Deliver Sinks,1
9745,13397,Peninsula,5533,high,750956.0,5260,5260 Mechanical Rough Inspection,1
9746,13397,Peninsula,5533,high,750956.0,5580,5580 Structured Wiring Rough,1
9747,13529,Governors,1901,medium,787652.0,6380,6380 Install Drywall,10
9748,13339,Peninsula,5583,high,750956.0,6380,6380 Install Drywall,11
9749,13388,Marsh Island,5848,high,750956.0,6380,6380 Install Drywall,13
9750,13120,Marsh Island,4291,medium,851477.0,6381,6381 Drywall Punch,1
9751,13152,Marlin Chase,2710,medium,768496.0,6381,6381 Drywall Punch,1
9752,13485,Peninsula,4241,medium,706147.0,6391,6391 Install Gas Meter,1
9753,13339,Peninsula,5583,high,750956.0,6620,6620 Receive Vinyl Siding,1
9754,13339,Peninsula,5583,high,750956.0,6660,6660 Receive Fiber Cement Siding,1
9755,13339,Peninsula,5583,high,750956.0,6700,6700 Receive Composite Ext Trim,1
9756,13339,Peninsula,5583,high,750956.0,6720,6720 Receive Siding Accents,1
9757,13503,Marsh Island,4307,medium,892519.0,6721,6721 Receive Brackets,1
9758,13339,Peninsula,5583,high,750956.0,6725,6725 Receive Shutters,1
9759,13339,Peninsula,5583,high,750956.0,6740,6740 Receive PVC Exterior Trim,1
9760,13339,Peninsula,5583,high,750956.0,6781,6781 Receive Column Wrap/Flower Bx/Pediment,1
9761,13503,Marsh Island,4307,medium,892519.0,6781,6781 Receive Column Wrap/Flower Bx/Pediment,1
9762,13339,Peninsula,5583,high,750956.0,6820,6820 Receive Deck Skirting,1
9763,13495,Welches Pond,2650,medium,674167.0,6860,6860 Siding Installation,5
9764,13520,Hailey's Glen,2792,medium,606920.0,6884,6884 Measure Screen Porch Enclosure,1
9765,13520,Hailey's Glen,2792,medium,606920.0,7220,7220 Install Deck Skirting/Flower Boxes,1
9766,13496,Hailey's Glen,3443,medium,316917.0,7300,7300 Receive Interior Trim,1
9767,13496,Hailey's Glen,3443,medium,316917.0,7304,7304 Receive Goodie Box,1
9768,13496,Hailey's Glen,3443,medium,316917.0,7700,7700 Receive Interior Doors,1
9769,13091,Marlin Chase,2591,medium,562928.0,7861,7861 Interior Trim Punch,1
9770,13035,Forest Hills,4024,medium,816522.0,7861,7861 Interior Trim Punch,1
9771,13496,Hailey's Glen,3443,medium,316917.0,7862,7862 Receive Cabinet Hardware Allocation,1
9772,13278,Mosaic,2320,medium,818814.0,7865,7865 Receive Door Hardware Allocation,1
9773,13496,Hailey's Glen,3443,medium,316917.0,7866,7866 Receive Door Hardware,1
9774,13496,Hailey's Glen,3443,medium,316917.0,7900,7900 Receive Cabinets Allocation,1
9775,13496,Hailey's Glen,3443,medium,316917.0,7901,7901 Cabinet Delivery Charges,1
9776,13496,Hailey's Glen,3443,medium,316917.0,7940,7940 Receive Vanity Tops,1
9777,13030,Peninsula,5546,high,1768191.0,8380,8380 Template Countertops,1
9778,13349,Peninsula Lakes,2188,medium,442826.0,8380,8380 Template Countertops,1
9779,13253,River Mill,2912,medium,692624.0,8380,8380 Template Countertops,1
9780,13278,Mosaic,2320,medium,818814.0,8540,8540 Install Bath Accessories,1
9781,13278,Mosaic,2320,medium,818814.0,8545,8545 Install Mirrors,1
9782,13442,Walden,4633,medium,656370.0,8579,8579 Template Shower Enclosure,1
9783,13278,Mosaic,2320,medium,818814.0,8580,8580 Install Shower Enclosures,2
9784,13278,Mosaic,2320,medium,818814.0,8900,8900 Install Closet Shelving,1
9785,13408,NewMarket,3940,medium,889253.0,8920,8920 Install Water Heater/1st Trim,1
9786,13091,Marlin Chase,2591,medium,562928.0,8940,8940 Plumbing Trim,1
9787,13253,River Mill,2912,medium,692624.0,9020,9020 Electric Trim,5
9788,13120,Marsh Island,4291,medium,851477.0,9060,9060 Final Electric Inspection,1
9789,13253,River Mill,2912,medium,692624.0,9100,9100 HVAC Trim / Set Unit,2
9790,13138,Marlin Chase,3171,medium,859133.0,9110,9110 Gas Trim,1
9791,13032,Welches Pond,2812,medium,643995.0,9110,9110 Gas Trim,1
9792,13476,Durham Farms,4277,medium,750956.0,9260,9260 Structured Wiring Trim,1
9793,13507,Welches Pond,2852,medium,845914.0,9260,9260 Structured Wiring Trim,1
9794,13520,Hailey's Glen,2792,medium,606920.0,9380,9380 Install Irrigation Well,1
9795,13462,Peninsula,4787,high,1490269.0,9390,9390 Install Water Meter/Sewer Frame,1
9796,13520,Hailey's Glen,2792,medium,606920.0,9420,9420 Install Solar Panels,1
9797,13281,Marlin Chase,3558,medium,786910.0,9540,9540 Rec. GE Appliance Pkg1 Allocation,1
9798,13030,Peninsula,5546,high,1768191.0,9541,9541 Receive N/S Appliance Pkg 1,1
9799,13476,Durham Farms,4277,medium,750956.0,9541,9541 Receive N/S Appliance Pkg 1,5
9800,13394,Peninsula Lakes,2154,medium,474879.0,9620,9620 Install Appliances,1
9801,13277,Mosaic,1704,medium,561869.0,9700,9700 Install Hardwood Flooring,1
9802,13138,Marlin Chase,3171,medium,859133.0,9755,9755 Rec. GE Appliance Pkg2 Allocation,1
9803,13175,Peninsula Lakes,2245,low,567645.0,9755,9755 Rec. GE Appliance Pkg2 Allocation,1
9804,13462,Peninsula,4787,high,1490269.0,9900,9900 Water Lateral,1
9805,13462,Peninsula,4787,high,1490269.0,9905,9905 Sewer Lateral,1
9806,13092,Marlin Chase,2079,medium,433351.0,9940,9940 Final Inspection,1
9807,13471,Cardinal Grove,2233,medium,517387.0,9990,9990 2nd Stage Termite Treatment,1
9808,13507,Welches Pond,2852,medium,845914.0,10020,10020 Final Grade,1
9809,13152,Marlin Chase,2710,medium,768496.0,10100,10100 Irrigation Installation,1
9810,13471,Cardinal Grove,2233,medium,517387.0,10100,10100 Irrigation Installation,1
9811,13175,Peninsula Lakes,2245,low,567645.0,10100,10100 Irrigation Installation,1
9812,13020,Peninsula Lakes,2100,low,578095.0,10100,10100 Irrigation Installation,1
9813,12920,Peninsula,4116,high,1454538.0,10140,10140 Sod Installation,1
9814,12920,Peninsula,4116,high,1454538.0,10180,10180 Shrub Installation,1
9815,13278,Mosaic,2320,medium,818814.0,10260,10260 Install House Numbers,1
9816,13101,Marlin Chase,2461,medium,682900.0,10380,10380 As Built Survey,1
9817,13468,Governors,2977,medium,869889.0,10460,10460 Drywall Touch Up,2
9818,13423,Governors,2974,medium,884692.0,10460,10460 Drywall Touch Up,2
9819,13349,Peninsula Lakes,2188,medium,442826.0,10460,10460 Drywall Touch Up,2
9820,13503,Marsh Island,4307,medium,892519.0,10460,10460 Drywall Touch Up,2
9821,13408,NewMarket,3940,medium,889253.0,10500,10500 Paint 2,3
9822,13175,Peninsula Lakes,2245,low,567645.0,10501,10501 Paint Retouch,1
9823,13092,Marlin Chase,2079,medium,433351.0,10501,10501 Paint Retouch,1
9824,13175,Peninsula Lakes,2245,low,567645.0,10620,10620 Punch Out Allocation,1
9825,13138,Marlin Chase,3171,medium,859133.0,10620,10620 Punch Out Allocation,1
9826,12920,Peninsula,4116,high,1454538.0,10660,10660 Quality Inspection,1
9827,13020,Peninsula Lakes,2100,low,578095.0,0,appcheck Check Appliances for Damage,1
9828,13281,Marlin Chase,3558,medium,786910.0,0,vancheck Check Vanity Tops/Windows for Damage,1
9829,13394,Peninsula Lakes,2154,medium,474879.0,0,vancheck Check Vanity Tops/Windows for Damage,1
9830,13264,Welches Pond,3905,medium,915363.0,4590,4590 Install Metal Roofing,1
9831,13264,Welches Pond,3905,medium,915363.0,5177,5177 Electric Meter Connection,1
9832,13462,Peninsula,4787,high,1490269.0,5180,5180 Electric Rough,4
9833,13397,Peninsula,5533,high,750956.0,5300,5300 Municipal Electric Inspection,1
9834,13462,Peninsula,4787,high,1490269.0,5860,5860 Frame Stage Tour,1
9835,13091,Marlin Chase,2591,medium,562928.0,6381,6381 Drywall Punch,1
9836,13264,Welches Pond,3905,medium,915363.0,6391,6391 Install Gas Meter,1
9837,13520,Hailey's Glen,2792,medium,606920.0,6391,6391 Install Gas Meter,1
9838,13529,Governors,1901,medium,787652.0,6620,6620 Receive Vinyl Siding,1
9839,13529,Governors,1901,medium,787652.0,6700,6700 Receive Composite Ext Trim,1
9840,13529,Governors,1901,medium,787652.0,6725,6725 Receive Shutters,1
9841,13529,Governors,1901,medium,787652.0,6740,6740 Receive PVC Exterior Trim,1
9842,13529,Governors,1901,medium,787652.0,6820,6820 Receive Deck Skirting,1
9843,13264,Welches Pond,3905,medium,915363.0,6862,6862 Trellis Construction,1
9844,13264,Welches Pond,3905,medium,915363.0,6884,6884 Measure Screen Porch Enclosure,1
9845,13264,Welches Pond,3905,medium,915363.0,7060,7060 Exterior Masonry Installation,16
9846,13520,Hailey's Glen,2792,medium,606920.0,7140,7140 Exterior Painting,1
9847,13503,Marsh Island,4307,medium,892519.0,7180,7180 Install Exterior Railings,1
9848,13264,Welches Pond,3905,medium,915363.0,7220,7220 Install Deck Skirting/Flower Boxes,1
9849,13277,Mosaic,1704,medium,561869.0,7380,7380 Install Vinyl Floors,1
9850,13496,Hailey's Glen,3443,medium,316917.0,7860,7860 Install Interior Trim,2
9851,13120,Marsh Island,4291,medium,851477.0,7861,7861 Interior Trim Punch,1
9852,13278,Mosaic,2320,medium,818814.0,7866,7866 Receive Door Hardware,1
9853,13281,Marlin Chase,3558,medium,786910.0,8220,8220 Install Fireplace Surround/Mantel,1
9854,13442,Walden,4633,medium,656370.0,8300,8300 Install Cabinets,3
9855,13468,Governors,2977,medium,869889.0,8380,8380 Template Countertops,1
9856,13423,Governors,2974,medium,884692.0,8380,8380 Template Countertops,1
9857,13468,Governors,2977,medium,869889.0,8382,8382 Template Exterior Countertops,1
9858,13485,Peninsula,4241,medium,706147.0,8420,8420 1st Paint,1
9859,13281,Marlin Chase,3558,medium,786910.0,8460,8460 Install Countertops,1
9860,13503,Marsh Island,4307,medium,892519.0,8579,8579 Template Shower Enclosure,1
9861,13120,Marsh Island,4291,medium,851477.0,8940,8940 Plumbing Trim,1
9862,13440,Marlin Chase,3067,medium,714189.0,8980,8980 Final Plumbing Inspection,1
9863,13091,Marlin Chase,2591,medium,562928.0,8980,8980 Final Plumbing Inspection,1
9864,13032,Welches Pond,2812,medium,643995.0,9101,9101 HVAC Startup,1
9865,13091,Marlin Chase,2591,medium,562928.0,9110,9110 Gas Trim,1
9866,13476,Durham Farms,4277,medium,750956.0,9110,9110 Gas Trim,1
9867,13120,Marsh Island,4291,medium,851477.0,9110,9110 Gas Trim,1
9868,13264,Welches Pond,3905,medium,915363.0,9140,9140 2nd Stage Air Seal,1
9869,13253,River Mill,2912,medium,692624.0,9260,9260 Structured Wiring Trim,1
9870,13264,Welches Pond,3905,medium,915363.0,9380,9380 Install Irrigation Well,1
9871,13496,Hailey's Glen,3443,medium,316917.0,9460,9460 Attic Insulation,1
9872,13175,Peninsula Lakes,2245,low,567645.0,9500,9500 Blower Door/Ductblaster,1
9873,13020,Peninsula Lakes,2100,low,578095.0,9500,9500 Blower Door/Ductblaster,1
9874,13442,Walden,4633,medium,656370.0,9540,9540 Rec. GE Appliance Pkg1 Allocation,1
9875,13442,Walden,4633,medium,656370.0,9541,9541 Receive N/S Appliance Pkg 1,5
9876,13442,Walden,4633,medium,656370.0,9620,9620 Install Appliances,1
9877,13030,Peninsula,5546,high,1768191.0,9620,9620 Install Appliances,1
9878,13277,Mosaic,1704,medium,561869.0,9660,9660 Install Carpet Flooring,1
9879,13360,Peninsula Lakes,3496,medium,575090.0,9700,9700 Install Hardwood Flooring,1
9880,13175,Peninsula Lakes,2245,low,567645.0,9740,9740 Fireplace Start Up,1
9881,13138,Marlin Chase,3171,medium,859133.0,9740,9740 Fireplace Start Up,1
9882,13091,Marlin Chase,2591,medium,562928.0,9820,9820 Install Gutters,1
9883,13264,Welches Pond,3905,medium,915363.0,9820,9820 Install Gutters,6
9884,13496,Hailey's Glen,3443,medium,316917.0,9820,9820 Install Gutters,1
9885,13360,Peninsula Lakes,3496,medium,575090.0,9860,9860 Final Utility Connection,0
9886,13349,Peninsula Lakes,2188,medium,442826.0,9860,9860 Final Utility Connection,0
9887,13507,Welches Pond,2852,medium,845914.0,9990,9990 2nd Stage Termite Treatment,1
9888,13507,Welches Pond,2852,medium,845914.0,10100,10100 Irrigation Installation,6
9889,13471,Cardinal Grove,2233,medium,517387.0,10140,10140 Sod Installation,1
9890,13175,Peninsula Lakes,2245,low,567645.0,10140,10140 Sod Installation,1
9891,13020,Peninsula Lakes,2100,low,578095.0,10140,10140 Sod Installation,1
9892,13175,Peninsula Lakes,2245,low,567645.0,10180,10180 Shrub Installation,1
9893,13020,Peninsula Lakes,2100,low,578095.0,10180,10180 Shrub Installation,1
9894,13471,Cardinal Grove,2233,medium,517387.0,10180,10180 Shrub Installation,1
9895,13258,River Mill,3064,medium,670416.0,10500,10500 Paint 2,4
9896,12993,Peninsula,5996,high,750956.0,10780,10780 Customer Walk,1
9897,13032,Welches Pond,2812,medium,643995.0,0,cabcheck Check Cabinets for Damage,1
9898,13442,Walden,4633,medium,656370.0,4542,4542 Measure/Order Window Coverings,1
9899,13388,Marsh Island,5848,high,750956.0,4701,4701 Frame Check,1
9900,13501,Hailey's Glen,2736,medium,694771.0,4981,4981 Deliver Sinks,1
9901,13501,Hailey's Glen,2736,medium,694771.0,5177,5177 Electric Meter Connection,1
9902,13462,Peninsula,4787,high,1490269.0,5740,5740 Install Gas Lines,1
9903,13360,Peninsula Lakes,3496,medium,575090.0,6340,6340 Install Overhead Door,1
9904,13360,Peninsula Lakes,3496,medium,575090.0,6381,6381 Drywall Punch,1
9905,13529,Governors,1901,medium,787652.0,6705,6705 Receive Trellis Material,1
9906,13529,Governors,1901,medium,787652.0,6721,6721 Receive Brackets,1
9907,13529,Governors,1901,medium,787652.0,6781,6781 Receive Column Wrap/Flower Bx/Pediment,1
9908,13529,Governors,1901,medium,787652.0,6860,6860 Siding Installation,5
9909,13423,Governors,2974,medium,884692.0,6885,6885 Install Screen Porch Enclosure,5
9910,13264,Welches Pond,3905,medium,915363.0,7140,7140 Exterior Painting,1
9911,13392,Marsh Island,2795,medium,771707.0,7180,7180 Install Exterior Railings,1
9912,13030,Peninsula,5546,high,1768191.0,7220,7220 Install Deck Skirting/Flower Boxes,1
9913,13503,Marsh Island,4307,medium,892519.0,7304,7304 Receive Goodie Box,1
9914,13485,Peninsula,4241,medium,706147.0,7340,7340 Install Ceramic Tile,2
9915,13496,Hailey's Glen,3443,medium,316917.0,7340,7340 Install Ceramic Tile,20
9916,13496,Hailey's Glen,3443,medium,316917.0,7350,7350 Install Shower Tile,20
9917,13485,Peninsula,4241,medium,706147.0,7350,7350 Install Shower Tile,12
9918,13278,Mosaic,2320,medium,818814.0,7861,7861 Interior Trim Punch,2
9919,13360,Peninsula Lakes,3496,medium,575090.0,7861,7861 Interior Trim Punch,1
9920,13503,Marsh Island,4307,medium,892519.0,7866,7866 Receive Door Hardware,1
9921,13503,Marsh Island,4307,medium,892519.0,7900,7900 Receive Cabinets Allocation,1
9922,13503,Marsh Island,4307,medium,892519.0,7901,7901 Cabinet Delivery Charges,1
9923,13503,Marsh Island,4307,medium,892519.0,7940,7940 Receive Vanity Tops,1
9924,13485,Peninsula,4241,medium,706147.0,8020,8020 Receive Interior Railing,1
9925,13503,Marsh Island,4307,medium,892519.0,8300,8300 Install Cabinets,2
9926,13496,Hailey's Glen,3443,medium,316917.0,8300,8300 Install Cabinets,2
9927,13032,Welches Pond,2812,medium,643995.0,8540,8540 Install Bath Accessories,1
9928,13032,Welches Pond,2812,medium,643995.0,8545,8545 Install Mirrors,1
9929,13485,Peninsula,4241,medium,706147.0,8579,8579 Template Shower Enclosure,1
9930,13032,Welches Pond,2812,medium,643995.0,8580,8580 Install Shower Enclosures,1
9931,13401,Welches Pond,2927,medium,731557.0,8580,8580 Install Shower Enclosures,20
9932,13091,Marlin Chase,2591,medium,562928.0,8580,8580 Install Shower Enclosures,1
9933,13032,Welches Pond,2812,medium,643995.0,8900,8900 Install Closet Shelving,1
9934,13112,Marlin Chase,3171,medium,634940.0,8940,8940 Plumbing Trim,1
9935,13360,Peninsula Lakes,3496,medium,575090.0,8940,8940 Plumbing Trim,1
9936,13120,Marsh Island,4291,medium,851477.0,8980,8980 Final Plumbing Inspection,1
9937,13394,Peninsula Lakes,2154,medium,474879.0,9020,9020 Electric Trim,6
9938,13281,Marlin Chase,3558,medium,786910.0,9020,9020 Electric Trim,7
9939,13088,Forest Hills,3580,medium,222544.0,9020,9020 Electric Trim,15
9940,13507,Welches Pond,2852,medium,845914.0,9060,9060 Final Electric Inspection,15
9941,13394,Peninsula Lakes,2154,medium,474879.0,9100,9100 HVAC Trim / Set Unit,9
9942,13281,Marlin Chase,3558,medium,786910.0,9100,9100 HVAC Trim / Set Unit,1
9943,13476,Durham Farms,4277,medium,750956.0,9101,9101 HVAC Startup,10
9944,13164,Welches Pond,4497,medium,1024665.0,9140,9140 2nd Stage Air Seal,1
9945,13281,Marlin Chase,3558,medium,786910.0,9260,9260 Structured Wiring Trim,1
9946,13088,Forest Hills,3580,medium,222544.0,9260,9260 Structured Wiring Trim,1
9947,13394,Peninsula Lakes,2154,medium,474879.0,9260,9260 Structured Wiring Trim,1
9948,13281,Marlin Chase,3558,medium,786910.0,9420,9420 Install Solar Panels,1
9949,13258,River Mill,3064,medium,670416.0,9460,9460 Attic Insulation,1
9950,13264,Welches Pond,3905,medium,915363.0,9460,9460 Attic Insulation,15
9951,13030,Peninsula,5546,high,1768191.0,9540,9540 Rec. GE Appliance Pkg1 Allocation,1
9952,13503,Marsh Island,4307,medium,892519.0,9540,9540 Rec. GE Appliance Pkg1 Allocation,1
9953,13496,Hailey's Glen,3443,medium,316917.0,9541,9541 Receive N/S Appliance Pkg 1,1
9954,13496,Hailey's Glen,3443,medium,316917.0,9620,9620 Install Appliances,1
9955,13032,Welches Pond,2812,medium,643995.0,9700,9700 Install Hardwood Flooring,1
9956,13152,Marlin Chase,2710,medium,768496.0,9755,9755 Rec. GE Appliance Pkg2 Allocation,1
9957,13120,Marsh Island,4291,medium,851477.0,9755,9755 Rec. GE Appliance Pkg2 Allocation,1
9958,13112,Marlin Chase,3171,medium,634940.0,9980,9980 Final Cleaning,1
9959,13020,Peninsula Lakes,2100,low,578095.0,9985,9985 Final Clean 2,1
9960,13091,Marlin Chase,2591,medium,562928.0,9990,9990 2nd Stage Termite Treatment,1
9961,13030,Peninsula,5546,high,1768191.0,10110,10110 Hardscape Installation,5
9962,13032,Welches Pond,2812,medium,643995.0,10260,10260 Install House Numbers,1
9963,13501,Hailey's Glen,2736,medium,694771.0,10301,10301 Driveway Apron,1
9964,13507,Welches Pond,2852,medium,845914.0,10301,10301 Driveway Apron,1
9965,13281,Marlin Chase,3558,medium,786910.0,10301,10301 Driveway Apron,1
9966,13507,Welches Pond,2852,medium,845914.0,10340,10340 Install Leadwalk & Comm. Sidewalk,1
9967,13496,Hailey's Glen,3443,medium,316917.0,10345,10345 Pour Concrete Steps,1
9968,13020,Peninsula Lakes,2100,low,578095.0,10420,10420 Powerwash,1
9969,13442,Walden,4633,medium,656370.0,10460,10460 Drywall Touch Up,3
9970,13503,Marsh Island,4307,medium,892519.0,10500,10500 Paint 2,6
9971,13423,Governors,2974,medium,884692.0,10500,10500 Paint 2,4
9972,13501,Hailey's Glen,2736,medium,694771.0,10500,10500 Paint 2,4
9973,13349,Peninsula Lakes,2188,medium,442826.0,10500,10500 Paint 2,4
9974,13468,Governors,2977,medium,869889.0,10500,10500 Paint 2,4
9975,13120,Marsh Island,4291,medium,851477.0,10501,10501 Paint Retouch,1
9976,13120,Marsh Island,4291,medium,851477.0,10620,10620 Punch Out Allocation,1
9977,13440,Marlin Chase,3067,medium,714189.0,0,cabcheck Check Cabinets for Damage,1
9978,13120,Marsh Island,4291,medium,851477.0,0,appcheck Check Appliances for Damage,1
9979,13503,Marsh Island,4307,medium,892519.0,0,vancheck Check Vanity Tops/Windows for Damage,1
9980,13408,NewMarket,3940,medium,889253.0,0,vancheck Check Vanity Tops/Windows for Damage,1
9981,13253,River Mill,2912,medium,692624.0,0,vancheck Check Vanity Tops/Windows for Damage,1
9982,13462,Peninsula,4787,high,1490269.0,4461,4461 Install Gas Lateral,1
9983,13030,Peninsula,5546,high,1768191.0,4542,4542 Measure/Order Window Coverings,1
9984,13485,Peninsula,4241,medium,706147.0,4981,4981 Deliver Sinks,1
9985,13388,Marsh Island,5848,high,750956.0,5825,5825 Frame Punch,1
9986,13397,Peninsula,5533,high,750956.0,5860,5860 Frame Stage Tour,1
9987,13112,Marlin Chase,3171,medium,634940.0,6340,6340 Install Overhead Door,1
9988,13035,Forest Hills,4024,medium,816522.0,6381,6381 Drywall Punch,2
9989,13394,Peninsula Lakes,2154,medium,474879.0,6391,6391 Install Gas Meter,1
9990,13349,Peninsula Lakes,2188,medium,442826.0,6391,6391 Install Gas Meter,1
9991,13485,Peninsula,4241,medium,706147.0,7300,7300 Receive Interior Trim,1
9992,13485,Peninsula,4241,medium,706147.0,7304,7304 Receive Goodie Box,1
9993,13258,River Mill,3064,medium,670416.0,7340,7340 Install Ceramic Tile,2
9994,13485,Peninsula,4241,medium,706147.0,7700,7700 Receive Interior Doors,1
9995,13032,Welches Pond,2812,medium,643995.0,7825,7825 Crawl Poly,1
9996,13485,Peninsula,4241,medium,706147.0,7862,7862 Receive Cabinet Hardware Allocation,1
9997,13277,Mosaic,1704,medium,561869.0,7865,7865 Receive Door Hardware Allocation,1
9998,13277,Mosaic,1704,medium,561869.0,7866,7866 Receive Door Hardware,3
9999,13088,Forest Hills,3580,medium,222544.0,7866,7866 Receive Door Hardware,1
10000,13485,Peninsula,4241,medium,706147.0,7866,7866 Receive Door Hardware,1
10001,13485,Peninsula,4241,medium,706147.0,7900,7900 Receive Cabinets Allocation,1
10002,13485,Peninsula,4241,medium,706147.0,7901,7901 Cabinet Delivery Charges,1
10003,13485,Peninsula,4241,medium,706147.0,7940,7940 Receive Vanity Tops,1
10004,13394,Peninsula Lakes,2154,medium,474879.0,8460,8460 Install Countertops,1
10005,13277,Mosaic,1704,medium,561869.0,8465,8465 Install Tiled Backsplash,4
10006,13277,Mosaic,1704,medium,561869.0,8579,8579 Template Shower Enclosure,1
10007,13277,Mosaic,1704,medium,561869.0,8580,8580 Install Shower Enclosures,1
10008,13394,Peninsula Lakes,2154,medium,474879.0,8920,8920 Install Water Heater/1st Trim,1
10009,13408,NewMarket,3940,medium,889253.0,9100,9100 HVAC Trim / Set Unit,2
10010,13112,Marlin Chase,3171,medium,634940.0,9101,9101 HVAC Startup,1
10011,13112,Marlin Chase,3171,medium,634940.0,9110,9110 Gas Trim,1
10012,13520,Hailey's Glen,2792,medium,606920.0,9140,9140 2nd Stage Air Seal,1
10013,13136,Marlin Chase,3170,medium,806102.0,9500,9500 Blower Door/Ductblaster,1
10014,13139,Marlin Chase,2554,medium,704067.0,9500,9500 Blower Door/Ductblaster,1
10015,13503,Marsh Island,4307,medium,892519.0,9620,9620 Install Appliances,1
10016,13360,Peninsula Lakes,3496,medium,575090.0,9660,9660 Install Carpet Flooring,1
10017,13032,Welches Pond,2812,medium,643995.0,9660,9660 Install Carpet Flooring,1
10018,13476,Durham Farms,4277,medium,750956.0,9700,9700 Install Hardwood Flooring,1
10019,13032,Welches Pond,2812,medium,643995.0,9740,9740 Fireplace Start Up,1
10020,13112,Marlin Chase,3171,medium,634940.0,9755,9755 Rec. GE Appliance Pkg2 Allocation,1
10021,13394,Peninsula Lakes,2154,medium,474879.0,9860,9860 Final Utility Connection,0
10022,13175,Peninsula Lakes,2245,low,567645.0,9940,9940 Final Inspection,1
10023,13020,Peninsula Lakes,2100,low,578095.0,9940,9940 Final Inspection,1
10024,13175,Peninsula Lakes,2245,low,567645.0,9985,9985 Final Clean 2,1
10025,13501,Hailey's Glen,2736,medium,694771.0,10300,10300 Install Driveway,1
10026,13507,Welches Pond,2852,medium,845914.0,10300,10300 Install Driveway,1
10027,13112,Marlin Chase,3171,medium,634940.0,10300,10300 Install Driveway,1
10028,13281,Marlin Chase,3558,medium,786910.0,10300,10300 Install Driveway,1
10029,13394,Peninsula Lakes,2154,medium,474879.0,10301,10301 Driveway Apron,1
10030,13394,Peninsula Lakes,2154,medium,474879.0,10340,10340 Install Leadwalk & Comm. Sidewalk,1
10031,13175,Peninsula Lakes,2245,low,567645.0,10420,10420 Powerwash,1
10032,12920,Peninsula,4116,high,1454538.0,10420,10420 Powerwash,1
10033,13496,Hailey's Glen,3443,medium,316917.0,10460,10460 Drywall Touch Up,2
10034,13091,Marlin Chase,2591,medium,562928.0,10501,10501 Paint Retouch,1
10035,13112,Marlin Chase,3171,medium,634940.0,10620,10620 Punch Out Allocation,1
10036,13091,Marlin Chase,2591,medium,562928.0,10620,10620 Punch Out Allocation,1
10037,13020,Peninsula Lakes,2100,low,578095.0,10660,10660 Quality Inspection,1
10038,13501,Hailey's Glen,2736,medium,694771.0,0,vancheck Check Vanity Tops/Windows for Damage,1
10039,13278,Mosaic,2320,medium,818814.0,0,cabcheck Check Cabinets for Damage,1
10040,13101,Marlin Chase,2461,medium,682900.0,0,cabcheck Check Cabinets for Damage,1
10041,13468,Governors,2977,medium,869889.0,0,vancheck Check Vanity Tops/Windows for Damage,1
10042,13030,Peninsula,5546,high,1768191.0,4590,4590 Install Metal Roofing,6
10043,13495,Welches Pond,2650,medium,674167.0,5177,5177 Electric Meter Connection,1
10044,13462,Peninsula,4787,high,1490269.0,5260,5260 Mechanical Rough Inspection,1
10045,13264,Welches Pond,3905,medium,915363.0,6340,6340 Install Overhead Door,23
10046,13476,Durham Farms,4277,medium,750956.0,6381,6381 Drywall Punch,1
10047,13462,Peninsula,4787,high,1490269.0,6390,6390 Schedule Gas Meter,1
10048,13496,Hailey's Glen,3443,medium,316917.0,6391,6391 Install Gas Meter,1
10049,13339,Peninsula,5583,high,750956.0,6860,6860 Siding Installation,17
10050,13485,Peninsula,4241,medium,706147.0,6884,6884 Measure Screen Porch Enclosure,1
10051,13485,Peninsula,4241,medium,706147.0,7220,7220 Install Deck Skirting/Flower Boxes,3
10052,13258,River Mill,3064,medium,670416.0,7350,7350 Install Shower Tile,3
10053,13032,Welches Pond,2812,medium,643995.0,7861,7861 Interior Trim Punch,1
10054,13277,Mosaic,1704,medium,561869.0,7861,7861 Interior Trim Punch,2
10055,13496,Hailey's Glen,3443,medium,316917.0,8220,8220 Install Fireplace Surround/Mantel,1
10056,13485,Peninsula,4241,medium,706147.0,8260,8260 Install Interior Railing,1
10057,13442,Walden,4633,medium,656370.0,8380,8380 Template Countertops,1
10058,13496,Hailey's Glen,3443,medium,316917.0,8380,8380 Template Countertops,1
10059,13264,Welches Pond,3905,medium,915363.0,8420,8420 1st Paint,1
10060,13164,Welches Pond,4497,medium,1024665.0,8420,8420 1st Paint,1
10061,13476,Durham Farms,4277,medium,750956.0,8465,8465 Install Tiled Backsplash,1
10062,13507,Welches Pond,2852,medium,845914.0,8540,8540 Install Bath Accessories,1
10063,13507,Welches Pond,2852,medium,845914.0,8545,8545 Install Mirrors,1
10064,13112,Marlin Chase,3171,medium,634940.0,8545,8545 Install Mirrors,1
10065,13507,Welches Pond,2852,medium,845914.0,8580,8580 Install Shower Enclosures,18
10066,13112,Marlin Chase,3171,medium,634940.0,8580,8580 Install Shower Enclosures,1
10067,13145,Marlin Chase,3204,medium,841553.0,8580,8580 Install Shower Enclosures,1
10068,13507,Welches Pond,2852,medium,845914.0,8900,8900 Install Closet Shelving,1
10069,13112,Marlin Chase,3171,medium,634940.0,8900,8900 Install Closet Shelving,1
10070,13476,Durham Farms,4277,medium,750956.0,8920,8920 Install Water Heater/1st Trim,1
10071,13476,Durham Farms,4277,medium,750956.0,8935,8935 Receive Plumbing Fixtures,1
10072,13032,Welches Pond,2812,medium,643995.0,8940,8940 Plumbing Trim,1
10073,13408,NewMarket,3940,medium,889253.0,9020,9020 Electric Trim,2
10074,13501,Hailey's Glen,2736,medium,694771.0,9100,9100 HVAC Trim / Set Unit,1
10075,13088,Forest Hills,3580,medium,222544.0,9101,9101 HVAC Startup,1
10076,13408,NewMarket,3940,medium,889253.0,9110,9110 Gas Trim,1
10077,13495,Welches Pond,2650,medium,674167.0,9140,9140 2nd Stage Air Seal,1
10078,13408,NewMarket,3940,medium,889253.0,9260,9260 Structured Wiring Trim,1
10079,13520,Hailey's Glen,2792,medium,606920.0,9460,9460 Attic Insulation,1
10080,13258,River Mill,3064,medium,670416.0,9540,9540 Rec. GE Appliance Pkg1 Allocation,1
10081,13401,Welches Pond,2927,medium,731557.0,9700,9700 Install Hardwood Flooring,1
10082,13112,Marlin Chase,3171,medium,634940.0,9740,9740 Fireplace Start Up,3
10083,13360,Peninsula Lakes,3496,medium,575090.0,9755,9755 Rec. GE Appliance Pkg2 Allocation,1
10084,13112,Marlin Chase,3171,medium,634940.0,9860,9860 Final Utility Connection,0
10085,13120,Marsh Island,4291,medium,851477.0,9940,9940 Final Inspection,1
10086,13360,Peninsula Lakes,3496,medium,575090.0,10020,10020 Final Grade,1
10087,13120,Marsh Island,4291,medium,851477.0,10020,10020 Final Grade,1
10088,13277,Mosaic,1704,medium,561869.0,10100,10100 Irrigation Installation,1
10089,13476,Durham Farms,4277,medium,750956.0,10260,10260 Install House Numbers,1
10090,13507,Welches Pond,2852,medium,845914.0,10260,10260 Install House Numbers,1
10091,13112,Marlin Chase,3171,medium,634940.0,10260,10260 Install House Numbers,1
10092,13501,Hailey's Glen,2736,medium,694771.0,10340,10340 Install Leadwalk & Comm. Sidewalk,1
10093,13476,Durham Farms,4277,medium,750956.0,10340,10340 Install Leadwalk & Comm. Sidewalk,1
10094,13507,Welches Pond,2852,medium,845914.0,10380,10380 As Built Survey,1
10095,13120,Marsh Island,4291,medium,851477.0,10420,10420 Powerwash,1
10096,13030,Peninsula,5546,high,1768191.0,10460,10460 Drywall Touch Up,2
10097,13360,Peninsula Lakes,3496,medium,575090.0,10501,10501 Paint Retouch,1
10098,13360,Peninsula Lakes,3496,medium,575090.0,10620,10620 Punch Out Allocation,1
10099,13175,Peninsula Lakes,2245,low,567645.0,10660,10660 Quality Inspection,1
10100,13423,Governors,2974,medium,884692.0,0,vancheck Check Vanity Tops/Windows for Damage,1
10101,13092,Marlin Chase,2079,medium,433351.0,0,cabcheck Check Cabinets for Damage,1
10102,13360,Peninsula Lakes,3496,medium,575090.0,0,appcheck Check Appliances for Damage,1
10103,13401,Welches Pond,2927,medium,731557.0,0,appcheck Check Appliances for Damage,1
10104,13349,Peninsula Lakes,2188,medium,442826.0,0,vancheck Check Vanity Tops/Windows for Damage,1
10105,13258,River Mill,3064,medium,670416.0,4071,4071 Receive Exterior Decking,1
10106,13495,Welches Pond,2650,medium,674167.0,4590,4590 Install Metal Roofing,1
10107,13030,Peninsula,5546,high,1768191.0,5120,5120 HVAC Set Furnace,1
10108,13462,Peninsula,4787,high,1490269.0,5300,5300 Municipal Electric Inspection,1
10109,13462,Peninsula,4787,high,1490269.0,5900,5900 Air Seal,1
10110,13397,Peninsula,5533,high,750956.0,5900,5900 Air Seal,1
10111,13281,Marlin Chase,3558,medium,786910.0,6340,6340 Install Overhead Door,1
10112,13032,Welches Pond,2812,medium,643995.0,6381,6381 Drywall Punch,1
10113,13495,Welches Pond,2650,medium,674167.0,6391,6391 Install Gas Meter,1
10114,13495,Welches Pond,2650,medium,674167.0,6884,6884 Measure Screen Porch Enclosure,1
10115,13392,Marsh Island,2795,medium,771707.0,6885,6885 Install Screen Porch Enclosure,1
10116,13495,Welches Pond,2650,medium,674167.0,7060,7060 Exterior Masonry Installation,12
10117,13495,Welches Pond,2650,medium,674167.0,7220,7220 Install Deck Skirting/Flower Boxes,1
10118,13264,Welches Pond,3905,medium,915363.0,7340,7340 Install Ceramic Tile,17
10119,13164,Welches Pond,4497,medium,1024665.0,7340,7340 Install Ceramic Tile,8
10120,13164,Welches Pond,4497,medium,1024665.0,7350,7350 Install Shower Tile,9
10121,13264,Welches Pond,3905,medium,915363.0,7350,7350 Install Shower Tile,17
10122,13401,Welches Pond,2927,medium,731557.0,7825,7825 Crawl Poly,1
10123,13485,Peninsula,4241,medium,706147.0,7860,7860 Install Interior Trim,3
10124,13476,Durham Farms,4277,medium,750956.0,7861,7861 Interior Trim Punch,1
10125,13088,Forest Hills,3580,medium,222544.0,7865,7865 Receive Door Hardware Allocation,1
10126,13253,River Mill,2912,medium,692624.0,7865,7865 Receive Door Hardware Allocation,1
10127,13253,River Mill,2912,medium,692624.0,7866,7866 Receive Door Hardware,1
10128,13164,Welches Pond,4497,medium,1024665.0,8020,8020 Receive Interior Railing,1
10129,13264,Welches Pond,3905,medium,915363.0,8020,8020 Receive Interior Railing,1
10130,13264,Welches Pond,3905,medium,915363.0,8220,8220 Install Fireplace Surround/Mantel,1
10131,13496,Hailey's Glen,3443,medium,316917.0,8260,8260 Install Interior Railing,1
10132,13503,Marsh Island,4307,medium,892519.0,8380,8380 Template Countertops,1
10133,13030,Peninsula,5546,high,1768191.0,8460,8460 Install Countertops,1
10134,13501,Hailey's Glen,2736,medium,694771.0,8460,8460 Install Countertops,1
10135,13253,River Mill,2912,medium,692624.0,8460,8460 Install Countertops,1
10136,13253,River Mill,2912,medium,692624.0,8540,8540 Install Bath Accessories,12
10137,13277,Mosaic,1704,medium,561869.0,8540,8540 Install Bath Accessories,1
10138,13088,Forest Hills,3580,medium,222544.0,8540,8540 Install Bath Accessories,1
10139,13088,Forest Hills,3580,medium,222544.0,8545,8545 Install Mirrors,1
10140,13277,Mosaic,1704,medium,561869.0,8545,8545 Install Mirrors,1
10141,13253,River Mill,2912,medium,692624.0,8545,8545 Install Mirrors,1
10142,13253,River Mill,2912,medium,692624.0,8900,8900 Install Closet Shelving,1
10143,13277,Mosaic,1704,medium,561869.0,8900,8900 Install Closet Shelving,1
10144,13088,Forest Hills,3580,medium,222544.0,8900,8900 Install Closet Shelving,1
10145,13476,Durham Farms,4277,medium,750956.0,8940,8940 Plumbing Trim,1
10146,13503,Marsh Island,4307,medium,892519.0,9020,9020 Electric Trim,7
10147,13503,Marsh Island,4307,medium,892519.0,9100,9100 HVAC Trim / Set Unit,7
10148,13501,Hailey's Glen,2736,medium,694771.0,9101,9101 HVAC Startup,1
10149,13495,Welches Pond,2650,medium,674167.0,9380,9380 Install Irrigation Well,1
10150,13495,Welches Pond,2650,medium,674167.0,9460,9460 Attic Insulation,12
10151,13101,Marlin Chase,2461,medium,682900.0,9500,9500 Blower Door/Ductblaster,1
10152,13440,Marlin Chase,3067,medium,714189.0,9500,9500 Blower Door/Ductblaster,1
10153,13145,Marlin Chase,3204,medium,841553.0,9500,9500 Blower Door/Ductblaster,1
10154,13140,Marlin Chase,2824,medium,766881.0,9500,9500 Blower Door/Ductblaster,1
10155,13401,Welches Pond,2927,medium,731557.0,9660,9660 Install Carpet Flooring,1
10156,13501,Hailey's Glen,2736,medium,694771.0,9700,9700 Install Hardwood Flooring,1
10157,13507,Welches Pond,2852,medium,845914.0,9700,9700 Install Hardwood Flooring,1
10158,13152,Marlin Chase,2710,medium,768496.0,9740,9740 Fireplace Start Up,2
10159,13120,Marsh Island,4291,medium,851477.0,9740,9740 Fireplace Start Up,1
10160,13408,NewMarket,3940,medium,889253.0,9740,9740 Fireplace Start Up,1
10161,13495,Welches Pond,2650,medium,674167.0,9820,9820 Install Gutters,4
10162,13360,Peninsula Lakes,3496,medium,575090.0,9980,9980 Final Cleaning,1
10163,13281,Marlin Chase,3558,medium,786910.0,9990,9990 2nd Stage Termite Treatment,1
10164,13476,Durham Farms,4277,medium,750956.0,10020,10020 Final Grade,4
10165,13401,Welches Pond,2927,medium,731557.0,10140,10140 Sod Installation,5
10166,13401,Welches Pond,2927,medium,731557.0,10180,10180 Shrub Installation,5
10167,13088,Forest Hills,3580,medium,222544.0,10260,10260 Install House Numbers,1
10168,13277,Mosaic,1704,medium,561869.0,10260,10260 Install House Numbers,1
10169,13278,Mosaic,2320,medium,818814.0,10300,10300 Install Driveway,6
10170,13278,Mosaic,2320,medium,818814.0,10301,10301 Driveway Apron,7
10171,13278,Mosaic,2320,medium,818814.0,10340,10340 Install Leadwalk & Comm. Sidewalk,7
10172,13476,Durham Farms,4277,medium,750956.0,10380,10380 As Built Survey,1
10173,13442,Walden,4633,medium,656370.0,10500,10500 Paint 2,16
10174,13496,Hailey's Glen,3443,medium,316917.0,10500,10500 Paint 2,6
10175,13136,Marlin Chase,3170,medium,806102.0,0,cabcheck Check Cabinets for Damage,1
10176,13035,Forest Hills,4024,medium,816522.0,0,cabcheck Check Cabinets for Damage,1
10177,13462,Peninsula,4787,high,1490269.0,4700,4700 Internal Framing Inspection,1
10178,13397,Peninsula,5533,high,750956.0,4700,4700 Internal Framing Inspection,1
10179,13264,Welches Pond,3905,medium,915363.0,4981,4981 Deliver Sinks,1
10180,13164,Welches Pond,4497,medium,1024665.0,4981,4981 Deliver Sinks,1
10181,13164,Welches Pond,4497,medium,1024665.0,5177,5177 Electric Meter Connection,1
10182,13476,Durham Farms,4277,medium,750956.0,6391,6391 Install Gas Meter,1
10183,13360,Peninsula Lakes,3496,medium,575090.0,7140,7140 Exterior Painting,1
10184,13503,Marsh Island,4307,medium,892519.0,7140,7140 Exterior Painting,1
10185,13495,Welches Pond,2650,medium,674167.0,7140,7140 Exterior Painting,6
10186,13520,Hailey's Glen,2792,medium,606920.0,7180,7180 Install Exterior Railings,1
10187,13264,Welches Pond,3905,medium,915363.0,7300,7300 Receive Interior Trim,1
10188,13164,Welches Pond,4497,medium,1024665.0,7300,7300 Receive Interior Trim,1
10189,13164,Welches Pond,4497,medium,1024665.0,7304,7304 Receive Goodie Box,1
10190,13264,Welches Pond,3905,medium,915363.0,7304,7304 Receive Goodie Box,1
10191,13264,Welches Pond,3905,medium,915363.0,7700,7700 Receive Interior Doors,1
10192,13164,Welches Pond,4497,medium,1024665.0,7700,7700 Receive Interior Doors,1
10193,13507,Welches Pond,2852,medium,845914.0,7825,7825 Crawl Poly,1
10194,13164,Welches Pond,4497,medium,1024665.0,7862,7862 Receive Cabinet Hardware Allocation,1
10195,13258,River Mill,3064,medium,670416.0,7862,7862 Receive Cabinet Hardware Allocation,1
10196,13264,Welches Pond,3905,medium,915363.0,7862,7862 Receive Cabinet Hardware Allocation,1
10197,13264,Welches Pond,3905,medium,915363.0,7866,7866 Receive Door Hardware,1
10198,13164,Welches Pond,4497,medium,1024665.0,7866,7866 Receive Door Hardware,1
10199,13164,Welches Pond,4497,medium,1024665.0,7900,7900 Receive Cabinets Allocation,1
10200,13258,River Mill,3064,medium,670416.0,7900,7900 Receive Cabinets Allocation,1
10201,13264,Welches Pond,3905,medium,915363.0,7900,7900 Receive Cabinets Allocation,1
10202,13264,Welches Pond,3905,medium,915363.0,7901,7901 Cabinet Delivery Charges,1
10203,13164,Welches Pond,4497,medium,1024665.0,7901,7901 Cabinet Delivery Charges,1
10204,13258,River Mill,3064,medium,670416.0,7901,7901 Cabinet Delivery Charges,1
10205,13164,Welches Pond,4497,medium,1024665.0,7940,7940 Receive Vanity Tops,1
10206,13258,River Mill,3064,medium,670416.0,7940,7940 Receive Vanity Tops,1
10207,13264,Welches Pond,3905,medium,915363.0,7940,7940 Receive Vanity Tops,1
10208,13485,Peninsula,4241,medium,706147.0,8220,8220 Install Fireplace Surround/Mantel,1
10209,13164,Welches Pond,4497,medium,1024665.0,8260,8260 Install Interior Railing,1
10210,13264,Welches Pond,3905,medium,915363.0,8260,8260 Install Interior Railing,1
10211,13468,Governors,2977,medium,869889.0,8390,8390 Stone Interior Fireplace,2
10212,13520,Hailey's Glen,2792,medium,606920.0,8420,8420 1st Paint,1
10213,13468,Governors,2977,medium,869889.0,8460,8460 Install Countertops,1
10214,13349,Peninsula Lakes,2188,medium,442826.0,8460,8460 Install Countertops,1
10215,13423,Governors,2974,medium,884692.0,8460,8460 Install Countertops,1
10216,13468,Governors,2977,medium,869889.0,8462,8462 Install Exterior Countertops,1
10217,13281,Marlin Chase,3558,medium,786910.0,8465,8465 Install Tiled Backsplash,1
10218,13501,Hailey's Glen,2736,medium,694771.0,8540,8540 Install Bath Accessories,1
10219,13394,Peninsula Lakes,2154,medium,474879.0,8545,8545 Install Mirrors,1
10220,13394,Peninsula Lakes,2154,medium,474879.0,8900,8900 Install Closet Shelving,1
10221,13501,Hailey's Glen,2736,medium,694771.0,8900,8900 Install Closet Shelving,1
10222,13030,Peninsula,5546,high,1768191.0,8920,8920 Install Water Heater/1st Trim,1
10223,13349,Peninsula Lakes,2188,medium,442826.0,8920,8920 Install Water Heater/1st Trim,1
10224,13152,Marlin Chase,2710,medium,768496.0,8980,8980 Final Plumbing Inspection,1
10225,13112,Marlin Chase,3171,medium,634940.0,8980,8980 Final Plumbing Inspection,1
10226,13032,Welches Pond,2812,medium,643995.0,8980,8980 Final Plumbing Inspection,1
10227,13476,Durham Farms,4277,medium,750956.0,8980,8980 Final Plumbing Inspection,6
10228,13468,Governors,2977,medium,869889.0,9020,9020 Electric Trim,7
10229,13423,Governors,2974,medium,884692.0,9020,9020 Electric Trim,9
10230,13501,Hailey's Glen,2736,medium,694771.0,9020,9020 Electric Trim,2
10231,13349,Peninsula Lakes,2188,medium,442826.0,9020,9020 Electric Trim,3
10232,13392,Marsh Island,2795,medium,771707.0,9020,9020 Electric Trim,33
10233,13408,NewMarket,3940,medium,889253.0,9060,9060 Final Electric Inspection,1
10234,13349,Peninsula Lakes,2188,medium,442826.0,9100,9100 HVAC Trim / Set Unit,1
10235,13423,Governors,2974,medium,884692.0,9100,9100 HVAC Trim / Set Unit,1
10236,13468,Governors,2977,medium,869889.0,9100,9100 HVAC Trim / Set Unit,11
10237,13253,River Mill,2912,medium,692624.0,9101,9101 HVAC Startup,1
10238,13281,Marlin Chase,3558,medium,786910.0,9101,9101 HVAC Startup,1
10239,13507,Welches Pond,2852,medium,845914.0,9110,9110 Gas Trim,1
10240,13501,Hailey's Glen,2736,medium,694771.0,9260,9260 Structured Wiring Trim,1
10241,13349,Peninsula Lakes,2188,medium,442826.0,9260,9260 Structured Wiring Trim,1
10242,13503,Marsh Island,4307,medium,892519.0,9260,9260 Structured Wiring Trim,1
10243,13030,Peninsula,5546,high,1768191.0,9360,9360 Receive Grill/Firebox,0
10244,13281,Marlin Chase,3558,medium,786910.0,9460,9460 Attic Insulation,1
10245,13137,Marlin Chase,2330,medium,637264.0,9500,9500 Blower Door/Ductblaster,1
10246,13035,Forest Hills,4024,medium,816522.0,9541,9541 Receive N/S Appliance Pkg 1,1
10247,13507,Welches Pond,2852,medium,845914.0,9660,9660 Install Carpet Flooring,1
10248,13253,River Mill,2912,medium,692624.0,9700,9700 Install Hardwood Flooring,1
10249,13136,Marlin Chase,3170,medium,806102.0,9940,9940 Final Inspection,1
10250,13401,Welches Pond,2927,medium,731557.0,9980,9980 Final Cleaning,16
10251,13360,Peninsula Lakes,3496,medium,575090.0,9990,9990 2nd Stage Termite Treatment,1
10252,13120,Marsh Island,4291,medium,851477.0,9990,9990 2nd Stage Termite Treatment,1
10253,13278,Mosaic,2320,medium,818814.0,10061,10061 Install Fence,1
10254,13360,Peninsula Lakes,3496,medium,575090.0,10100,10100 Irrigation Installation,1
10255,13360,Peninsula Lakes,3496,medium,575090.0,10140,10140 Sod Installation,1
10256,13360,Peninsula Lakes,3496,medium,575090.0,10180,10180 Shrub Installation,1
10257,13408,NewMarket,3940,medium,889253.0,10220,10220 Install Mailbox,1
10258,13394,Peninsula Lakes,2154,medium,474879.0,10260,10260 Install House Numbers,1
10259,13501,Hailey's Glen,2736,medium,694771.0,10260,10260 Install House Numbers,1
10260,13091,Marlin Chase,2591,medium,562928.0,10300,10300 Install Driveway,1
10261,13394,Peninsula Lakes,2154,medium,474879.0,10300,10300 Install Driveway,1
10262,13253,River Mill,2912,medium,692624.0,10301,10301 Driveway Apron,1
10263,13349,Peninsula Lakes,2188,medium,442826.0,10301,10301 Driveway Apron,1
10264,13253,River Mill,2912,medium,692624.0,10340,10340 Install Leadwalk & Comm. Sidewalk,1
10265,13349,Peninsula Lakes,2188,medium,442826.0,10340,10340 Install Leadwalk & Comm. Sidewalk,1
10266,13101,Marlin Chase,2461,medium,682900.0,10501,10501 Paint Retouch,1
10267,12993,Peninsula,5996,high,750956.0,10820,10820 Settlement,1
10268,12993,Peninsula,5996,high,750956.0,10888,10888 Release All Retainage,1
10269,12993,Peninsula,5996,high,750956.0,11585,11585 Exterior Paint Retainage,1
10270,12993,Peninsula,5996,high,750956.0,12180,12180 Driveway Retainage,1
10271,12993,Peninsula,5996,high,750956.0,12180,12180.1 Driveway Top Coat Allocation,0
10272,13032,Welches Pond,2812,medium,643995.0,0,appcheck Check Appliances for Damage,1
10273,13442,Walden,4633,medium,656370.0,0,vancheck Check Vanity Tops/Windows for Damage,1
10274,13088,Forest Hills,3580,medium,222544.0,0,vancheck Check Vanity Tops/Windows for Damage,1
10275,13476,Durham Farms,4277,medium,750956.0,0,cabcheck Check Cabinets for Damage,1
10276,13139,Marlin Chase,2554,medium,704067.0,0,cabcheck Check Cabinets for Damage,1
10277,13496,Hailey's Glen,3443,medium,316917.0,0,vancheck Check Vanity Tops/Windows for Damage,1
10278,13476,Durham Farms,4277,medium,750956.0,3060,3060 Foundation Insulation-Crawl,2
10279,13253,River Mill,2912,medium,692624.0,4071,4071 Receive Exterior Decking,1
10280,13529,Governors,1901,medium,787652.0,4590,4590 Install Metal Roofing,1
10281,13462,Peninsula,4787,high,1490269.0,4940,4940 Install Fireplace,1
10282,13258,River Mill,3064,medium,670416.0,4981,4981 Deliver Sinks,1
10283,13339,Peninsula,5583,high,750956.0,5177,5177 Electric Meter Connection,1
10284,13495,Welches Pond,2650,medium,674167.0,6340,6340 Install Overhead Door,19
10285,13253,River Mill,2912,medium,692624.0,6820,6820 Receive Deck Skirting,1
10286,13529,Governors,1901,medium,787652.0,6862,6862 Trellis Construction,1
10287,13485,Peninsula,4241,medium,706147.0,6862,6862 Trellis Construction,1
10288,13030,Peninsula,5546,high,1768191.0,6884,6884 Measure Screen Porch Enclosure,1
10289,13501,Hailey's Glen,2736,medium,694771.0,6885,6885 Install Screen Porch Enclosure,1
10290,13529,Governors,1901,medium,787652.0,7220,7220 Install Deck Skirting/Flower Boxes,1
10291,13520,Hailey's Glen,2792,medium,606920.0,7340,7340 Install Ceramic Tile,2
10292,13520,Hailey's Glen,2792,medium,606920.0,7350,7350 Install Shower Tile,4
10293,13264,Welches Pond,3905,medium,915363.0,7860,7860 Install Interior Trim,2
10294,13164,Welches Pond,4497,medium,1024665.0,7860,7860 Install Interior Trim,2
10295,13507,Welches Pond,2852,medium,845914.0,7861,7861 Interior Trim Punch,3
10296,13520,Hailey's Glen,2792,medium,606920.0,8020,8020 Receive Interior Railing,1
10297,13485,Peninsula,4241,medium,706147.0,8300,8300 Install Cabinets,2
10298,13258,River Mill,3064,medium,670416.0,8300,8300 Install Cabinets,2
10299,13035,Forest Hills,4024,medium,816522.0,8305,8305 Cabinet Punch,1
10300,13485,Peninsula,4241,medium,706147.0,8380,8380 Template Countertops,1
10301,13495,Welches Pond,2650,medium,674167.0,8420,8420 1st Paint,1
10302,13408,NewMarket,3940,medium,889253.0,8465,8465 Install Tiled Backsplash,1
10303,13281,Marlin Chase,3558,medium,786910.0,8540,8540 Install Bath Accessories,1
10304,13394,Peninsula Lakes,2154,medium,474879.0,8540,8540 Install Bath Accessories,1
10305,13281,Marlin Chase,3558,medium,786910.0,8545,8545 Install Mirrors,1
10306,13258,River Mill,3064,medium,670416.0,8579,8579 Template Shower Enclosure,1
10307,13281,Marlin Chase,3558,medium,786910.0,8900,8900 Install Closet Shelving,1
10308,13468,Governors,2977,medium,869889.0,8920,8920 Install Water Heater/1st Trim,1
10309,13423,Governors,2974,medium,884692.0,8920,8920 Install Water Heater/1st Trim,1
10310,13507,Welches Pond,2852,medium,845914.0,8940,8940 Plumbing Trim,1
10311,13032,Welches Pond,2812,medium,643995.0,9060,9060 Final Electric Inspection,1
10312,13394,Peninsula Lakes,2154,medium,474879.0,9060,9060 Final Electric Inspection,1
10313,13394,Peninsula Lakes,2154,medium,474879.0,9101,9101 HVAC Startup,3
10314,13349,Peninsula Lakes,2188,medium,442826.0,9101,9101 HVAC Startup,3
10315,13529,Governors,1901,medium,787652.0,9140,9140 2nd Stage Air Seal,1
10316,13423,Governors,2974,medium,884692.0,9260,9260 Structured Wiring Trim,1
10317,13152,Marlin Chase,2710,medium,768496.0,9500,9500 Blower Door/Ductblaster,1
10318,13113,Marlin Chase,2814,medium,750956.0,9500,9500 Blower Door/Ductblaster,1
10319,13485,Peninsula,4241,medium,706147.0,9540,9540 Rec. GE Appliance Pkg1 Allocation,1
10320,13485,Peninsula,4241,medium,706147.0,9620,9620 Install Appliances,1
10321,13253,River Mill,2912,medium,692624.0,9620,9620 Install Appliances,1
10322,13501,Hailey's Glen,2736,medium,694771.0,9660,9660 Install Carpet Flooring,1
10323,13253,River Mill,2912,medium,692624.0,9660,9660 Install Carpet Flooring,1
10324,13394,Peninsula Lakes,2154,medium,474879.0,9700,9700 Install Hardwood Flooring,1
10325,13476,Durham Farms,4277,medium,750956.0,9740,9740 Fireplace Start Up,5
10326,13507,Welches Pond,2852,medium,845914.0,9740,9740 Fireplace Start Up,3
10327,13035,Forest Hills,4024,medium,816522.0,9755,9755 Rec. GE Appliance Pkg2 Allocation,1
10328,13277,Mosaic,1704,medium,561869.0,9755,9755 Rec. GE Appliance Pkg2 Allocation,1
10329,13278,Mosaic,2320,medium,818814.0,9755,9755 Rec. GE Appliance Pkg2 Allocation,1
10330,13032,Welches Pond,2812,medium,643995.0,9755,9755 Rec. GE Appliance Pkg2 Allocation,1
10331,13281,Marlin Chase,3558,medium,786910.0,9820,9820 Install Gutters,1
10332,13030,Peninsula,5546,high,1768191.0,9820,9820 Install Gutters,1
10333,13440,Marlin Chase,3067,medium,714189.0,9940,9940 Final Inspection,1
10334,13139,Marlin Chase,2554,medium,704067.0,9940,9940 Final Inspection,1
10335,13120,Marsh Island,4291,medium,851477.0,9980,9980 Final Cleaning,1
10336,13032,Welches Pond,2812,medium,643995.0,9980,9980 Final Cleaning,1
10337,13032,Welches Pond,2812,medium,643995.0,10020,10020 Final Grade,1
10338,13507,Welches Pond,2852,medium,845914.0,10140,10140 Sod Installation,1
10339,13101,Marlin Chase,2461,medium,682900.0,10140,10140 Sod Installation,2
10340,13507,Welches Pond,2852,medium,845914.0,10180,10180 Shrub Installation,1
10341,13281,Marlin Chase,3558,medium,786910.0,10260,10260 Install House Numbers,1
10342,13253,River Mill,2912,medium,692624.0,10300,10300 Install Driveway,1
10343,13349,Peninsula Lakes,2188,medium,442826.0,10300,10300 Install Driveway,2
10344,13423,Governors,2974,medium,884692.0,10301,10301 Driveway Apron,3
10345,13258,River Mill,3064,medium,670416.0,10301,10301 Driveway Apron,1
10346,13145,Marlin Chase,3204,medium,841553.0,10380,10380 As Built Survey,1
10347,13137,Marlin Chase,2330,medium,637264.0,10380,10380 As Built Survey,1
10348,13030,Peninsula,5546,high,1768191.0,10500,10500 Paint 2,9
10349,13032,Welches Pond,2812,medium,643995.0,10501,10501 Paint Retouch,1
10350,13032,Welches Pond,2812,medium,643995.0,10620,10620 Punch Out Allocation,1
10351,13120,Marsh Island,4291,medium,851477.0,10660,10660 Quality Inspection,1
10352,13462,Peninsula,4787,high,1490269.0,10940,10940 Framing Retainage,1
10353,13397,Peninsula,5533,high,750956.0,10940,10940 Framing Retainage,1
10354,12993,Peninsula,5996,high,750956.0,99999,99999 HOME COMPLETE,1
10355,13440,Marlin Chase,3067,medium,714189.0,0,appcheck Check Appliances for Damage,1
10356,13520,Hailey's Glen,2792,medium,606920.0,4981,4981 Deliver Sinks,1
10357,13392,Marsh Island,2795,medium,771707.0,6340,6340 Install Overhead Door,1
10358,13501,Hailey's Glen,2736,medium,694771.0,6381,6381 Drywall Punch,1
10359,13281,Marlin Chase,3558,medium,786910.0,6885,6885 Install Screen Porch Enclosure,1
10360,13394,Peninsula Lakes,2154,medium,474879.0,6887,6887 Install Outdoor Trash/Shower Encl.,1
10361,13349,Peninsula Lakes,2188,medium,442826.0,6887,6887 Install Outdoor Trash/Shower Encl.,1
10362,13520,Hailey's Glen,2792,medium,606920.0,7300,7300 Receive Interior Trim,1
10363,13495,Welches Pond,2650,medium,674167.0,7340,7340 Install Ceramic Tile,14
10364,13495,Welches Pond,2650,medium,674167.0,7350,7350 Install Shower Tile,14
10365,13495,Welches Pond,2650,medium,674167.0,7380,7380 Install Vinyl Floors,14
10366,13520,Hailey's Glen,2792,medium,606920.0,7700,7700 Receive Interior Doors,1
10367,13476,Durham Farms,4277,medium,750956.0,7825,7825 Crawl Poly,1
10368,13501,Hailey's Glen,2736,medium,694771.0,7861,7861 Interior Trim Punch,1
10369,13253,River Mill,2912,medium,692624.0,7861,7861 Interior Trim Punch,1
10370,13520,Hailey's Glen,2792,medium,606920.0,7862,7862 Receive Cabinet Hardware Allocation,1
10371,13495,Welches Pond,2650,medium,674167.0,8220,8220 Install Fireplace Surround/Mantel,4
10372,13520,Hailey's Glen,2792,medium,606920.0,8260,8260 Install Interior Railing,1
10373,13264,Welches Pond,3905,medium,915363.0,8300,8300 Install Cabinets,2
10374,13164,Welches Pond,4497,medium,1024665.0,8300,8300 Install Cabinets,2
10375,13030,Peninsula,5546,high,1768191.0,8465,8465 Install Tiled Backsplash,1
10376,13253,River Mill,2912,medium,692624.0,8465,8465 Install Tiled Backsplash,1
10377,13423,Governors,2974,medium,884692.0,8579,8579 Template Shower Enclosure,1
10378,13501,Hailey's Glen,2736,medium,694771.0,8920,8920 Install Water Heater/1st Trim,1
10379,13281,Marlin Chase,3558,medium,786910.0,8920,8920 Install Water Heater/1st Trim,1
10380,13501,Hailey's Glen,2736,medium,694771.0,8940,8940 Plumbing Trim,1
10381,13253,River Mill,2912,medium,692624.0,8940,8940 Plumbing Trim,1
10382,13507,Welches Pond,2852,medium,845914.0,8980,8980 Final Plumbing Inspection,14
10383,13442,Walden,4633,medium,656370.0,9020,9020 Electric Trim,2
10384,13501,Hailey's Glen,2736,medium,694771.0,9060,9060 Final Electric Inspection,1
10385,13442,Walden,4633,medium,656370.0,9100,9100 HVAC Trim / Set Unit,1
10386,13468,Governors,2977,medium,869889.0,9101,9101 HVAC Startup,4
10387,13423,Governors,2974,medium,884692.0,9110,9110 Gas Trim,4
10388,13339,Peninsula,5583,high,750956.0,9140,9140 2nd Stage Air Seal,1
10389,13468,Governors,2977,medium,869889.0,9260,9260 Structured Wiring Trim,1
10390,13442,Walden,4633,medium,656370.0,9260,9260 Structured Wiring Trim,1
10391,13529,Governors,1901,medium,787652.0,9460,9460 Attic Insulation,1
10392,13264,Welches Pond,3905,medium,915363.0,9540,9540 Rec. GE Appliance Pkg1 Allocation,9
10393,13264,Welches Pond,3905,medium,915363.0,9620,9620 Install Appliances,1
10394,13476,Durham Farms,4277,medium,750956.0,9660,9660 Install Carpet Flooring,1
10395,13394,Peninsula Lakes,2154,medium,474879.0,9660,9660 Install Carpet Flooring,1
10396,13503,Marsh Island,4307,medium,892519.0,9790,9790 Basement Blanket Insulation,1
10397,13392,Marsh Island,2795,medium,771707.0,9790,9790 Basement Blanket Insulation,1
10398,13360,Peninsula Lakes,3496,medium,575090.0,9985,9985 Final Clean 2,1
10399,13120,Marsh Island,4291,medium,851477.0,9985,9985 Final Clean 2,1
10400,13032,Welches Pond,2812,medium,643995.0,9990,9990 2nd Stage Termite Treatment,1
10401,13032,Welches Pond,2812,medium,643995.0,10100,10100 Irrigation Installation,1
10402,13139,Marlin Chase,2554,medium,704067.0,10100,10100 Irrigation Installation,1
10403,13440,Marlin Chase,3067,medium,714189.0,10140,10140 Sod Installation,1
10404,13440,Marlin Chase,3067,medium,714189.0,10180,10180 Shrub Installation,1
10405,13258,River Mill,3064,medium,670416.0,10300,10300 Install Driveway,1
10406,13113,Marlin Chase,2814,medium,750956.0,10380,10380 As Built Survey,1
10407,13360,Peninsula Lakes,3496,medium,575090.0,10420,10420 Powerwash,1
10408,13101,Marlin Chase,2461,medium,682900.0,0,appcheck Check Appliances for Damage,1
10409,13394,Peninsula Lakes,2154,medium,474879.0,0,cabcheck Check Cabinets for Damage,1
10410,13339,Peninsula,5583,high,750956.0,0,GrillOrd Order Grill/Firebox,1
10411,13349,Peninsula Lakes,2188,medium,442826.0,0,cabcheck Check Cabinets for Damage,1
10412,13281,Marlin Chase,3558,medium,786910.0,0,cabcheck Check Cabinets for Damage,1
10413,13278,Mosaic,2320,medium,818814.0,0,appcheck Check Appliances for Damage,1
10414,13503,Marsh Island,4307,medium,892519.0,4461,4461 Install Gas Lateral,1
10415,13392,Marsh Island,2795,medium,771707.0,4461,4461 Install Gas Lateral,1
10416,13164,Welches Pond,4497,medium,1024665.0,4590,4590 Install Metal Roofing,1
10417,13495,Welches Pond,2650,medium,674167.0,4981,4981 Deliver Sinks,1
10418,13253,River Mill,2912,medium,692624.0,6381,6381 Drywall Punch,2
10419,13164,Welches Pond,4497,medium,1024665.0,6391,6391 Install Gas Meter,1
10420,13164,Welches Pond,4497,medium,1024665.0,6862,6862 Trellis Construction,1
10421,13496,Hailey's Glen,3443,medium,316917.0,7180,7180 Install Exterior Railings,1
10422,13529,Governors,1901,medium,787652.0,7180,7180 Install Exterior Railings,1
10423,13030,Peninsula,5546,high,1768191.0,7180,7180 Install Exterior Railings,2
10424,13164,Welches Pond,4497,medium,1024665.0,7220,7220 Install Deck Skirting/Flower Boxes,1
10425,13495,Welches Pond,2650,medium,674167.0,7300,7300 Receive Interior Trim,1
10426,13495,Welches Pond,2650,medium,674167.0,7304,7304 Receive Goodie Box,1
10427,13495,Welches Pond,2650,medium,674167.0,7700,7700 Receive Interior Doors,1
10428,13281,Marlin Chase,3558,medium,786910.0,7825,7825 Crawl Poly,1
10429,13520,Hailey's Glen,2792,medium,606920.0,7860,7860 Install Interior Trim,3
10430,13394,Peninsula Lakes,2154,medium,474879.0,7861,7861 Interior Trim Punch,1
10431,13495,Welches Pond,2650,medium,674167.0,7862,7862 Receive Cabinet Hardware Allocation,1
10432,13495,Welches Pond,2650,medium,674167.0,7866,7866 Receive Door Hardware,1
10433,13495,Welches Pond,2650,medium,674167.0,7900,7900 Receive Cabinets Allocation,1
10434,13495,Welches Pond,2650,medium,674167.0,7901,7901 Cabinet Delivery Charges,1
10435,13495,Welches Pond,2650,medium,674167.0,7940,7940 Receive Vanity Tops,1
10436,13495,Welches Pond,2650,medium,674167.0,8020,8020 Receive Interior Railing,1
10437,13520,Hailey's Glen,2792,medium,606920.0,8220,8220 Install Fireplace Surround/Mantel,1
10438,13088,Forest Hills,3580,medium,222544.0,8380,8380 Template Countertops,1
10439,13258,River Mill,3064,medium,670416.0,8380,8380 Template Countertops,1
10440,13501,Hailey's Glen,2736,medium,694771.0,8390,8390 Stone Interior Fireplace,3
10441,13442,Walden,4633,medium,656370.0,8460,8460 Install Countertops,3
10442,13423,Governors,2974,medium,884692.0,8465,8465 Install Tiled Backsplash,3
10443,13476,Durham Farms,4277,medium,750956.0,8540,8540 Install Bath Accessories,1
10444,13468,Governors,2977,medium,869889.0,8540,8540 Install Bath Accessories,1
10445,13349,Peninsula Lakes,2188,medium,442826.0,8540,8540 Install Bath Accessories,1
10446,13349,Peninsula Lakes,2188,medium,442826.0,8545,8545 Install Mirrors,1
10447,13468,Governors,2977,medium,869889.0,8545,8545 Install Mirrors,1
10448,13468,Governors,2977,medium,869889.0,8900,8900 Install Closet Shelving,6
10449,13349,Peninsula Lakes,2188,medium,442826.0,8900,8900 Install Closet Shelving,1
10450,13408,NewMarket,3940,medium,889253.0,8940,8940 Plumbing Trim,1
10451,13501,Hailey's Glen,2736,medium,694771.0,8980,8980 Final Plumbing Inspection,1
10452,13035,Forest Hills,4024,medium,816522.0,8980,8980 Final Plumbing Inspection,1
10453,13394,Peninsula Lakes,2154,medium,474879.0,8980,8980 Final Plumbing Inspection,1
10454,13258,River Mill,3064,medium,670416.0,9020,9020 Electric Trim,2
10455,13281,Marlin Chase,3558,medium,786910.0,9060,9060 Final Electric Inspection,1
10456,13258,River Mill,3064,medium,670416.0,9100,9100 HVAC Trim / Set Unit,2
10457,13394,Peninsula Lakes,2154,medium,474879.0,9110,9110 Gas Trim,1
10458,13501,Hailey's Glen,2736,medium,694771.0,9110,9110 Gas Trim,1
10459,13253,River Mill,2912,medium,692624.0,9110,9110 Gas Trim,1
10460,13032,Welches Pond,2812,medium,643995.0,9500,9500 Blower Door/Ductblaster,1
10461,13120,Marsh Island,4291,medium,851477.0,9500,9500 Blower Door/Ductblaster,1
10462,13258,River Mill,3064,medium,670416.0,9620,9620 Install Appliances,1
10463,13349,Peninsula Lakes,2188,medium,442826.0,9700,9700 Install Hardwood Flooring,1
10464,13349,Peninsula Lakes,2188,medium,442826.0,9820,9820 Install Gutters,1
10465,13520,Hailey's Glen,2792,medium,606920.0,9820,9820 Install Gutters,1
10466,13140,Marlin Chase,2824,medium,766881.0,9940,9940 Final Inspection,1
10467,13101,Marlin Chase,2461,medium,682900.0,10020,10020 Final Grade,1
10468,13476,Durham Farms,4277,medium,750956.0,10060,10060 Top Soil /Load,1
10469,13120,Marsh Island,4291,medium,851477.0,10100,10100 Irrigation Installation,1
10470,13278,Mosaic,2320,medium,818814.0,10100,10100 Irrigation Installation,1
10471,13164,Welches Pond,4497,medium,1024665.0,10110,10110 Hardscape Installation,5
10472,13139,Marlin Chase,2554,medium,704067.0,10140,10140 Sod Installation,1
10473,13145,Marlin Chase,3204,medium,841553.0,10140,10140 Sod Installation,1
10474,13032,Welches Pond,2812,medium,643995.0,10140,10140 Sod Installation,1
10475,13032,Welches Pond,2812,medium,643995.0,10180,10180 Shrub Installation,1
10476,13101,Marlin Chase,2461,medium,682900.0,10180,10180 Shrub Installation,1
10477,13139,Marlin Chase,2554,medium,704067.0,10180,10180 Shrub Installation,1
10478,13145,Marlin Chase,3204,medium,841553.0,10180,10180 Shrub Installation,1
10479,13408,NewMarket,3940,medium,889253.0,10180,10180 Shrub Installation,1
10480,13349,Peninsula Lakes,2188,medium,442826.0,10260,10260 Install House Numbers,1
10481,13468,Governors,2977,medium,869889.0,10260,10260 Install House Numbers,1
10482,13423,Governors,2974,medium,884692.0,10340,10340 Install Leadwalk & Comm. Sidewalk,1
10483,13349,Peninsula Lakes,2188,medium,442826.0,10380,10380 As Built Survey,1
10484,13136,Marlin Chase,3170,medium,806102.0,10380,10380 As Built Survey,1
10485,13394,Peninsula Lakes,2154,medium,474879.0,10380,10380 As Built Survey,1
10486,13485,Peninsula,4241,medium,706147.0,10460,10460 Drywall Touch Up,2
10487,13164,Welches Pond,4497,medium,1024665.0,10460,10460 Drywall Touch Up,2
10488,13264,Welches Pond,3905,medium,915363.0,10460,10460 Drywall Touch Up,2
10489,13360,Peninsula Lakes,3496,medium,575090.0,10660,10660 Quality Inspection,1
10490,13175,Peninsula Lakes,2245,low,567645.0,10780,10780 Customer Walk,1
10491,13092,Marlin Chase,2079,medium,433351.0,0,appcheck Check Appliances for Damage,1
10492,13468,Governors,2977,medium,869889.0,0,cabcheck Check Cabinets for Damage,1
10493,13113,Marlin Chase,2814,medium,750956.0,0,cabcheck Check Cabinets for Damage,1
10494,13507,Welches Pond,2852,medium,845914.0,0,cabcheck Check Cabinets for Damage,1
10495,13164,Welches Pond,4497,medium,1024665.0,4542,4542 Measure/Order Window Coverings,1
10496,13496,Hailey's Glen,3443,medium,316917.0,4981,4981 Deliver Sinks,1
10497,13507,Welches Pond,2852,medium,845914.0,6381,6381 Drywall Punch,2
10498,13394,Peninsula Lakes,2154,medium,474879.0,6381,6381 Drywall Punch,1
10499,13253,River Mill,2912,medium,692624.0,6781,6781 Receive Column Wrap/Flower Bx/Pediment,1
10500,13035,Forest Hills,4024,medium,816522.0,6885,6885 Install Screen Porch Enclosure,1
10501,13468,Governors,2977,medium,869889.0,7825,7825 Crawl Poly,1
10502,13495,Welches Pond,2650,medium,674167.0,7860,7860 Install Interior Trim,2
10503,13349,Peninsula Lakes,2188,medium,442826.0,7861,7861 Interior Trim Punch,1
10504,13278,Mosaic,2320,medium,818814.0,8305,8305 Cabinet Punch,2
10505,13277,Mosaic,1704,medium,561869.0,8305,8305 Cabinet Punch,1
10506,13264,Welches Pond,3905,medium,915363.0,8380,8380 Template Countertops,1
10507,13164,Welches Pond,4497,medium,1024665.0,8380,8380 Template Countertops,1
10508,13529,Governors,1901,medium,787652.0,8420,8420 1st Paint,1
10509,13503,Marsh Island,4307,medium,892519.0,8460,8460 Install Countertops,1
10510,13349,Peninsula Lakes,2188,medium,442826.0,8465,8465 Install Tiled Backsplash,1
10511,13468,Governors,2977,medium,869889.0,8465,8465 Install Tiled Backsplash,1
10512,13030,Peninsula,5546,high,1768191.0,8579,8579 Template Shower Enclosure,1
10513,13349,Peninsula Lakes,2188,medium,442826.0,8940,8940 Plumbing Trim,1
10514,13394,Peninsula Lakes,2154,medium,474879.0,8940,8940 Plumbing Trim,1
10515,13408,NewMarket,3940,medium,889253.0,8980,8980 Final Plumbing Inspection,1
10516,13030,Peninsula,5546,high,1768191.0,9020,9020 Electric Trim,6
10517,13349,Peninsula Lakes,2188,medium,442826.0,9060,9060 Final Electric Inspection,1
10518,13442,Walden,4633,medium,656370.0,9060,9060 Final Electric Inspection,1
10519,13091,Marlin Chase,2591,medium,562928.0,9060,9060 Final Electric Inspection,1
10520,13030,Peninsula,5546,high,1768191.0,9100,9100 HVAC Trim / Set Unit,1
10521,13423,Governors,2974,medium,884692.0,9101,9101 HVAC Startup,1
10522,13442,Walden,4633,medium,656370.0,9101,9101 HVAC Startup,1
10523,13468,Governors,2977,medium,869889.0,9110,9110 Gas Trim,4
10524,13258,River Mill,3064,medium,670416.0,9260,9260 Structured Wiring Trim,1
10525,13485,Peninsula,4241,medium,706147.0,9460,9460 Attic Insulation,1
10526,13164,Welches Pond,4497,medium,1024665.0,9540,9540 Rec. GE Appliance Pkg1 Allocation,1
10527,13349,Peninsula Lakes,2188,medium,442826.0,9660,9660 Install Carpet Flooring,1
10528,13281,Marlin Chase,3558,medium,786910.0,9700,9700 Install Hardwood Flooring,1
10529,13468,Governors,2977,medium,869889.0,9700,9700 Install Hardwood Flooring,2
10530,13253,River Mill,2912,medium,692624.0,9740,9740 Fireplace Start Up,1
10531,13394,Peninsula Lakes,2154,medium,474879.0,9820,9820 Install Gutters,1
10532,13137,Marlin Chase,2330,medium,637264.0,9940,9940 Final Inspection,1
10533,13032,Welches Pond,2812,medium,643995.0,9940,9940 Final Inspection,1
10534,13476,Durham Farms,4277,medium,750956.0,9980,9980 Final Cleaning,1
10535,13101,Marlin Chase,2461,medium,682900.0,10100,10100 Irrigation Installation,1
10536,13120,Marsh Island,4291,medium,851477.0,10140,10140 Sod Installation,1
10537,13136,Marlin Chase,3170,medium,806102.0,10180,10180 Shrub Installation,1
10538,13120,Marsh Island,4291,medium,851477.0,10180,10180 Shrub Installation,1
10539,13423,Governors,2974,medium,884692.0,10300,10300 Install Driveway,1
10540,13468,Governors,2977,medium,869889.0,10301,10301 Driveway Apron,3
10541,13468,Governors,2977,medium,869889.0,10340,10340 Install Leadwalk & Comm. Sidewalk,3
10542,13020,Peninsula Lakes,2100,low,578095.0,10780,10780 Customer Walk,1
10543,13136,Marlin Chase,3170,medium,806102.0,0,appcheck Check Appliances for Damage,1
10544,13035,Forest Hills,4024,medium,816522.0,0,appcheck Check Appliances for Damage,1
10545,13137,Marlin Chase,2330,medium,637264.0,0,cabcheck Check Cabinets for Damage,1
10546,13471,Cardinal Grove,2233,medium,517387.0,0,vancheck Check Vanity Tops/Windows for Damage,1
10547,13088,Forest Hills,3580,medium,222544.0,4070,4070 Receive Exterior Deck Material,1
10548,13035,Forest Hills,4024,medium,816522.0,4265,4265 Receive Window Screens,1
10549,13485,Peninsula,4241,medium,706147.0,4590,4590 Install Metal Roofing,1
10550,13253,River Mill,2912,medium,692624.0,4590,4590 Install Metal Roofing,1
10551,13529,Governors,1901,medium,787652.0,5177,5177 Electric Meter Connection,1
10552,13503,Marsh Island,4307,medium,892519.0,5177,5177 Electric Meter Connection,1
10553,13030,Peninsula,5546,high,1768191.0,6340,6340 Install Overhead Door,1
10554,13349,Peninsula Lakes,2188,medium,442826.0,6381,6381 Drywall Punch,1
10555,13503,Marsh Island,4307,medium,892519.0,6390,6390 Schedule Gas Meter,1
10556,13258,River Mill,3064,medium,670416.0,6781,6781 Receive Column Wrap/Flower Bx/Pediment,1
10557,13035,Forest Hills,4024,medium,816522.0,6820,6820 Receive Deck Skirting,1
10558,13030,Peninsula,5546,high,1768191.0,6940,6940 Install Elevator,18
10559,13496,Hailey's Glen,3443,medium,316917.0,7140,7140 Exterior Painting,1
10560,13485,Peninsula,4241,medium,706147.0,7180,7180 Install Exterior Railings,1
10561,13520,Hailey's Glen,2792,medium,606920.0,7304,7304 Receive Goodie Box,1
10562,13529,Governors,1901,medium,787652.0,7340,7340 Install Ceramic Tile,11
10563,13529,Governors,1901,medium,787652.0,7350,7350 Install Shower Tile,6
10564,13253,River Mill,2912,medium,692624.0,7825,7825 Crawl Poly,1
10565,13468,Governors,2977,medium,869889.0,7861,7861 Interior Trim Punch,1
10566,13520,Hailey's Glen,2792,medium,606920.0,7866,7866 Receive Door Hardware,1
10567,13520,Hailey's Glen,2792,medium,606920.0,7900,7900 Receive Cabinets Allocation,1
10568,13520,Hailey's Glen,2792,medium,606920.0,7901,7901 Cabinet Delivery Charges,1
10569,13520,Hailey's Glen,2792,medium,606920.0,7940,7940 Receive Vanity Tops,1
10570,13529,Governors,1901,medium,787652.0,8220,8220 Install Fireplace Surround/Mantel,1
10571,13495,Welches Pond,2650,medium,674167.0,8300,8300 Install Cabinets,2
10572,13520,Hailey's Glen,2792,medium,606920.0,8300,8300 Install Cabinets,6
10573,13339,Peninsula,5583,high,750956.0,8420,8420 1st Paint,1
10574,13496,Hailey's Glen,3443,medium,316917.0,8460,8460 Install Countertops,1
10575,13423,Governors,2974,medium,884692.0,8540,8540 Install Bath Accessories,1
10576,13442,Walden,4633,medium,656370.0,8540,8540 Install Bath Accessories,1
10577,13442,Walden,4633,medium,656370.0,8545,8545 Install Mirrors,1
10578,13423,Governors,2974,medium,884692.0,8545,8545 Install Mirrors,1
10579,13501,Hailey's Glen,2736,medium,694771.0,8545,8545 Install Mirrors,1
10580,13476,Durham Farms,4277,medium,750956.0,8545,8545 Install Mirrors,1
10581,13468,Governors,2977,medium,869889.0,8579,8579 Template Shower Enclosure,4
10582,13520,Hailey's Glen,2792,medium,606920.0,8579,8579 Template Shower Enclosure,1
10583,13423,Governors,2974,medium,884692.0,8580,8580 Install Shower Enclosures,13
10584,13442,Walden,4633,medium,656370.0,8580,8580 Install Shower Enclosures,5
10585,13442,Walden,4633,medium,656370.0,8900,8900 Install Closet Shelving,1
10586,13423,Governors,2974,medium,884692.0,8900,8900 Install Closet Shelving,1
10587,13253,River Mill,2912,medium,692624.0,8920,8920 Install Water Heater/1st Trim,1
10588,13349,Peninsula Lakes,2188,medium,442826.0,8980,8980 Final Plumbing Inspection,1
10589,13496,Hailey's Glen,3443,medium,316917.0,9020,9020 Electric Trim,2
10590,13496,Hailey's Glen,3443,medium,316917.0,9100,9100 HVAC Trim / Set Unit,1
10591,13349,Peninsula Lakes,2188,medium,442826.0,9110,9110 Gas Trim,1
10592,13388,Marsh Island,5848,high,750956.0,9140,9140 2nd Stage Air Seal,1
10593,13360,Peninsula Lakes,3496,medium,575090.0,9500,9500 Blower Door/Ductblaster,1
10594,13495,Welches Pond,2650,medium,674167.0,9540,9540 Rec. GE Appliance Pkg1 Allocation,11
10595,13496,Hailey's Glen,3443,medium,316917.0,9540,9540 Rec. GE Appliance Pkg1 Allocation,1
10596,13520,Hailey's Glen,2792,medium,606920.0,9540,9540 Rec. GE Appliance Pkg1 Allocation,1
10597,13495,Welches Pond,2650,medium,674167.0,9620,9620 Install Appliances,1
10598,13281,Marlin Chase,3558,medium,786910.0,9660,9660 Install Carpet Flooring,1
10599,13468,Governors,2977,medium,869889.0,9740,9740 Fireplace Start Up,1
10600,13476,Durham Farms,4277,medium,750956.0,9755,9755 Rec. GE Appliance Pkg2 Allocation,1
10601,13503,Marsh Island,4307,medium,892519.0,9820,9820 Install Gutters,1
10602,13035,Forest Hills,4024,medium,816522.0,9910,9910 Utility Grade,1
10603,13476,Durham Farms,4277,medium,750956.0,9940,9940 Final Inspection,1
10604,13394,Peninsula Lakes,2154,medium,474879.0,9980,9980 Final Cleaning,1
10605,13253,River Mill,2912,medium,692624.0,9980,9980 Final Cleaning,1
10606,13507,Welches Pond,2852,medium,845914.0,9980,9980 Final Cleaning,1
10607,13032,Welches Pond,2812,medium,643995.0,9985,9985 Final Clean 2,1
10608,13440,Marlin Chase,3067,medium,714189.0,9985,9985 Final Clean 2,1
10609,13476,Durham Farms,4277,medium,750956.0,9985,9985 Final Clean 2,1
10610,13394,Peninsula Lakes,2154,medium,474879.0,10020,10020 Final Grade,1
10611,13349,Peninsula Lakes,2188,medium,442826.0,10020,10020 Final Grade,1
10612,13278,Mosaic,2320,medium,818814.0,10020,10020 Final Grade,1
10613,13136,Marlin Chase,3170,medium,806102.0,10140,10140 Sod Installation,1
10614,13442,Walden,4633,medium,656370.0,10260,10260 Install House Numbers,1
10615,13423,Governors,2974,medium,884692.0,10260,10260 Install House Numbers,1
10616,13468,Governors,2977,medium,869889.0,10300,10300 Install Driveway,1
10617,13423,Governors,2974,medium,884692.0,10380,10380 As Built Survey,6
10618,13501,Hailey's Glen,2736,medium,694771.0,10380,10380 As Built Survey,1
10619,13091,Marlin Chase,2591,medium,562928.0,10380,10380 As Built Survey,1
10620,13440,Marlin Chase,3067,medium,714189.0,10420,10420 Powerwash,1
10621,13032,Welches Pond,2812,medium,643995.0,10420,10420 Powerwash,1
10622,13485,Peninsula,4241,medium,706147.0,10500,10500 Paint 2,6
10623,13164,Welches Pond,4497,medium,1024665.0,10500,10500 Paint 2,4
10624,13264,Welches Pond,3905,medium,915363.0,10500,10500 Paint 2,4
10625,13035,Forest Hills,4024,medium,816522.0,10501,10501 Paint Retouch,1
10626,13476,Durham Farms,4277,medium,750956.0,10501,10501 Paint Retouch,1
10627,13476,Durham Farms,4277,medium,750956.0,10620,10620 Punch Out Allocation,1
10628,13476,Durham Farms,4277,medium,750956.0,0,appcheck Check Appliances for Damage,1
10629,13139,Marlin Chase,2554,medium,704067.0,0,appcheck Check Appliances for Damage,1
10630,13140,Marlin Chase,2824,medium,766881.0,0,cabcheck Check Cabinets for Damage,1
10631,13423,Governors,2974,medium,884692.0,0,cabcheck Check Cabinets for Damage,1
10632,13253,River Mill,2912,medium,692624.0,0,cabcheck Check Cabinets for Damage,1
10633,13442,Walden,4633,medium,656370.0,0,cabcheck Check Cabinets for Damage,1
10634,13503,Marsh Island,4307,medium,892519.0,0,cabcheck Check Cabinets for Damage,1
10635,13088,Forest Hills,3580,medium,222544.0,4100,4100 Exterior Deck Framing,9
10636,13278,Mosaic,2320,medium,818814.0,4265,4265 Receive Window Screens,1
10637,13277,Mosaic,1704,medium,561869.0,4265,4265 Receive Window Screens,1
10638,13462,Peninsula,4787,high,1490269.0,4665,4665 Elevator Rough,2
10639,13529,Governors,1901,medium,787652.0,4981,4981 Deliver Sinks,1
10640,13397,Peninsula,5533,high,750956.0,5177,5177 Electric Meter Connection,1
10641,13468,Governors,2977,medium,869889.0,6381,6381 Drywall Punch,1
10642,13388,Marsh Island,5848,high,750956.0,6884,6884 Measure Screen Porch Enclosure,1
10643,13264,Welches Pond,3905,medium,915363.0,6885,6885 Install Screen Porch Enclosure,16
10644,13035,Forest Hills,4024,medium,816522.0,7220,7220 Install Deck Skirting/Flower Boxes,1
10645,13529,Governors,1901,medium,787652.0,7300,7300 Receive Interior Trim,1
10646,13529,Governors,1901,medium,787652.0,7304,7304 Receive Goodie Box,1
10647,13529,Governors,1901,medium,787652.0,7700,7700 Receive Interior Doors,1
10648,13423,Governors,2974,medium,884692.0,7825,7825 Crawl Poly,1
10649,13281,Marlin Chase,3558,medium,786910.0,7861,7861 Interior Trim Punch,1
10650,13408,NewMarket,3940,medium,889253.0,7861,7861 Interior Trim Punch,1
10651,13529,Governors,1901,medium,787652.0,7862,7862 Receive Cabinet Hardware Allocation,1
10652,13529,Governors,1901,medium,787652.0,7866,7866 Receive Door Hardware,1
10653,13529,Governors,1901,medium,787652.0,7900,7900 Receive Cabinets Allocation,1
10654,13529,Governors,1901,medium,787652.0,7901,7901 Cabinet Delivery Charges,1
10655,13529,Governors,1901,medium,787652.0,7940,7940 Receive Vanity Tops,1
10656,13529,Governors,1901,medium,787652.0,8020,8020 Receive Interior Railing,1
10657,13503,Marsh Island,4307,medium,892519.0,8465,8465 Install Tiled Backsplash,1
10658,13360,Peninsula Lakes,3496,medium,575090.0,8580,8580 Install Shower Enclosures,1
10659,13476,Durham Farms,4277,medium,750956.0,8580,8580 Install Shower Enclosures,1
10660,13476,Durham Farms,4277,medium,750956.0,8900,8900 Install Closet Shelving,1
10661,13503,Marsh Island,4307,medium,892519.0,8920,8920 Install Water Heater/1st Trim,1
10662,13281,Marlin Chase,3558,medium,786910.0,8940,8940 Plumbing Trim,1
10663,13468,Governors,2977,medium,869889.0,8940,8940 Plumbing Trim,1
10664,13360,Peninsula Lakes,3496,medium,575090.0,8980,8980 Final Plumbing Inspection,1
10665,13503,Marsh Island,4307,medium,892519.0,9060,9060 Final Electric Inspection,1
10666,13503,Marsh Island,4307,medium,892519.0,9101,9101 HVAC Startup,1
10667,13408,NewMarket,3940,medium,889253.0,9101,9101 HVAC Startup,1
10668,13258,River Mill,3064,medium,670416.0,9101,9101 HVAC Startup,1
10669,13392,Marsh Island,2795,medium,771707.0,9260,9260 Structured Wiring Trim,1
10670,13496,Hailey's Glen,3443,medium,316917.0,9260,9260 Structured Wiring Trim,1
10671,13392,Marsh Island,2795,medium,771707.0,9380,9380 Install Irrigation Well,1
10672,13468,Governors,2977,medium,869889.0,9660,9660 Install Carpet Flooring,1
10673,13442,Walden,4633,medium,656370.0,9700,9700 Install Hardwood Flooring,1
10674,13423,Governors,2974,medium,884692.0,9740,9740 Fireplace Start Up,1
10675,13501,Hailey's Glen,2736,medium,694771.0,9740,9740 Fireplace Start Up,1
10676,13401,Welches Pond,2927,medium,731557.0,9755,9755 Rec. GE Appliance Pkg2 Allocation,1
10677,13394,Peninsula Lakes,2154,medium,474879.0,9755,9755 Rec. GE Appliance Pkg2 Allocation,1
10678,13476,Durham Farms,4277,medium,750956.0,9820,9820 Install Gutters,1
10679,13101,Marlin Chase,2461,medium,682900.0,9940,9940 Final Inspection,1
10680,13349,Peninsula Lakes,2188,medium,442826.0,9980,9980 Final Cleaning,1
10681,13092,Marlin Chase,2079,medium,433351.0,9985,9985 Final Clean 2,1
10682,13101,Marlin Chase,2461,medium,682900.0,9985,9985 Final Clean 2,1
10683,13394,Peninsula Lakes,2154,medium,474879.0,9990,9990 2nd Stage Termite Treatment,1
10684,13349,Peninsula Lakes,2188,medium,442826.0,9990,9990 2nd Stage Termite Treatment,1
10685,13423,Governors,2974,medium,884692.0,9990,9990 2nd Stage Termite Treatment,1
10686,13501,Hailey's Glen,2736,medium,694771.0,10020,10020 Final Grade,1
10687,13139,Marlin Chase,2554,medium,704067.0,10020,10020 Final Grade,1
10688,13035,Forest Hills,4024,medium,816522.0,10100,10100 Irrigation Installation,1
10689,13442,Walden,4633,medium,656370.0,10301,10301 Driveway Apron,4
10690,13442,Walden,4633,medium,656370.0,10340,10340 Install Leadwalk & Comm. Sidewalk,4
10691,13101,Marlin Chase,2461,medium,682900.0,10420,10420 Powerwash,1
10692,13495,Welches Pond,2650,medium,674167.0,10460,10460 Drywall Touch Up,2
10693,13520,Hailey's Glen,2792,medium,606920.0,10460,10460 Drywall Touch Up,2
10694,13139,Marlin Chase,2554,medium,704067.0,10501,10501 Paint Retouch,3
10695,13401,Welches Pond,2927,medium,731557.0,10501,10501 Paint Retouch,1
10696,13394,Peninsula Lakes,2154,medium,474879.0,10501,10501 Paint Retouch,1
10697,13253,River Mill,2912,medium,692624.0,10501,10501 Paint Retouch,5
10698,13507,Welches Pond,2852,medium,845914.0,10501,10501 Paint Retouch,1
10699,13035,Forest Hills,4024,medium,816522.0,10620,10620 Punch Out Allocation,1
10700,13401,Welches Pond,2927,medium,731557.0,10620,10620 Punch Out Allocation,1
10701,13394,Peninsula Lakes,2154,medium,474879.0,10620,10620 Punch Out Allocation,1
10702,13440,Marlin Chase,3067,medium,714189.0,10660,10660 Quality Inspection,1
10703,13032,Welches Pond,2812,medium,643995.0,10660,10660 Quality Inspection,1
10704,13136,Marlin Chase,3170,medium,806102.0,10745,10745 Install Window Coverings,1
10705,13264,Welches Pond,3905,medium,915363.0,0,vancheck Check Vanity Tops/Windows for Damage,1
10706,13520,Hailey's Glen,2792,medium,606920.0,0,vancheck Check Vanity Tops/Windows for Damage,1
10707,13349,Peninsula Lakes,2188,medium,442826.0,0,appcheck Check Appliances for Damage,1
10708,13088,Forest Hills,3580,medium,222544.0,4071,4071 Receive Exterior Decking,1
10709,13394,Peninsula Lakes,2154,medium,474879.0,6340,6340 Install Overhead Door,1
10710,13349,Peninsula Lakes,2188,medium,442826.0,6340,6340 Install Overhead Door,1
10711,13281,Marlin Chase,3558,medium,786910.0,6381,6381 Drywall Punch,1
10712,13278,Mosaic,2320,medium,818814.0,6381,6381 Drywall Punch,2
10713,13278,Mosaic,2320,medium,818814.0,6885,6885 Install Screen Porch Enclosure,12
10714,13394,Peninsula Lakes,2154,medium,474879.0,7140,7140 Exterior Painting,1
10715,13339,Peninsula,5583,high,750956.0,7340,7340 Install Ceramic Tile,8
10716,13339,Peninsula,5583,high,750956.0,7350,7350 Install Shower Tile,8
10717,13339,Peninsula,5583,high,750956.0,7380,7380 Install Vinyl Floors,1
10718,13442,Walden,4633,medium,656370.0,7825,7825 Crawl Poly,5
10719,13258,River Mill,3064,medium,670416.0,7825,7825 Crawl Poly,1
10720,13529,Governors,1901,medium,787652.0,7860,7860 Install Interior Trim,2
10721,13408,NewMarket,3940,medium,889253.0,7865,7865 Receive Door Hardware Allocation,1
10722,13339,Peninsula,5583,high,750956.0,8020,8020 Receive Interior Railing,1
10723,13339,Peninsula,5583,high,750956.0,8220,8220 Install Fireplace Surround/Mantel,1
10724,13164,Welches Pond,4497,medium,1024665.0,8220,8220 Install Fireplace Surround/Mantel,1
10725,13495,Welches Pond,2650,medium,674167.0,8380,8380 Template Countertops,1
10726,13388,Marsh Island,5848,high,750956.0,8420,8420 1st Paint,1
10727,13485,Peninsula,4241,medium,706147.0,8460,8460 Install Countertops,1
10728,13503,Marsh Island,4307,medium,892519.0,8540,8540 Install Bath Accessories,1
10729,13408,NewMarket,3940,medium,889253.0,8540,8540 Install Bath Accessories,1
10730,13408,NewMarket,3940,medium,889253.0,8545,8545 Install Mirrors,1
10731,13088,Forest Hills,3580,medium,222544.0,8579,8579 Template Shower Enclosure,1
10732,13408,NewMarket,3940,medium,889253.0,8580,8580 Install Shower Enclosures,1
10733,13503,Marsh Island,4307,medium,892519.0,8900,8900 Install Closet Shelving,1
10734,13408,NewMarket,3940,medium,889253.0,8900,8900 Install Closet Shelving,1
10735,13468,Governors,2977,medium,869889.0,9060,9060 Final Electric Inspection,1
10736,13281,Marlin Chase,3558,medium,786910.0,9110,9110 Gas Trim,1
10737,13030,Peninsula,5546,high,1768191.0,9260,9260 Structured Wiring Trim,1
10738,13164,Welches Pond,4497,medium,1024665.0,9360,9360 Receive Grill/Firebox,0
10739,13164,Welches Pond,4497,medium,1024665.0,9541,9541 Receive N/S Appliance Pkg 1,1
10740,13520,Hailey's Glen,2792,medium,606920.0,9620,9620 Install Appliances,1
10741,13442,Walden,4633,medium,656370.0,9660,9660 Install Carpet Flooring,1
10742,13503,Marsh Island,4307,medium,892519.0,9700,9700 Install Hardwood Flooring,1
10743,13088,Forest Hills,3580,medium,222544.0,9700,9700 Install Hardwood Flooring,2
10744,13423,Governors,2974,medium,884692.0,9700,9700 Install Hardwood Flooring,1
10745,13507,Welches Pond,2852,medium,845914.0,9755,9755 Rec. GE Appliance Pkg2 Allocation,1
10746,13501,Hailey's Glen,2736,medium,694771.0,9980,9980 Final Cleaning,1
10747,13501,Hailey's Glen,2736,medium,694771.0,9990,9990 2nd Stage Termite Treatment,1
10748,13468,Governors,2977,medium,869889.0,9990,9990 2nd Stage Termite Treatment,1
10749,13035,Forest Hills,4024,medium,816522.0,10020,10020 Final Grade,1
10750,13501,Hailey's Glen,2736,medium,694771.0,10100,10100 Irrigation Installation,1
10751,13035,Forest Hills,4024,medium,816522.0,10140,10140 Sod Installation,1
10752,13035,Forest Hills,4024,medium,816522.0,10180,10180 Shrub Installation,1
10753,13503,Marsh Island,4307,medium,892519.0,10260,10260 Install House Numbers,1
10754,13408,NewMarket,3940,medium,889253.0,10260,10260 Install House Numbers,1
10755,13030,Peninsula,5546,high,1768191.0,10300,10300 Install Driveway,7
10756,13496,Hailey's Glen,3443,medium,316917.0,10301,10301 Driveway Apron,1
10757,13503,Marsh Island,4307,medium,892519.0,10301,10301 Driveway Apron,5
10758,13503,Marsh Island,4307,medium,892519.0,10340,10340 Install Leadwalk & Comm. Sidewalk,5
10759,13496,Hailey's Glen,3443,medium,316917.0,10340,10340 Install Leadwalk & Comm. Sidewalk,1
10760,13030,Peninsula,5546,high,1768191.0,10340,10340 Install Leadwalk & Comm. Sidewalk,7
10761,13092,Marlin Chase,2079,medium,433351.0,10420,10420 Powerwash,1
10762,13349,Peninsula Lakes,2188,medium,442826.0,10501,10501 Paint Retouch,1
10763,13507,Welches Pond,2852,medium,845914.0,10620,10620 Punch Out Allocation,1
10764,13349,Peninsula Lakes,2188,medium,442826.0,10620,10620 Punch Out Allocation,1
10765,13101,Marlin Chase,2461,medium,682900.0,10660,10660 Quality Inspection,1
10766,13507,Welches Pond,2852,medium,845914.0,10745,10745 Install Window Coverings,1
10767,13138,Marlin Chase,3171,medium,859133.0,0,appcheck Check Appliances for Damage,1
10768,13152,Marlin Chase,2710,medium,768496.0,0,cabcheck Check Cabinets for Damage,1
10769,13394,Peninsula Lakes,2154,medium,474879.0,0,appcheck Check Appliances for Damage,1
10770,13164,Welches Pond,4497,medium,1024665.0,0,vancheck Check Vanity Tops/Windows for Damage,1
10771,13339,Peninsula,5583,high,750956.0,4981,4981 Deliver Sinks,1
10772,13397,Peninsula,5533,high,750956.0,5820,5820 Framing Inspection,1
10773,13503,Marsh Island,4307,medium,892519.0,6381,6381 Drywall Punch,1
10774,13503,Marsh Island,4307,medium,892519.0,6391,6391 Install Gas Meter,1
10775,13485,Peninsula,4241,medium,706147.0,7060,7060 Exterior Masonry Installation,2
10776,13339,Peninsula,5583,high,750956.0,7300,7300 Receive Interior Trim,1
10777,13339,Peninsula,5583,high,750956.0,7304,7304 Receive Goodie Box,1
10778,13388,Marsh Island,5848,high,750956.0,7340,7340 Install Ceramic Tile,2
10779,13388,Marsh Island,5848,high,750956.0,7350,7350 Install Shower Tile,8
10780,13258,River Mill,3064,medium,670416.0,7380,7380 Install Vinyl Floors,1
10781,13339,Peninsula,5583,high,750956.0,7700,7700 Receive Interior Doors,1
10782,13442,Walden,4633,medium,656370.0,7861,7861 Interior Trim Punch,2
10783,13339,Peninsula,5583,high,750956.0,7862,7862 Receive Cabinet Hardware Allocation,1
10784,13339,Peninsula,5583,high,750956.0,7866,7866 Receive Door Hardware,1
10785,13339,Peninsula,5583,high,750956.0,7900,7900 Receive Cabinets Allocation,1
10786,13339,Peninsula,5583,high,750956.0,7901,7901 Cabinet Delivery Charges,1
10787,13339,Peninsula,5583,high,750956.0,7940,7940 Receive Vanity Tops,1
10788,13388,Marsh Island,5848,high,750956.0,8020,8020 Receive Interior Railing,1
10789,13339,Peninsula,5583,high,750956.0,8260,8260 Install Interior Railing,1
10790,13529,Governors,1901,medium,787652.0,8300,8300 Install Cabinets,2
10791,13088,Forest Hills,3580,medium,222544.0,8460,8460 Install Countertops,1
10792,13442,Walden,4633,medium,656370.0,8465,8465 Install Tiled Backsplash,2
10793,13394,Peninsula Lakes,2154,medium,474879.0,8580,8580 Install Shower Enclosures,1
10794,13423,Governors,2974,medium,884692.0,8940,8940 Plumbing Trim,1
10795,13468,Governors,2977,medium,869889.0,8980,8980 Final Plumbing Inspection,1
10796,13476,Durham Farms,4277,medium,750956.0,9500,9500 Blower Door/Ductblaster,1
10797,13091,Marlin Chase,2591,medium,562928.0,9500,9500 Blower Door/Ductblaster,1
10798,13164,Welches Pond,4497,medium,1024665.0,9620,9620 Install Appliances,1
10799,13503,Marsh Island,4307,medium,892519.0,9660,9660 Install Carpet Flooring,1
10800,13423,Governors,2974,medium,884692.0,9660,9660 Install Carpet Flooring,1
10801,13408,NewMarket,3940,medium,889253.0,9700,9700 Install Hardwood Flooring,1
10802,13258,River Mill,3064,medium,670416.0,9700,9700 Install Hardwood Flooring,1
10803,13281,Marlin Chase,3558,medium,786910.0,9740,9740 Fireplace Start Up,1
10804,13468,Governors,2977,medium,869889.0,9755,9755 Rec. GE Appliance Pkg2 Allocation,1
10805,13035,Forest Hills,4024,medium,816522.0,9980,9980 Final Cleaning,1
10806,13136,Marlin Chase,3170,medium,806102.0,9985,9985 Final Clean 2,1
10807,13253,River Mill,2912,medium,692624.0,10020,10020 Final Grade,1
10808,13501,Hailey's Glen,2736,medium,694771.0,10140,10140 Sod Installation,1
10809,13501,Hailey's Glen,2736,medium,694771.0,10180,10180 Shrub Installation,1
10810,13476,Durham Farms,4277,medium,750956.0,10180,10180 Shrub Installation,1
10811,13392,Marsh Island,2795,medium,771707.0,10260,10260 Install House Numbers,1
10812,13496,Hailey's Glen,3443,medium,316917.0,10300,10300 Install Driveway,1
10813,13035,Forest Hills,4024,medium,816522.0,10380,10380 As Built Survey,1
10814,13253,River Mill,2912,medium,692624.0,10380,10380 As Built Survey,1
10815,13136,Marlin Chase,3170,medium,806102.0,10420,10420 Powerwash,1
10816,13277,Mosaic,1704,medium,561869.0,10460,10460 Drywall Touch Up,2
10817,13495,Welches Pond,2650,medium,674167.0,10500,10500 Paint 2,3
10818,13520,Hailey's Glen,2792,medium,606920.0,10500,10500 Paint 2,5
10819,13468,Governors,2977,medium,869889.0,10501,10501 Paint Retouch,1
10820,13138,Marlin Chase,3171,medium,859133.0,10501,10501 Paint Retouch,1
10821,13501,Hailey's Glen,2736,medium,694771.0,10501,10501 Paint Retouch,1
10822,13501,Hailey's Glen,2736,medium,694771.0,10620,10620 Punch Out Allocation,1
10823,13468,Governors,2977,medium,869889.0,10620,10620 Punch Out Allocation,1
10824,13092,Marlin Chase,2079,medium,433351.0,10660,10660 Quality Inspection,1
10825,13440,Marlin Chase,3067,medium,714189.0,10745,10745 Install Window Coverings,1
10826,13175,Peninsula Lakes,2245,low,567645.0,10820,10820 Settlement,1
10827,13175,Peninsula Lakes,2245,low,567645.0,10888,10888 Release All Retainage,1
10828,12920,Peninsula,4116,high,1454538.0,10888,10888 Release All Retainage,1
10829,13175,Peninsula Lakes,2245,low,567645.0,11585,11585 Exterior Paint Retainage,1
10830,12920,Peninsula,4116,high,1454538.0,11585,11585 Exterior Paint Retainage,1
10831,13175,Peninsula Lakes,2245,low,567645.0,11980,11980 Sod Retainage,1
10832,13175,Peninsula Lakes,2245,low,567645.0,12060,12060 Irrigation Retainage,1
10833,13175,Peninsula Lakes,2245,low,567645.0,12100,12100 Shrub Retainage,1
10834,13175,Peninsula Lakes,2245,low,567645.0,12180,12180 Driveway Retainage,1
10835,13175,Peninsula Lakes,2245,low,567645.0,12180,12180.1 Driveway Top Coat Allocation,0
10836,12920,Peninsula,4116,high,1454538.0,12180,12180 Driveway Retainage,1
10837,12920,Peninsula,4116,high,1454538.0,12180,12180.1 Driveway Top Coat Allocation,0
10838,12920,Peninsula,4116,high,1454538.0,99999,99999 HOME COMPLETE,1
10839,13495,Welches Pond,2650,medium,674167.0,0,vancheck Check Vanity Tops/Windows for Damage,1
10840,13465,Cardinal Grove,1764,medium,569722.0,0,cabcheck Check Cabinets for Damage,1
10841,13258,River Mill,3064,medium,670416.0,0,vancheck Check Vanity Tops/Windows for Damage,1
10842,13468,Governors,2977,medium,869889.0,0,appcheck Check Appliances for Damage,1
10843,13113,Marlin Chase,2814,medium,750956.0,0,appcheck Check Appliances for Damage,1
10844,13144,Marlin Chase,3055,medium,740636.0,0,cabcheck Check Cabinets for Damage,1
10845,13408,NewMarket,3940,medium,889253.0,4265,4265 Receive Window Screens,1
10846,13388,Marsh Island,5848,high,750956.0,4981,4981 Deliver Sinks,1
10847,13397,Peninsula,5533,high,750956.0,6180,6180 Install Insulation,2
10848,13476,Durham Farms,4277,medium,750956.0,6862,6862 Trellis Construction,1
10849,13476,Durham Farms,4277,medium,750956.0,6884,6884 Measure Screen Porch Enclosure,1
10850,13529,Governors,1901,medium,787652.0,6884,6884 Measure Screen Porch Enclosure,1
10851,13030,Peninsula,5546,high,1768191.0,6885,6885 Install Screen Porch Enclosure,1
10852,13139,Marlin Chase,2554,medium,704067.0,7140,7140 Exterior Painting,29
10853,13476,Durham Farms,4277,medium,750956.0,7180,7180 Install Exterior Railings,1
10854,13035,Forest Hills,4024,medium,816522.0,7185,7185 Install Exterior Metal Railings,0
10855,13476,Durham Farms,4277,medium,750956.0,7220,7220 Install Deck Skirting/Flower Boxes,1
10856,13388,Marsh Island,5848,high,750956.0,7300,7300 Receive Interior Trim,1
10857,13388,Marsh Island,5848,high,750956.0,7304,7304 Receive Goodie Box,1
10858,13388,Marsh Island,5848,high,750956.0,7700,7700 Receive Interior Doors,1
10859,13408,NewMarket,3940,medium,889253.0,7825,7825 Crawl Poly,1
10860,13360,Peninsula Lakes,3496,medium,575090.0,7825,7825 Crawl Poly,1
10861,13339,Peninsula,5583,high,750956.0,7860,7860 Install Interior Trim,5
10862,13503,Marsh Island,4307,medium,892519.0,7861,7861 Interior Trim Punch,1
10863,13423,Governors,2974,medium,884692.0,7861,7861 Interior Trim Punch,1
10864,13388,Marsh Island,5848,high,750956.0,7862,7862 Receive Cabinet Hardware Allocation,1
10865,13388,Marsh Island,5848,high,750956.0,7866,7866 Receive Door Hardware,1
10866,13388,Marsh Island,5848,high,750956.0,7900,7900 Receive Cabinets Allocation,1
10867,13388,Marsh Island,5848,high,750956.0,7901,7901 Cabinet Delivery Charges,1
10868,13388,Marsh Island,5848,high,750956.0,7940,7940 Receive Vanity Tops,1
10869,13388,Marsh Island,5848,high,750956.0,8260,8260 Install Interior Railing,1
10870,13264,Welches Pond,3905,medium,915363.0,8460,8460 Install Countertops,1
10871,13258,River Mill,3064,medium,670416.0,8460,8460 Install Countertops,1
10872,13477,Cardinal Grove,2589,medium,750956.0,8540,8540 Install Bath Accessories,1
10873,13471,Cardinal Grove,2233,medium,517387.0,8540,8540 Install Bath Accessories,1
10874,13030,Peninsula,5546,high,1768191.0,8540,8540 Install Bath Accessories,1
10875,13477,Cardinal Grove,2589,medium,750956.0,8545,8545 Install Mirrors,1
10876,13465,Cardinal Grove,1764,medium,569722.0,8545,8545 Install Mirrors,1
10877,13471,Cardinal Grove,2233,medium,517387.0,8545,8545 Install Mirrors,1
10878,13477,Cardinal Grove,2589,medium,750956.0,8580,8580 Install Shower Enclosures,1
10879,13465,Cardinal Grove,1764,medium,569722.0,8580,8580 Install Shower Enclosures,1
10880,13471,Cardinal Grove,2233,medium,517387.0,8580,8580 Install Shower Enclosures,1
10881,13030,Peninsula,5546,high,1768191.0,8580,8580 Install Shower Enclosures,1
10882,13477,Cardinal Grove,2589,medium,750956.0,8900,8900 Install Closet Shelving,1
10883,13465,Cardinal Grove,1764,medium,569722.0,8900,8900 Install Closet Shelving,1
10884,13471,Cardinal Grove,2233,medium,517387.0,8900,8900 Install Closet Shelving,1
10885,13088,Forest Hills,3580,medium,222544.0,8920,8920 Install Water Heater/1st Trim,1
10886,13485,Peninsula,4241,medium,706147.0,8920,8920 Install Water Heater/1st Trim,1
10887,13442,Walden,4633,medium,656370.0,8940,8940 Plumbing Trim,1
10888,13423,Governors,2974,medium,884692.0,8980,8980 Final Plumbing Inspection,1
10889,13164,Welches Pond,4497,medium,1024665.0,9020,9020 Electric Trim,12
10890,13264,Welches Pond,3905,medium,915363.0,9020,9020 Electric Trim,2
10891,13360,Peninsula Lakes,3496,medium,575090.0,9060,9060 Final Electric Inspection,1
10892,13035,Forest Hills,4024,medium,816522.0,9060,9060 Final Electric Inspection,1
10893,13476,Durham Farms,4277,medium,750956.0,9060,9060 Final Electric Inspection,1
10894,13423,Governors,2974,medium,884692.0,9060,9060 Final Electric Inspection,1
10895,13264,Welches Pond,3905,medium,915363.0,9100,9100 HVAC Trim / Set Unit,1
10896,13164,Welches Pond,4497,medium,1024665.0,9100,9100 HVAC Trim / Set Unit,12
10897,13392,Marsh Island,2795,medium,771707.0,9101,9101 HVAC Startup,1
10898,13496,Hailey's Glen,3443,medium,316917.0,9101,9101 HVAC Startup,1
10899,13264,Welches Pond,3905,medium,915363.0,9260,9260 Structured Wiring Trim,1
10900,13507,Welches Pond,2852,medium,845914.0,9500,9500 Blower Door/Ductblaster,3
10901,13035,Forest Hills,4024,medium,816522.0,9500,9500 Blower Door/Ductblaster,1
10902,13401,Welches Pond,2927,medium,731557.0,9500,9500 Blower Door/Ductblaster,1
10903,13394,Peninsula Lakes,2154,medium,474879.0,9500,9500 Blower Door/Ductblaster,1
10904,13408,NewMarket,3940,medium,889253.0,9660,9660 Install Carpet Flooring,1
10905,13258,River Mill,3064,medium,670416.0,9660,9660 Install Carpet Flooring,1
10906,13349,Peninsula Lakes,2188,medium,442826.0,9740,9740 Fireplace Start Up,1
10907,13139,Marlin Chase,2554,medium,704067.0,9985,9985 Final Clean 2,1
10908,13401,Welches Pond,2927,medium,731557.0,9985,9985 Final Clean 2,1
10909,13277,Mosaic,1704,medium,561869.0,10020,10020 Final Grade,1
10910,13442,Walden,4633,medium,656370.0,10020,10020 Final Grade,1
10911,13140,Marlin Chase,2824,medium,766881.0,10020,10020 Final Grade,1
10912,13035,Forest Hills,4024,medium,816522.0,10061,10061 Install Fence,5
10913,13477,Cardinal Grove,2589,medium,750956.0,10260,10260 Install House Numbers,1
10914,13465,Cardinal Grove,1764,medium,569722.0,10260,10260 Install House Numbers,1
10915,13471,Cardinal Grove,2233,medium,517387.0,10260,10260 Install House Numbers,1
10916,13485,Peninsula,4241,medium,706147.0,10300,10300 Install Driveway,6
10917,13485,Peninsula,4241,medium,706147.0,10340,10340 Install Leadwalk & Comm. Sidewalk,1
10918,13152,Marlin Chase,2710,medium,768496.0,10380,10380 As Built Survey,1
10919,13139,Marlin Chase,2554,medium,704067.0,10380,10380 As Built Survey,6
10920,13035,Forest Hills,4024,medium,816522.0,10420,10420 Powerwash,1
10921,13139,Marlin Chase,2554,medium,704067.0,10420,10420 Powerwash,1
10922,13529,Governors,1901,medium,787652.0,10460,10460 Drywall Touch Up,2
10923,13281,Marlin Chase,3558,medium,786910.0,10501,10501 Paint Retouch,1
10924,13503,Marsh Island,4307,medium,892519.0,10501,10501 Paint Retouch,1
10925,13281,Marlin Chase,3558,medium,786910.0,10620,10620 Punch Out Allocation,1
10926,13136,Marlin Chase,3170,medium,806102.0,10660,10660 Quality Inspection,1
10927,13035,Forest Hills,4024,medium,816522.0,10660,10660 Quality Inspection,1
10928,13442,Walden,4633,medium,656370.0,10745,10745 Install Window Coverings,15
10929,13020,Peninsula Lakes,2100,low,578095.0,10820,10820 Settlement,1
10930,13020,Peninsula Lakes,2100,low,578095.0,10888,10888 Release All Retainage,1
10931,13020,Peninsula Lakes,2100,low,578095.0,11585,11585 Exterior Paint Retainage,1
10932,13020,Peninsula Lakes,2100,low,578095.0,11980,11980 Sod Retainage,1
10933,13020,Peninsula Lakes,2100,low,578095.0,12060,12060 Irrigation Retainage,1
10934,13020,Peninsula Lakes,2100,low,578095.0,12100,12100 Shrub Retainage,1
10935,13020,Peninsula Lakes,2100,low,578095.0,12180,12180 Driveway Retainage,1
10936,13020,Peninsula Lakes,2100,low,578095.0,12180,12180.1 Driveway Top Coat Allocation,0
10937,13175,Peninsula Lakes,2245,low,567645.0,99999,99999 HOME COMPLETE,1
10938,13477,Cardinal Grove,2589,medium,750956.0,0,cabcheck Check Cabinets for Damage,1
10939,13137,Marlin Chase,2330,medium,637264.0,0,appcheck Check Appliances for Damage,1
10940,13501,Hailey's Glen,2736,medium,694771.0,0,cabcheck Check Cabinets for Damage,1
10941,13112,Marlin Chase,3171,medium,634940.0,0,cabcheck Check Cabinets for Damage,1
10942,13091,Marlin Chase,2591,medium,562928.0,0,appcheck Check Appliances for Damage,1
10943,13091,Marlin Chase,2591,medium,562928.0,0,cabcheck Check Cabinets for Damage,1
10944,13253,River Mill,2912,medium,692624.0,4265,4265 Receive Window Screens,1
10945,13462,Peninsula,4787,high,1490269.0,5177,5177 Electric Meter Connection,1
10946,13462,Peninsula,4787,high,1490269.0,5820,5820 Framing Inspection,1
10947,13462,Peninsula,4787,high,1490269.0,6180,6180 Install Insulation,2
10948,13423,Governors,2974,medium,884692.0,6381,6381 Drywall Punch,1
10949,13442,Walden,4633,medium,656370.0,6381,6381 Drywall Punch,1
10950,13392,Marsh Island,2795,medium,771707.0,6390,6390 Schedule Gas Meter,1
10951,13392,Marsh Island,2795,medium,771707.0,6391,6391 Install Gas Meter,1
10952,13258,River Mill,3064,medium,670416.0,6820,6820 Receive Deck Skirting,1
10953,13495,Welches Pond,2650,medium,674167.0,6885,6885 Install Screen Porch Enclosure,15
10954,13392,Marsh Island,2795,medium,771707.0,7140,7140 Exterior Painting,1
10955,13476,Durham Farms,4277,medium,750956.0,7140,7140 Exterior Painting,1
10956,13388,Marsh Island,5848,high,750956.0,7860,7860 Install Interior Trim,3
10957,13258,River Mill,3064,medium,670416.0,7861,7861 Interior Trim Punch,1
10958,13258,River Mill,3064,medium,670416.0,7865,7865 Receive Door Hardware Allocation,1
10959,13258,River Mill,3064,medium,670416.0,7866,7866 Receive Door Hardware,1
10960,13529,Governors,1901,medium,787652.0,8380,8380 Template Countertops,1
10961,13164,Welches Pond,4497,medium,1024665.0,8460,8460 Install Countertops,1
10962,13258,River Mill,3064,medium,670416.0,8540,8540 Install Bath Accessories,1
10963,13392,Marsh Island,2795,medium,771707.0,8540,8540 Install Bath Accessories,1
10964,13496,Hailey's Glen,3443,medium,316917.0,8540,8540 Install Bath Accessories,1
10965,13496,Hailey's Glen,3443,medium,316917.0,8545,8545 Install Mirrors,1
10966,13503,Marsh Island,4307,medium,892519.0,8545,8545 Install Mirrors,1
10967,13258,River Mill,3064,medium,670416.0,8545,8545 Install Mirrors,1
10968,13164,Welches Pond,4497,medium,1024665.0,8579,8579 Template Shower Enclosure,1
10969,13503,Marsh Island,4307,medium,892519.0,8580,8580 Install Shower Enclosures,1
10970,13392,Marsh Island,2795,medium,771707.0,8580,8580 Install Shower Enclosures,1
10971,13392,Marsh Island,2795,medium,771707.0,8900,8900 Install Closet Shelving,1
10972,13496,Hailey's Glen,3443,medium,316917.0,8900,8900 Install Closet Shelving,1
10973,13258,River Mill,3064,medium,670416.0,8900,8900 Install Closet Shelving,1
10974,13258,River Mill,3064,medium,670416.0,8920,8920 Install Water Heater/1st Trim,1
10975,13264,Welches Pond,3905,medium,915363.0,8920,8920 Install Water Heater/1st Trim,1
10976,13442,Walden,4633,medium,656370.0,8980,8980 Final Plumbing Inspection,1
10977,13485,Peninsula,4241,medium,706147.0,9020,9020 Electric Trim,12
10978,13485,Peninsula,4241,medium,706147.0,9100,9100 HVAC Trim / Set Unit,1
10979,13392,Marsh Island,2795,medium,771707.0,9100,9100 HVAC Trim / Set Unit,1
10980,13442,Walden,4633,medium,656370.0,9110,9110 Gas Trim,10
10981,13485,Peninsula,4241,medium,706147.0,9260,9260 Structured Wiring Trim,1
10982,13164,Welches Pond,4497,medium,1024665.0,9460,9460 Attic Insulation,1
10983,13388,Marsh Island,5848,high,750956.0,9460,9460 Attic Insulation,1
10984,13138,Marlin Chase,3171,medium,859133.0,9500,9500 Blower Door/Ductblaster,1
10985,13477,Cardinal Grove,2589,medium,750956.0,9700,9700 Install Hardwood Flooring,1
10986,13465,Cardinal Grove,1764,medium,569722.0,9700,9700 Install Hardwood Flooring,1
10987,13471,Cardinal Grove,2233,medium,517387.0,9700,9700 Install Hardwood Flooring,1
10988,13349,Peninsula Lakes,2188,medium,442826.0,9755,9755 Rec. GE Appliance Pkg2 Allocation,1
10989,13503,Marsh Island,4307,medium,892519.0,9755,9755 Rec. GE Appliance Pkg2 Allocation,1
10990,13145,Marlin Chase,3204,medium,841553.0,9940,9940 Final Inspection,1
10991,13468,Governors,2977,medium,869889.0,9980,9980 Final Cleaning,1
10992,13423,Governors,2974,medium,884692.0,9980,9980 Final Cleaning,1
10993,13091,Marlin Chase,2591,medium,562928.0,9980,9980 Final Cleaning,1
10994,13501,Hailey's Glen,2736,medium,694771.0,9985,9985 Final Clean 2,1
10995,13145,Marlin Chase,3204,medium,841553.0,9985,9985 Final Clean 2,1
10996,13468,Governors,2977,medium,869889.0,9985,9985 Final Clean 2,1
10997,13442,Walden,4633,medium,656370.0,9990,9990 2nd Stage Termite Treatment,1
10998,13442,Walden,4633,medium,656370.0,10100,10100 Irrigation Installation,1
10999,13140,Marlin Chase,2824,medium,766881.0,10100,10100 Irrigation Installation,1
11000,13152,Marlin Chase,2710,medium,768496.0,10140,10140 Sod Installation,2
11001,13152,Marlin Chase,2710,medium,768496.0,10180,10180 Shrub Installation,2
11002,13496,Hailey's Glen,3443,medium,316917.0,10260,10260 Install House Numbers,1
11003,13030,Peninsula,5546,high,1768191.0,10260,10260 Install House Numbers,1
11004,13442,Walden,4633,medium,656370.0,10300,10300 Install Driveway,1
11005,13264,Welches Pond,3905,medium,915363.0,10301,10301 Driveway Apron,1
11006,13264,Welches Pond,3905,medium,915363.0,10340,10340 Install Leadwalk & Comm. Sidewalk,1
11007,13258,River Mill,3064,medium,670416.0,10340,10340 Install Leadwalk & Comm. Sidewalk,1
11008,13164,Welches Pond,4497,medium,1024665.0,10345,10345 Pour Concrete Steps,4
11009,13408,NewMarket,3940,medium,889253.0,10380,10380 As Built Survey,1
11010,13112,Marlin Chase,3171,medium,634940.0,10380,10380 As Built Survey,1
11011,13468,Governors,2977,medium,869889.0,10380,10380 As Built Survey,1
11012,13145,Marlin Chase,3204,medium,841553.0,10420,10420 Powerwash,1
11013,13501,Hailey's Glen,2736,medium,694771.0,10420,10420 Powerwash,1
11014,13423,Governors,2974,medium,884692.0,10501,10501 Paint Retouch,1
11015,13277,Mosaic,1704,medium,561869.0,10501,10501 Paint Retouch,5
11016,13278,Mosaic,2320,medium,818814.0,10501,10501 Paint Retouch,1
11017,13503,Marsh Island,4307,medium,892519.0,10620,10620 Punch Out Allocation,1
11018,13423,Governors,2974,medium,884692.0,10620,10620 Punch Out Allocation,1
11019,13476,Durham Farms,4277,medium,750956.0,10660,10660 Quality Inspection,1
11020,13139,Marlin Chase,2554,medium,704067.0,10660,10660 Quality Inspection,1
11021,13020,Peninsula Lakes,2100,low,578095.0,99999,99999 HOME COMPLETE,1
11022,13140,Marlin Chase,2824,medium,766881.0,0,appcheck Check Appliances for Damage,1
11023,13423,Governors,2974,medium,884692.0,0,appcheck Check Appliances for Damage,1
11024,13253,River Mill,2912,medium,692624.0,0,appcheck Check Appliances for Damage,1
11025,13277,Mosaic,1704,medium,561869.0,0,vancheck Check Vanity Tops/Windows for Damage,1
11026,13529,Governors,1901,medium,787652.0,0,vancheck Check Vanity Tops/Windows for Damage,1
11027,13397,Peninsula,5533,high,750956.0,6300,6300 Energy Inspection,1
11028,13501,Hailey's Glen,2736,medium,694771.0,6340,6340 Install Overhead Door,1
11029,13397,Peninsula,5533,high,750956.0,6345,6345 Stock Drywall,1
11030,13339,Peninsula,5583,high,750956.0,6391,6391 Install Gas Meter,1
11031,13468,Governors,2977,medium,869889.0,6885,6885 Install Screen Porch Enclosure,9
11032,13164,Welches Pond,4497,medium,1024665.0,7060,7060 Exterior Masonry Installation,4
11033,13485,Peninsula,4241,medium,706147.0,7140,7140 Exterior Painting,2
11034,13035,Forest Hills,4024,medium,816522.0,7180,7180 Install Exterior Railings,6
11035,13264,Welches Pond,3905,medium,915363.0,7180,7180 Install Exterior Railings,1
11036,13495,Welches Pond,2650,medium,674167.0,7180,7180 Install Exterior Railings,5
11037,13088,Forest Hills,3580,medium,222544.0,7185,7185 Install Exterior Metal Railings,0
11038,13339,Peninsula,5583,high,750956.0,7220,7220 Install Deck Skirting/Flower Boxes,1
11039,13477,Cardinal Grove,2589,medium,750956.0,7825,7825 Crawl Poly,1
11040,13465,Cardinal Grove,1764,medium,569722.0,7825,7825 Crawl Poly,1
11041,13088,Forest Hills,3580,medium,222544.0,7825,7825 Crawl Poly,1
11042,13471,Cardinal Grove,2233,medium,517387.0,7825,7825 Crawl Poly,1
11043,13465,Cardinal Grove,1764,medium,569722.0,7861,7861 Interior Trim Punch,1
11044,13088,Forest Hills,3580,medium,222544.0,7861,7861 Interior Trim Punch,1
11045,13388,Marsh Island,5848,high,750956.0,8300,8300 Install Cabinets,2
11046,13520,Hailey's Glen,2792,medium,606920.0,8380,8380 Template Countertops,1
11047,13164,Welches Pond,4497,medium,1024665.0,8390,8390 Stone Interior Fireplace,4
11048,13088,Forest Hills,3580,medium,222544.0,8465,8465 Install Tiled Backsplash,1
11049,13485,Peninsula,4241,medium,706147.0,8465,8465 Install Tiled Backsplash,1
11050,13529,Governors,1901,medium,787652.0,8579,8579 Template Shower Enclosure,1
11051,13388,Marsh Island,5848,high,750956.0,8579,8579 Template Shower Enclosure,1
11052,13501,Hailey's Glen,2736,medium,694771.0,8580,8580 Install Shower Enclosures,3
11053,13442,Walden,4633,medium,656370.0,8920,8920 Install Water Heater/1st Trim,1
11054,13164,Welches Pond,4497,medium,1024665.0,8920,8920 Install Water Heater/1st Trim,1
11055,13496,Hailey's Glen,3443,medium,316917.0,8920,8920 Install Water Heater/1st Trim,1
11056,13465,Cardinal Grove,1764,medium,569722.0,8940,8940 Plumbing Trim,1
11057,13088,Forest Hills,3580,medium,222544.0,8940,8940 Plumbing Trim,1
11058,13495,Welches Pond,2650,medium,674167.0,9020,9020 Electric Trim,2
11059,13264,Welches Pond,3905,medium,915363.0,9060,9060 Final Electric Inspection,1
11060,13495,Welches Pond,2650,medium,674167.0,9100,9100 HVAC Trim / Set Unit,1
11061,13520,Hailey's Glen,2792,medium,606920.0,9100,9100 HVAC Trim / Set Unit,1
11062,13264,Welches Pond,3905,medium,915363.0,9101,9101 HVAC Startup,1
11063,13030,Peninsula,5546,high,1768191.0,9101,9101 HVAC Startup,2
11064,13164,Welches Pond,4497,medium,1024665.0,9101,9101 HVAC Startup,1
11065,13495,Welches Pond,2650,medium,674167.0,9260,9260 Structured Wiring Trim,1
11066,13339,Peninsula,5583,high,750956.0,9420,9420 Install Solar Panels,5
11067,13144,Marlin Chase,3055,medium,740636.0,9500,9500 Blower Door/Ductblaster,1
11068,13339,Peninsula,5583,high,750956.0,9540,9540 Rec. GE Appliance Pkg1 Allocation,1
11069,13477,Cardinal Grove,2589,medium,750956.0,9660,9660 Install Carpet Flooring,1
11070,13471,Cardinal Grove,2233,medium,517387.0,9660,9660 Install Carpet Flooring,1
11071,13496,Hailey's Glen,3443,medium,316917.0,9700,9700 Install Hardwood Flooring,1
11072,13442,Walden,4633,medium,656370.0,9740,9740 Fireplace Start Up,1
11073,13281,Marlin Chase,3558,medium,786910.0,9755,9755 Rec. GE Appliance Pkg2 Allocation,1
11074,13501,Hailey's Glen,2736,medium,694771.0,9755,9755 Rec. GE Appliance Pkg2 Allocation,1
11075,13253,River Mill,2912,medium,692624.0,9755,9755 Rec. GE Appliance Pkg2 Allocation,1
11076,13264,Welches Pond,3905,medium,915363.0,9790,9790 Basement Blanket Insulation,5
11077,13529,Governors,1901,medium,787652.0,9820,9820 Install Gutters,1
11078,13485,Peninsula,4241,medium,706147.0,9820,9820 Install Gutters,1
11079,13442,Walden,4633,medium,656370.0,9980,9980 Final Cleaning,3
11080,13394,Peninsula Lakes,2154,medium,474879.0,9985,9985 Final Clean 2,1
11081,13138,Marlin Chase,3171,medium,859133.0,9985,9985 Final Clean 2,1
11082,13423,Governors,2974,medium,884692.0,9985,9985 Final Clean 2,1
11083,13476,Durham Farms,4277,medium,750956.0,9990,9990 2nd Stage Termite Treatment,1
11084,13423,Governors,2974,medium,884692.0,10020,10020 Final Grade,1
11085,13253,River Mill,2912,medium,692624.0,10100,10100 Irrigation Installation,1
11086,13339,Peninsula,5583,high,750956.0,10110,10110 Hardscape Installation,5
11087,13140,Marlin Chase,2824,medium,766881.0,10140,10140 Sod Installation,1
11088,13113,Marlin Chase,2814,medium,750956.0,10140,10140 Sod Installation,1
11089,13442,Walden,4633,medium,656370.0,10140,10140 Sod Installation,1
11090,13476,Durham Farms,4277,medium,750956.0,10140,10140 Sod Installation,1
11091,13140,Marlin Chase,2824,medium,766881.0,10180,10180 Shrub Installation,1
11092,13113,Marlin Chase,2814,medium,750956.0,10180,10180 Shrub Installation,1
11093,13442,Walden,4633,medium,656370.0,10180,10180 Shrub Installation,1
11094,13264,Welches Pond,3905,medium,915363.0,10300,10300 Install Driveway,1
11095,13164,Welches Pond,4497,medium,1024665.0,10340,10340 Install Leadwalk & Comm. Sidewalk,3
11096,13442,Walden,4633,medium,656370.0,10380,10380 As Built Survey,9
11097,13138,Marlin Chase,3171,medium,859133.0,10380,10380 As Built Survey,1
11098,13138,Marlin Chase,3171,medium,859133.0,10420,10420 Powerwash,1
11099,13529,Governors,1901,medium,787652.0,10500,10500 Paint 2,3
11100,13137,Marlin Chase,2330,medium,637264.0,10501,10501 Paint Retouch,1
11101,13253,River Mill,2912,medium,692624.0,10620,10620 Punch Out Allocation,1
11102,13145,Marlin Chase,3204,medium,841553.0,10660,10660 Quality Inspection,1
11103,13440,Marlin Chase,3067,medium,714189.0,10780,10780 Customer Walk,1
11104,13032,Welches Pond,2812,medium,643995.0,10780,10780 Customer Walk,1
11105,13507,Welches Pond,2852,medium,845914.0,0,appcheck Check Appliances for Damage,1
11106,13442,Walden,4633,medium,656370.0,0,appcheck Check Appliances for Damage,1
11107,13397,Peninsula,5533,high,750956.0,3140,3140 Pour Porch Slab,1
11108,13462,Peninsula,4787,high,1490269.0,6300,6300 Energy Inspection,1
11109,13462,Peninsula,4787,high,1490269.0,6345,6345 Stock Drywall,1
11110,13397,Peninsula,5533,high,750956.0,6380,6380 Install Drywall,12
11111,13477,Cardinal Grove,2589,medium,750956.0,6381,6381 Drywall Punch,1
11112,13465,Cardinal Grove,1764,medium,569722.0,6381,6381 Drywall Punch,1
11113,13397,Peninsula,5533,high,750956.0,6620,6620 Receive Vinyl Siding,1
11114,13397,Peninsula,5533,high,750956.0,6660,6660 Receive Fiber Cement Siding,1
11115,13397,Peninsula,5533,high,750956.0,6700,6700 Receive Composite Ext Trim,1
11116,13397,Peninsula,5533,high,750956.0,6720,6720 Receive Siding Accents,1
11117,13397,Peninsula,5533,high,750956.0,6725,6725 Receive Shutters,1
11118,13397,Peninsula,5533,high,750956.0,6740,6740 Receive PVC Exterior Trim,1
11119,13397,Peninsula,5533,high,750956.0,6781,6781 Receive Column Wrap/Flower Bx/Pediment,1
11120,13397,Peninsula,5533,high,750956.0,6820,6820 Receive Deck Skirting,1
11121,13520,Hailey's Glen,2792,medium,606920.0,6885,6885 Install Screen Porch Enclosure,1
11122,13476,Durham Farms,4277,medium,750956.0,6885,6885 Install Screen Porch Enclosure,1
11123,13138,Marlin Chase,3171,medium,859133.0,7140,7140 Exterior Painting,1
11124,13392,Marsh Island,2795,medium,771707.0,7304,7304 Receive Goodie Box,1
11125,13496,Hailey's Glen,3443,medium,316917.0,7825,7825 Crawl Poly,1
11126,13496,Hailey's Glen,3443,medium,316917.0,7861,7861 Interior Trim Punch,1
11127,13477,Cardinal Grove,2589,medium,750956.0,7861,7861 Interior Trim Punch,1
11128,13471,Cardinal Grove,2233,medium,517387.0,7861,7861 Interior Trim Punch,1
11129,13392,Marsh Island,2795,medium,771707.0,7866,7866 Receive Door Hardware,1
11130,13392,Marsh Island,2795,medium,771707.0,7900,7900 Receive Cabinets Allocation,1
11131,13392,Marsh Island,2795,medium,771707.0,7901,7901 Cabinet Delivery Charges,1
11132,13392,Marsh Island,2795,medium,771707.0,7940,7940 Receive Vanity Tops,1
11133,13388,Marsh Island,5848,high,750956.0,8220,8220 Install Fireplace Surround/Mantel,1
11134,13495,Welches Pond,2650,medium,674167.0,8460,8460 Install Countertops,1
11135,13264,Welches Pond,3905,medium,915363.0,8465,8465 Install Tiled Backsplash,8
11136,13496,Hailey's Glen,3443,medium,316917.0,8465,8465 Install Tiled Backsplash,4
11137,13258,River Mill,3064,medium,670416.0,8465,8465 Install Tiled Backsplash,2
11138,13264,Welches Pond,3905,medium,915363.0,8540,8540 Install Bath Accessories,1
11139,13264,Welches Pond,3905,medium,915363.0,8545,8545 Install Mirrors,1
11140,13392,Marsh Island,2795,medium,771707.0,8545,8545 Install Mirrors,11
11141,13030,Peninsula,5546,high,1768191.0,8545,8545 Install Mirrors,1
11142,13496,Hailey's Glen,3443,medium,316917.0,8579,8579 Template Shower Enclosure,1
11143,13264,Welches Pond,3905,medium,915363.0,8580,8580 Install Shower Enclosures,18
11144,13349,Peninsula Lakes,2188,medium,442826.0,8580,8580 Install Shower Enclosures,1
11145,13088,Forest Hills,3580,medium,222544.0,8580,8580 Install Shower Enclosures,12
11146,13468,Governors,2977,medium,869889.0,8580,8580 Install Shower Enclosures,1
11147,13264,Welches Pond,3905,medium,915363.0,8900,8900 Install Closet Shelving,1
11148,13030,Peninsula,5546,high,1768191.0,8900,8900 Install Closet Shelving,1
11149,13477,Cardinal Grove,2589,medium,750956.0,8940,8940 Plumbing Trim,1
11150,13503,Marsh Island,4307,medium,892519.0,8940,8940 Plumbing Trim,1
11151,13471,Cardinal Grove,2233,medium,517387.0,8940,8940 Plumbing Trim,1
11152,13465,Cardinal Grove,1764,medium,569722.0,8980,8980 Final Plumbing Inspection,1
11153,13485,Peninsula,4241,medium,706147.0,9101,9101 HVAC Startup,1
11154,13465,Cardinal Grove,1764,medium,569722.0,9110,9110 Gas Trim,1
11155,13503,Marsh Island,4307,medium,892519.0,9110,9110 Gas Trim,1
11156,13088,Forest Hills,3580,medium,222544.0,9110,9110 Gas Trim,1
11157,13529,Governors,1901,medium,787652.0,9540,9540 Rec. GE Appliance Pkg1 Allocation,1
11158,13388,Marsh Island,5848,high,750956.0,9540,9540 Rec. GE Appliance Pkg1 Allocation,1
11159,13339,Peninsula,5583,high,750956.0,9541,9541 Receive N/S Appliance Pkg 1,1
11160,13264,Welches Pond,3905,medium,915363.0,9700,9700 Install Hardwood Flooring,4
11161,13258,River Mill,3064,medium,670416.0,9740,9740 Fireplace Start Up,1
11162,13442,Walden,4633,medium,656370.0,9755,9755 Rec. GE Appliance Pkg2 Allocation,7
11163,13423,Governors,2974,medium,884692.0,9755,9755 Rec. GE Appliance Pkg2 Allocation,1
11164,13281,Marlin Chase,3558,medium,786910.0,9756,9756 Receive N/S Appliance Pkg 2,1
11165,13442,Walden,4633,medium,656370.0,9756,9756 Receive N/S Appliance Pkg 2,8
11166,13485,Peninsula,4241,medium,706147.0,9790,9790 Basement Blanket Insulation,1
11167,13138,Marlin Chase,3171,medium,859133.0,9940,9940 Final Inspection,1
11168,13281,Marlin Chase,3558,medium,786910.0,9980,9980 Final Cleaning,1
11169,13113,Marlin Chase,2814,medium,750956.0,9985,9985 Final Clean 2,1
11170,13507,Welches Pond,2852,medium,845914.0,9985,9985 Final Clean 2,1
11171,13264,Welches Pond,3905,medium,915363.0,10020,10020 Final Grade,1
11172,13264,Welches Pond,3905,medium,915363.0,10260,10260 Install House Numbers,1
11173,13503,Marsh Island,4307,medium,892519.0,10300,10300 Install Driveway,1
11174,13088,Forest Hills,3580,medium,222544.0,10301,10301 Driveway Apron,5
11175,13164,Welches Pond,4497,medium,1024665.0,10301,10301 Driveway Apron,2
11176,13088,Forest Hills,3580,medium,222544.0,10340,10340 Install Leadwalk & Comm. Sidewalk,5
11177,13264,Welches Pond,3905,medium,915363.0,10380,10380 As Built Survey,1
11178,13401,Welches Pond,2927,medium,731557.0,10420,10420 Powerwash,1
11179,13113,Marlin Chase,2814,medium,750956.0,10420,10420 Powerwash,1
11180,13507,Welches Pond,2852,medium,845914.0,10420,10420 Powerwash,1
11181,13442,Walden,4633,medium,656370.0,10501,10501 Paint Retouch,1
11182,13442,Walden,4633,medium,656370.0,10620,10620 Punch Out Allocation,1
11183,13138,Marlin Chase,3171,medium,859133.0,10660,10660 Quality Inspection,1
11184,13401,Welches Pond,2927,medium,731557.0,10660,10660 Quality Inspection,1
11185,13394,Peninsula Lakes,2154,medium,474879.0,10660,10660 Quality Inspection,1
11186,13101,Marlin Chase,2461,medium,682900.0,10780,10780 Customer Walk,1
11187,13360,Peninsula Lakes,3496,medium,575090.0,10780,10780 Customer Walk,1
11188,13496,Hailey's Glen,3443,medium,316917.0,0,cabcheck Check Cabinets for Damage,1
11189,13152,Marlin Chase,2710,medium,768496.0,0,appcheck Check Appliances for Damage,1
11190,13503,Marsh Island,4307,medium,892519.0,0,appcheck Check Appliances for Damage,1
11191,13471,Cardinal Grove,2233,medium,517387.0,0,cabcheck Check Cabinets for Damage,1
11192,13476,Durham Farms,4277,medium,750956.0,4230,4230 Receive Housewrap/Flashing,1
11193,13339,Peninsula,5583,high,750956.0,5120,5120 HVAC Set Furnace,6
11194,13476,Durham Farms,4277,medium,750956.0,6345,6345 Stock Drywall,1
11195,13476,Durham Farms,4277,medium,750956.0,6380,6380 Install Drywall,5
11196,13462,Peninsula,4787,high,1490269.0,6380,6380 Install Drywall,12
11197,13471,Cardinal Grove,2233,medium,517387.0,6381,6381 Drywall Punch,1
11198,13462,Peninsula,4787,high,1490269.0,6620,6620 Receive Vinyl Siding,1
11199,13462,Peninsula,4787,high,1490269.0,6660,6660 Receive Fiber Cement Siding,1
11200,13462,Peninsula,4787,high,1490269.0,6700,6700 Receive Composite Ext Trim,1
11201,13462,Peninsula,4787,high,1490269.0,6720,6720 Receive Siding Accents,1
11202,13462,Peninsula,4787,high,1490269.0,6740,6740 Receive PVC Exterior Trim,1
11203,13462,Peninsula,4787,high,1490269.0,6781,6781 Receive Column Wrap/Flower Bx/Pediment,1
11204,13397,Peninsula,5533,high,750956.0,6860,6860 Siding Installation,23
11205,13501,Hailey's Glen,2736,medium,694771.0,7825,7825 Crawl Poly,1
11206,13392,Marsh Island,2795,medium,771707.0,8300,8300 Install Cabinets,1
11207,13339,Peninsula,5583,high,750956.0,8300,8300 Install Cabinets,2
11208,13339,Peninsula,5583,high,750956.0,8380,8380 Template Countertops,1
11209,13164,Welches Pond,4497,medium,1024665.0,8465,8465 Install Tiled Backsplash,1
11210,13485,Peninsula,4241,medium,706147.0,8540,8540 Install Bath Accessories,1
11211,13485,Peninsula,4241,medium,706147.0,8545,8545 Install Mirrors,1
11212,13485,Peninsula,4241,medium,706147.0,8580,8580 Install Shower Enclosures,1
11213,13485,Peninsula,4241,medium,706147.0,8900,8900 Install Closet Shelving,1
11214,13495,Welches Pond,2650,medium,674167.0,8920,8920 Install Water Heater/1st Trim,1
11215,13258,River Mill,3064,medium,670416.0,8940,8940 Plumbing Trim,1
11216,13477,Cardinal Grove,2589,medium,750956.0,8980,8980 Final Plumbing Inspection,1
11217,13503,Marsh Island,4307,medium,892519.0,8980,8980 Final Plumbing Inspection,1
11218,13471,Cardinal Grove,2233,medium,517387.0,8980,8980 Final Plumbing Inspection,1
11219,13520,Hailey's Glen,2792,medium,606920.0,9020,9020 Electric Trim,2
11220,13495,Welches Pond,2650,medium,674167.0,9060,9060 Final Electric Inspection,1
11221,13495,Welches Pond,2650,medium,674167.0,9101,9101 HVAC Startup,1
11222,13520,Hailey's Glen,2792,medium,606920.0,9101,9101 HVAC Startup,1
11223,13477,Cardinal Grove,2589,medium,750956.0,9110,9110 Gas Trim,1
11224,13471,Cardinal Grove,2233,medium,517387.0,9110,9110 Gas Trim,1
11225,13258,River Mill,3064,medium,670416.0,9110,9110 Gas Trim,1
11226,13339,Peninsula,5583,high,750956.0,9460,9460 Attic Insulation,1
11227,13281,Marlin Chase,3558,medium,786910.0,9500,9500 Blower Door/Ductblaster,1
11228,13529,Governors,1901,medium,787652.0,9620,9620 Install Appliances,1
11229,13339,Peninsula,5583,high,750956.0,9620,9620 Install Appliances,1
11230,13030,Peninsula,5546,high,1768191.0,9700,9700 Install Hardwood Flooring,1
11231,13465,Cardinal Grove,1764,medium,569722.0,9740,9740 Fireplace Start Up,1
11232,13088,Forest Hills,3580,medium,222544.0,9740,9740 Fireplace Start Up,1
11233,13144,Marlin Chase,3055,medium,740636.0,9755,9755 Rec. GE Appliance Pkg2 Allocation,1
11234,13507,Welches Pond,2852,medium,845914.0,9940,9940 Final Inspection,1
11235,13465,Cardinal Grove,1764,medium,569722.0,9980,9980 Final Cleaning,1
11236,13503,Marsh Island,4307,medium,892519.0,9980,9980 Final Cleaning,1
11237,13258,River Mill,3064,medium,670416.0,9980,9980 Final Cleaning,1
11238,13137,Marlin Chase,2330,medium,637264.0,9985,9985 Final Clean 2,1
11239,13253,River Mill,2912,medium,692624.0,9985,9985 Final Clean 2,1
11240,13035,Forest Hills,4024,medium,816522.0,9985,9985 Final Clean 2,1
11241,13264,Welches Pond,3905,medium,915363.0,9990,9990 2nd Stage Termite Treatment,1
11242,13264,Welches Pond,3905,medium,915363.0,10100,10100 Irrigation Installation,1
11243,13485,Peninsula,4241,medium,706147.0,10260,10260 Install House Numbers,1
11244,13088,Forest Hills,3580,medium,222544.0,10300,10300 Install Driveway,5
11245,13164,Welches Pond,4497,medium,1024665.0,10300,10300 Install Driveway,1
11246,13495,Welches Pond,2650,medium,674167.0,10301,10301 Driveway Apron,1
11247,13495,Welches Pond,2650,medium,674167.0,10340,10340 Install Leadwalk & Comm. Sidewalk,1
11248,13496,Hailey's Glen,3443,medium,316917.0,10380,10380 As Built Survey,1
11249,13503,Marsh Island,4307,medium,892519.0,10380,10380 As Built Survey,1
11250,13476,Durham Farms,4277,medium,750956.0,10420,10420 Powerwash,1
11251,13137,Marlin Chase,2330,medium,637264.0,10420,10420 Powerwash,1
11252,13468,Governors,2977,medium,869889.0,10660,10660 Quality Inspection,1
11253,13113,Marlin Chase,2814,medium,750956.0,10660,10660 Quality Inspection,1
11254,13092,Marlin Chase,2079,medium,433351.0,10780,10780 Customer Walk,1
11255,13144,Marlin Chase,3055,medium,740636.0,0,appcheck Check Appliances for Damage,1
11256,13264,Welches Pond,3905,medium,915363.0,0,cabcheck Check Cabinets for Damage,1
11257,13392,Marsh Island,2795,medium,771707.0,0,vancheck Check Vanity Tops/Windows for Damage,1
11258,13495,Welches Pond,2650,medium,674167.0,0,cabcheck Check Cabinets for Damage,1
11259,13408,NewMarket,3940,medium,889253.0,0,cabcheck Check Cabinets for Damage,1
11260,13088,Forest Hills,3580,medium,222544.0,4265,4265 Receive Window Screens,1
11261,13462,Peninsula,4787,high,1490269.0,6860,6860 Siding Installation,27
11262,13529,Governors,1901,medium,787652.0,6885,6885 Install Screen Porch Enclosure,1
11263,13388,Marsh Island,5848,high,750956.0,6885,6885 Install Screen Porch Enclosure,1
11264,13388,Marsh Island,5848,high,750956.0,8380,8380 Template Countertops,1
11265,13495,Welches Pond,2650,medium,674167.0,8540,8540 Install Bath Accessories,1
11266,13520,Hailey's Glen,2792,medium,606920.0,8540,8540 Install Bath Accessories,1
11267,13164,Welches Pond,4497,medium,1024665.0,8540,8540 Install Bath Accessories,1
11268,13495,Welches Pond,2650,medium,674167.0,8545,8545 Install Mirrors,1
11269,13520,Hailey's Glen,2792,medium,606920.0,8545,8545 Install Mirrors,1
11270,13495,Welches Pond,2650,medium,674167.0,8580,8580 Install Shower Enclosures,16
11271,13281,Marlin Chase,3558,medium,786910.0,8580,8580 Install Shower Enclosures,1
11272,13164,Welches Pond,4497,medium,1024665.0,8900,8900 Install Closet Shelving,1
11273,13495,Welches Pond,2650,medium,674167.0,8900,8900 Install Closet Shelving,1
11274,13520,Hailey's Glen,2792,medium,606920.0,8900,8900 Install Closet Shelving,1
11275,13281,Marlin Chase,3558,medium,786910.0,8980,8980 Final Plumbing Inspection,1
11276,13529,Governors,1901,medium,787652.0,9020,9020 Electric Trim,2
11277,13253,River Mill,2912,medium,692624.0,9060,9060 Final Electric Inspection,1
11278,13529,Governors,1901,medium,787652.0,9100,9100 HVAC Trim / Set Unit,1
11279,13520,Hailey's Glen,2792,medium,606920.0,9260,9260 Structured Wiring Trim,1
11280,13529,Governors,1901,medium,787652.0,9260,9260 Structured Wiring Trim,1
11281,13253,River Mill,2912,medium,692624.0,9500,9500 Blower Door/Ductblaster,1
11282,13112,Marlin Chase,3171,medium,634940.0,9500,9500 Blower Door/Ductblaster,1
11283,13030,Peninsula,5546,high,1768191.0,9660,9660 Install Carpet Flooring,1
11284,13392,Marsh Island,2795,medium,771707.0,9700,9700 Install Hardwood Flooring,1
11285,12832,Peninsula,4562,high,1090397.0,9700,9700 Install Hardwood Flooring,1
11286,13485,Peninsula,4241,medium,706147.0,9700,9700 Install Hardwood Flooring,1
11287,13477,Cardinal Grove,2589,medium,750956.0,9740,9740 Fireplace Start Up,1
11288,13465,Cardinal Grove,1764,medium,569722.0,9755,9755 Rec. GE Appliance Pkg2 Allocation,1
11289,13088,Forest Hills,3580,medium,222544.0,9820,9820 Install Gutters,8
11290,13442,Walden,4633,medium,656370.0,9940,9940 Final Inspection,8
11291,13477,Cardinal Grove,2589,medium,750956.0,9980,9980 Final Cleaning,1
11292,13471,Cardinal Grove,2233,medium,517387.0,9980,9980 Final Cleaning,1
11293,13144,Marlin Chase,3055,medium,740636.0,9980,9980 Final Cleaning,1
11294,13442,Walden,4633,medium,656370.0,9985,9985 Final Clean 2,1
11295,13138,Marlin Chase,3171,medium,859133.0,10020,10020 Final Grade,1
11296,13349,Peninsula Lakes,2188,medium,442826.0,10100,10100 Irrigation Installation,1
11297,13394,Peninsula Lakes,2154,medium,474879.0,10100,10100 Irrigation Installation,1
11298,13264,Welches Pond,3905,medium,915363.0,10140,10140 Sod Installation,1
11299,13264,Welches Pond,3905,medium,915363.0,10180,10180 Shrub Installation,1
11300,13495,Welches Pond,2650,medium,674167.0,10260,10260 Install House Numbers,1
11301,13164,Welches Pond,4497,medium,1024665.0,10260,10260 Install House Numbers,1
11302,13253,River Mill,2912,medium,692624.0,10260,10260 Install House Numbers,1
11303,13495,Welches Pond,2650,medium,674167.0,10300,10300 Install Driveway,1
11304,13140,Marlin Chase,2824,medium,766881.0,10420,10420 Powerwash,1
11305,13442,Walden,4633,medium,656370.0,10420,10420 Powerwash,1
11306,13339,Peninsula,5583,high,750956.0,10460,10460 Drywall Touch Up,2
11307,13465,Cardinal Grove,1764,medium,569722.0,10501,10501 Paint Retouch,1
11308,13258,River Mill,3064,medium,670416.0,10502,10502 Stain Stairs/Railings,0
11309,13465,Cardinal Grove,1764,medium,569722.0,10620,10620 Punch Out Allocation,1
11310,13137,Marlin Chase,2330,medium,637264.0,10660,10660 Quality Inspection,1
11311,13394,Peninsula Lakes,2154,medium,474879.0,10745,10745 Install Window Coverings,1
11312,13465,Cardinal Grove,1764,medium,569722.0,10745,10745 Install Window Coverings,1
11313,13136,Marlin Chase,3170,medium,806102.0,10780,10780 Customer Walk,1
11314,13035,Forest Hills,4024,medium,816522.0,10780,10780 Customer Walk,1
11315,12920,Peninsula,4116,high,1454538.0,10780,10780 Customer Walk,1
11316,12920,Peninsula,4116,high,1454538.0,10820,10820 Settlement,1
11317,13088,Forest Hills,3580,medium,222544.0,0,cabcheck Check Cabinets for Damage,1
11318,13164,Welches Pond,4497,medium,1024665.0,0,cabcheck Check Cabinets for Damage,1
11319,13392,Marsh Island,2795,medium,771707.0,0,cabcheck Check Cabinets for Damage,1
11320,13501,Hailey's Glen,2736,medium,694771.0,0,appcheck Check Appliances for Damage,1
11321,13112,Marlin Chase,3171,medium,634940.0,0,appcheck Check Appliances for Damage,1
11322,13258,River Mill,3064,medium,670416.0,4590,4590 Install Metal Roofing,1
11323,13476,Durham Farms,4277,medium,750956.0,4981,4981 Deliver Sinks,1
11324,13088,Forest Hills,3580,medium,222544.0,6381,6381 Drywall Punch,2
11325,13258,River Mill,3064,medium,670416.0,6381,6381 Drywall Punch,2
11326,13496,Hailey's Glen,3443,medium,316917.0,6381,6381 Drywall Punch,1
11327,13485,Peninsula,4241,medium,706147.0,6885,6885 Install Screen Porch Enclosure,1
11328,13112,Marlin Chase,3171,medium,634940.0,7140,7140 Exterior Painting,3
11329,13030,Peninsula,5546,high,1768191.0,7140,7140 Exterior Painting,5
11330,13495,Welches Pond,2650,medium,674167.0,7825,7825 Crawl Poly,1
11331,13030,Peninsula,5546,high,1768191.0,7861,7861 Interior Trim Punch,1
11332,13408,NewMarket,3940,medium,889253.0,8305,8305 Cabinet Punch,1
11333,13253,River Mill,2912,medium,692624.0,8305,8305 Cabinet Punch,1
11334,13392,Marsh Island,2795,medium,771707.0,8380,8380 Template Countertops,1
11335,13392,Marsh Island,2795,medium,771707.0,8390,8390 Stone Interior Fireplace,1
11336,13529,Governors,1901,medium,787652.0,8460,8460 Install Countertops,1
11337,13495,Welches Pond,2650,medium,674167.0,8465,8465 Install Tiled Backsplash,1
11338,13339,Peninsula,5583,high,750956.0,8579,8579 Template Shower Enclosure,1
11339,13496,Hailey's Glen,3443,medium,316917.0,8940,8940 Plumbing Trim,1
11340,13030,Peninsula,5546,high,1768191.0,8980,8980 Final Plumbing Inspection,1
11341,13496,Hailey's Glen,3443,medium,316917.0,9060,9060 Final Electric Inspection,1
11342,13030,Peninsula,5546,high,1768191.0,9060,9060 Final Electric Inspection,1
11343,13030,Peninsula,5546,high,1768191.0,9110,9110 Gas Trim,1
11344,13339,Peninsula,5583,high,750956.0,9360,9360 Receive Grill/Firebox,0
11345,13501,Hailey's Glen,2736,medium,694771.0,9500,9500 Blower Door/Ductblaster,1
11346,13349,Peninsula Lakes,2188,medium,442826.0,9500,9500 Blower Door/Ductblaster,1
11347,13503,Marsh Island,4307,medium,892519.0,9500,9500 Blower Door/Ductblaster,1
11348,13485,Peninsula,4241,medium,706147.0,9660,9660 Install Carpet Flooring,1
11349,13392,Marsh Island,2795,medium,771707.0,9660,9660 Install Carpet Flooring,1
11350,13495,Welches Pond,2650,medium,674167.0,9660,9660 Install Carpet Flooring,1
11351,12832,Peninsula,4562,high,1090397.0,9660,9660 Install Carpet Flooring,1
11352,13495,Welches Pond,2650,medium,674167.0,9700,9700 Install Hardwood Flooring,1
11353,13164,Welches Pond,4497,medium,1024665.0,9700,9700 Install Hardwood Flooring,1
11354,13477,Cardinal Grove,2589,medium,750956.0,9755,9755 Rec. GE Appliance Pkg2 Allocation,1
11355,13471,Cardinal Grove,2233,medium,517387.0,9755,9755 Rec. GE Appliance Pkg2 Allocation,1
11356,12832,Peninsula,4562,high,1090397.0,9756,9756 Receive N/S Appliance Pkg 2,1
11357,13253,River Mill,2912,medium,692624.0,9820,9820 Install Gutters,1
11358,13113,Marlin Chase,2814,medium,750956.0,9940,9940 Final Inspection,1
11359,13144,Marlin Chase,3055,medium,740636.0,9940,9940 Final Inspection,1
11360,13091,Marlin Chase,2591,medium,562928.0,9940,9940 Final Inspection,1
11361,13503,Marsh Island,4307,medium,892519.0,10020,10020 Final Grade,1
11362,13408,NewMarket,3940,medium,889253.0,10020,10020 Final Grade,1
11363,13164,Welches Pond,4497,medium,1024665.0,10020,10020 Final Grade,1
11364,13495,Welches Pond,2650,medium,674167.0,10020,10020 Final Grade,1
11365,13138,Marlin Chase,3171,medium,859133.0,10100,10100 Irrigation Installation,1
11366,13138,Marlin Chase,3171,medium,859133.0,10140,10140 Sod Installation,1
11367,13349,Peninsula Lakes,2188,medium,442826.0,10140,10140 Sod Installation,1
11368,13394,Peninsula Lakes,2154,medium,474879.0,10140,10140 Sod Installation,1
11369,13137,Marlin Chase,2330,medium,637264.0,10140,10140 Sod Installation,1
11370,13394,Peninsula Lakes,2154,medium,474879.0,10180,10180 Shrub Installation,1
11371,13137,Marlin Chase,2330,medium,637264.0,10180,10180 Shrub Installation,1
11372,13349,Peninsula Lakes,2188,medium,442826.0,10180,10180 Shrub Installation,1
11373,13495,Welches Pond,2650,medium,674167.0,10380,10380 As Built Survey,1
11374,13485,Peninsula,4241,medium,706147.0,10380,10380 As Built Survey,1
11375,13253,River Mill,2912,medium,692624.0,10420,10420 Powerwash,1
11376,13394,Peninsula Lakes,2154,medium,474879.0,10420,10420 Powerwash,1
11377,13388,Marsh Island,5848,high,750956.0,10460,10460 Drywall Touch Up,2
11378,13144,Marlin Chase,3055,medium,740636.0,10501,10501 Paint Retouch,1
11379,13477,Cardinal Grove,2589,medium,750956.0,10501,10501 Paint Retouch,1
11380,13471,Cardinal Grove,2233,medium,517387.0,10501,10501 Paint Retouch,1
11381,13088,Forest Hills,3580,medium,222544.0,10502,10502 Stain Stairs/Railings,0
11382,13477,Cardinal Grove,2589,medium,750956.0,10620,10620 Punch Out Allocation,1
11383,13471,Cardinal Grove,2233,medium,517387.0,10620,10620 Punch Out Allocation,1
11384,13144,Marlin Chase,3055,medium,740636.0,10620,10620 Punch Out Allocation,1
11385,13140,Marlin Chase,2824,medium,766881.0,10660,10660 Quality Inspection,1
11386,13423,Governors,2974,medium,884692.0,10660,10660 Quality Inspection,-4
11387,13253,River Mill,2912,medium,692624.0,10660,10660 Quality Inspection,1
11388,13138,Marlin Chase,3171,medium,859133.0,10745,10745 Install Window Coverings,1
11389,13476,Durham Farms,4277,medium,750956.0,10780,10780 Customer Walk,1
11390,13139,Marlin Chase,2554,medium,704067.0,10780,10780 Customer Walk,1
11391,13258,River Mill,3064,medium,670416.0,0,cabcheck Check Cabinets for Damage,1
11392,13277,Mosaic,1704,medium,561869.0,0,cabcheck Check Cabinets for Damage,1
11393,13520,Hailey's Glen,2792,medium,606920.0,0,cabcheck Check Cabinets for Damage,1
11394,13529,Governors,1901,medium,787652.0,0,cabcheck Check Cabinets for Damage,1
11395,13496,Hailey's Glen,3443,medium,316917.0,6340,6340 Install Overhead Door,1
11396,13030,Peninsula,5546,high,1768191.0,6381,6381 Drywall Punch,1
11397,13485,Peninsula,4241,medium,706147.0,6381,6381 Drywall Punch,1
11398,13164,Welches Pond,4497,medium,1024665.0,7825,7825 Crawl Poly,1
11399,13520,Hailey's Glen,2792,medium,606920.0,7825,7825 Crawl Poly,1
11400,13392,Marsh Island,2795,medium,771707.0,7861,7861 Interior Trim Punch,1
11401,13520,Hailey's Glen,2792,medium,606920.0,7861,7861 Interior Trim Punch,1
11402,12832,Peninsula,4562,high,1090397.0,7861,7861 Interior Trim Punch,1
11403,13485,Peninsula,4241,medium,706147.0,7861,7861 Interior Trim Punch,1
11404,13520,Hailey's Glen,2792,medium,606920.0,8460,8460 Install Countertops,1
11405,13264,Welches Pond,3905,medium,915363.0,8579,8579 Template Shower Enclosure,1
11406,13495,Welches Pond,2650,medium,674167.0,8579,8579 Template Shower Enclosure,1
11407,13529,Governors,1901,medium,787652.0,8920,8920 Install Water Heater/1st Trim,1
11408,13520,Hailey's Glen,2792,medium,606920.0,8940,8940 Plumbing Trim,3
11409,13485,Peninsula,4241,medium,706147.0,8940,8940 Plumbing Trim,2
11410,13520,Hailey's Glen,2792,medium,606920.0,9060,9060 Final Electric Inspection,1
11411,13529,Governors,1901,medium,787652.0,9101,9101 HVAC Startup,1
11412,13496,Hailey's Glen,3443,medium,316917.0,9110,9110 Gas Trim,1
11413,13485,Peninsula,4241,medium,706147.0,9110,9110 Gas Trim,1
11414,13164,Welches Pond,4497,medium,1024665.0,9110,9110 Gas Trim,1
11415,13278,Mosaic,2320,medium,818814.0,9500,9500 Blower Door/Ductblaster,1
11416,13164,Welches Pond,4497,medium,1024665.0,9660,9660 Install Carpet Flooring,1
11417,13264,Welches Pond,3905,medium,915363.0,9660,9660 Install Carpet Flooring,1
11418,13520,Hailey's Glen,2792,medium,606920.0,9700,9700 Install Hardwood Flooring,1
11419,13529,Governors,1901,medium,787652.0,9790,9790 Basement Blanket Insulation,1
11420,13408,NewMarket,3940,medium,889253.0,9820,9820 Install Gutters,1
11421,13360,Peninsula Lakes,3496,medium,575090.0,9940,9940 Final Inspection,1
11422,13401,Welches Pond,2927,medium,731557.0,9940,9940 Final Inspection,1
11423,13394,Peninsula Lakes,2154,medium,474879.0,9940,9940 Final Inspection,1
11424,13349,Peninsula Lakes,2188,medium,442826.0,9985,9985 Final Clean 2,1
11425,13152,Marlin Chase,2710,medium,768496.0,9985,9985 Final Clean 2,1
11426,13495,Welches Pond,2650,medium,674167.0,9990,9990 2nd Stage Termite Treatment,1
11427,13503,Marsh Island,4307,medium,892519.0,9990,9990 2nd Stage Termite Treatment,1
11428,13112,Marlin Chase,3171,medium,634940.0,10020,10020 Final Grade,1
11429,13496,Hailey's Glen,3443,medium,316917.0,10020,10020 Final Grade,1
11430,13495,Welches Pond,2650,medium,674167.0,10100,10100 Irrigation Installation,1
11431,13503,Marsh Island,4307,medium,892519.0,10100,10100 Irrigation Installation,1
11432,13138,Marlin Chase,3171,medium,859133.0,10180,10180 Shrub Installation,1
11433,13140,Marlin Chase,2824,medium,766881.0,10380,10380 As Built Survey,1
11434,13152,Marlin Chase,2710,medium,768496.0,10420,10420 Powerwash,1
11435,13349,Peninsula Lakes,2188,medium,442826.0,10420,10420 Powerwash,1
11436,13339,Peninsula,5583,high,750956.0,10500,10500 Paint 2,3
11437,13112,Marlin Chase,3171,medium,634940.0,10501,10501 Paint Retouch,1
11438,13278,Mosaic,2320,medium,818814.0,10620,10620 Punch Out Allocation,1
11439,13442,Walden,4633,medium,656370.0,10660,10660 Quality Inspection,1
11440,13507,Welches Pond,2852,medium,845914.0,10660,10660 Quality Inspection,1
11441,13145,Marlin Chase,3204,medium,841553.0,10780,10780 Customer Walk,1
11442,13120,Marsh Island,4291,medium,851477.0,10780,10780 Customer Walk,1
11443,13339,Peninsula,5583,high,750956.0,0,vancheck Check Vanity Tops/Windows for Damage,1
11444,13477,Cardinal Grove,2589,medium,750956.0,0,appcheck Check Appliances for Damage,1
11445,13465,Cardinal Grove,1764,medium,569722.0,0,appcheck Check Appliances for Damage,1
11446,13339,Peninsula,5583,high,750956.0,4542,4542 Measure/Order Window Coverings,1
11447,13392,Marsh Island,2795,medium,771707.0,6381,6381 Drywall Punch,1
11448,13520,Hailey's Glen,2792,medium,606920.0,6381,6381 Drywall Punch,1
11449,12832,Peninsula,4562,high,1090397.0,6381,6381 Drywall Punch,1
11450,13408,NewMarket,3940,medium,889253.0,6381,6381 Drywall Punch,2
11451,13339,Peninsula,5583,high,750956.0,6884,6884 Measure Screen Porch Enclosure,1
11452,13253,River Mill,2912,medium,692624.0,6885,6885 Install Screen Porch Enclosure,1
11453,13144,Marlin Chase,3055,medium,740636.0,7140,7140 Exterior Painting,1
11454,13088,Forest Hills,3580,medium,222544.0,8305,8305 Cabinet Punch,1
11455,13388,Marsh Island,5848,high,750956.0,8390,8390 Stone Interior Fireplace,5
11456,13529,Governors,1901,medium,787652.0,8540,8540 Install Bath Accessories,1
11457,13529,Governors,1901,medium,787652.0,8545,8545 Install Mirrors,1
11458,13529,Governors,1901,medium,787652.0,8580,8580 Install Shower Enclosures,15
11459,13529,Governors,1901,medium,787652.0,8900,8900 Install Closet Shelving,1
11460,13520,Hailey's Glen,2792,medium,606920.0,8920,8920 Install Water Heater/1st Trim,1
11461,13030,Peninsula,5546,high,1768191.0,8940,8940 Plumbing Trim,2
11462,13164,Welches Pond,4497,medium,1024665.0,8940,8940 Plumbing Trim,1
11463,13520,Hailey's Glen,2792,medium,606920.0,8980,8980 Final Plumbing Inspection,1
11464,13388,Marsh Island,5848,high,750956.0,9620,9620 Install Appliances,1
11465,13529,Governors,1901,medium,787652.0,9700,9700 Install Hardwood Flooring,2
11466,13164,Welches Pond,4497,medium,1024665.0,9740,9740 Fireplace Start Up,1
11467,13088,Forest Hills,3580,medium,222544.0,9755,9755 Rec. GE Appliance Pkg2 Allocation,1
11468,13088,Forest Hills,3580,medium,222544.0,9980,9980 Final Cleaning,1
11469,13503,Marsh Island,4307,medium,892519.0,9985,9985 Final Clean 2,1
11470,13144,Marlin Chase,3055,medium,740636.0,9985,9985 Final Clean 2,1
11471,13496,Hailey's Glen,3443,medium,316917.0,9990,9990 2nd Stage Termite Treatment,1
11472,13139,Marlin Chase,2554,medium,704067.0,9990,9990 2nd Stage Termite Treatment,1
11473,13468,Governors,2977,medium,869889.0,10020,10020 Final Grade,1
11474,13091,Marlin Chase,2591,medium,562928.0,10020,10020 Final Grade,1
11475,13253,River Mill,2912,medium,692624.0,10061,10061 Install Fence,1
11476,13423,Governors,2974,medium,884692.0,10100,10100 Irrigation Installation,1
11477,13468,Governors,2977,medium,869889.0,10100,10100 Irrigation Installation,1
11478,13496,Hailey's Glen,3443,medium,316917.0,10100,10100 Irrigation Installation,1
11479,13164,Welches Pond,4497,medium,1024665.0,10100,10100 Irrigation Installation,1
11480,13495,Welches Pond,2650,medium,674167.0,10140,10140 Sod Installation,1
11481,13495,Welches Pond,2650,medium,674167.0,10180,10180 Shrub Installation,1
11482,13253,River Mill,2912,medium,692624.0,10180,10180 Shrub Installation,1
11483,13529,Governors,1901,medium,787652.0,10260,10260 Install House Numbers,1
11484,13520,Hailey's Glen,2792,medium,606920.0,10301,10301 Driveway Apron,1
11485,13520,Hailey's Glen,2792,medium,606920.0,10340,10340 Install Leadwalk & Comm. Sidewalk,1
11486,13030,Peninsula,5546,high,1768191.0,10380,10380 As Built Survey,1
11487,13144,Marlin Chase,3055,medium,740636.0,10420,10420 Powerwash,1
11488,13258,River Mill,3064,medium,670416.0,10501,10501 Paint Retouch,3
11489,13088,Forest Hills,3580,medium,222544.0,10620,10620 Punch Out Allocation,1
11490,13503,Marsh Island,4307,medium,892519.0,10660,10660 Quality Inspection,1
11491,13152,Marlin Chase,2710,medium,768496.0,10660,10660 Quality Inspection,1
11492,13138,Marlin Chase,3171,medium,859133.0,10780,10780 Customer Walk,1
11493,13394,Peninsula Lakes,2154,medium,474879.0,10780,10780 Customer Walk,1
11494,13101,Marlin Chase,2461,medium,682900.0,10820,10820 Settlement,1
11495,13440,Marlin Chase,3067,medium,714189.0,10820,10820 Settlement,1
11496,13032,Welches Pond,2812,medium,643995.0,10820,10820 Settlement,1
11497,13032,Welches Pond,2812,medium,643995.0,10888,10888 Release All Retainage,1
11498,13101,Marlin Chase,2461,medium,682900.0,10888,10888 Release All Retainage,1
11499,13440,Marlin Chase,3067,medium,714189.0,10888,10888 Release All Retainage,1
11500,13101,Marlin Chase,2461,medium,682900.0,11585,11585 Exterior Paint Retainage,1
11501,13440,Marlin Chase,3067,medium,714189.0,11585,11585 Exterior Paint Retainage,1
11502,13032,Welches Pond,2812,medium,643995.0,11585,11585 Exterior Paint Retainage,1
11503,13032,Welches Pond,2812,medium,643995.0,11980,11980 Sod Retainage,1
11504,13101,Marlin Chase,2461,medium,682900.0,11980,11980 Sod Retainage,1
11505,13440,Marlin Chase,3067,medium,714189.0,11980,11980 Sod Retainage,1
11506,13101,Marlin Chase,2461,medium,682900.0,12060,12060 Irrigation Retainage,1
11507,13440,Marlin Chase,3067,medium,714189.0,12060,12060 Irrigation Retainage,1
11508,13032,Welches Pond,2812,medium,643995.0,12060,12060 Irrigation Retainage,1
11509,13032,Welches Pond,2812,medium,643995.0,12100,12100 Shrub Retainage,1
11510,13101,Marlin Chase,2461,medium,682900.0,12100,12100 Shrub Retainage,1
11511,13440,Marlin Chase,3067,medium,714189.0,12100,12100 Shrub Retainage,1
11512,13101,Marlin Chase,2461,medium,682900.0,12180,12180 Driveway Retainage,1
11513,13440,Marlin Chase,3067,medium,714189.0,12180,12180 Driveway Retainage,1
11514,13032,Welches Pond,2812,medium,643995.0,12180,12180 Driveway Retainage,1
11515,13032,Welches Pond,2812,medium,643995.0,12180,12180.1 Driveway Top Coat Allocation,0
11516,13281,Marlin Chase,3558,medium,786910.0,0,appcheck Check Appliances for Damage,1
11517,13471,Cardinal Grove,2233,medium,517387.0,0,appcheck Check Appliances for Damage,1
11518,13529,Governors,1901,medium,787652.0,4461,4461 Install Gas Lateral,1
11519,13388,Marsh Island,5848,high,750956.0,5120,5120 HVAC Set Furnace,1
11520,13264,Welches Pond,3905,medium,915363.0,6381,6381 Drywall Punch,1
11521,13164,Welches Pond,4497,medium,1024665.0,6381,6381 Drywall Punch,1
11522,13529,Governors,1901,medium,787652.0,6390,6390 Schedule Gas Meter,1
11523,13164,Welches Pond,4497,medium,1024665.0,6884,6884 Measure Screen Porch Enclosure,1
11524,13164,Welches Pond,4497,medium,1024665.0,7861,7861 Interior Trim Punch,1
11525,13529,Governors,1901,medium,787652.0,7861,7861 Interior Trim Punch,1
11526,13164,Welches Pond,4497,medium,1024665.0,8545,8545 Install Mirrors,3
11527,13164,Welches Pond,4497,medium,1024665.0,8580,8580 Install Shower Enclosures,2
11528,13496,Hailey's Glen,3443,medium,316917.0,8580,8580 Install Shower Enclosures,1
11529,13253,River Mill,2912,medium,692624.0,8580,8580 Install Shower Enclosures,1
11530,13264,Welches Pond,3905,medium,915363.0,8940,8940 Plumbing Trim,1
11531,13529,Governors,1901,medium,787652.0,8940,8940 Plumbing Trim,1
11532,13496,Hailey's Glen,3443,medium,316917.0,8980,8980 Final Plumbing Inspection,1
11533,13485,Peninsula,4241,medium,706147.0,8980,8980 Final Plumbing Inspection,1
11534,13164,Welches Pond,4497,medium,1024665.0,8980,8980 Final Plumbing Inspection,1
11535,13088,Forest Hills,3580,medium,222544.0,9060,9060 Final Electric Inspection,1
11536,13477,Cardinal Grove,2589,medium,750956.0,9500,9500 Blower Door/Ductblaster,1
11537,13465,Cardinal Grove,1764,medium,569722.0,9500,9500 Blower Door/Ductblaster,1
11538,13277,Mosaic,1704,medium,561869.0,9500,9500 Blower Door/Ductblaster,1
11539,13496,Hailey's Glen,3443,medium,316917.0,9740,9740 Fireplace Start Up,1
11540,13030,Peninsula,5546,high,1768191.0,9740,9740 Fireplace Start Up,1
11541,13030,Peninsula,5546,high,1768191.0,9755,9755 Rec. GE Appliance Pkg2 Allocation,1
11542,13258,River Mill,3064,medium,670416.0,9755,9755 Rec. GE Appliance Pkg2 Allocation,1
11543,13030,Peninsula,5546,high,1768191.0,9756,9756 Receive N/S Appliance Pkg 2,1
11544,13035,Forest Hills,4024,medium,816522.0,9820,9820 Install Gutters,1
11545,13529,Governors,1901,medium,787652.0,9860,9860 Final Utility Connection,0
11546,13035,Forest Hills,4024,medium,816522.0,9940,9940 Final Inspection,1
11547,13281,Marlin Chase,3558,medium,786910.0,9940,9940 Final Inspection,1
11548,13520,Hailey's Glen,2792,medium,606920.0,9980,9980 Final Cleaning,1
11549,13030,Peninsula,5546,high,1768191.0,9980,9980 Final Cleaning,1
11550,13112,Marlin Chase,3171,medium,634940.0,9985,9985 Final Clean 2,1
11551,13091,Marlin Chase,2591,medium,562928.0,9985,9985 Final Clean 2,1
11552,13035,Forest Hills,4024,medium,816522.0,9990,9990 2nd Stage Termite Treatment,1
11553,13164,Welches Pond,4497,medium,1024665.0,9990,9990 2nd Stage Termite Treatment,1
11554,13277,Mosaic,1704,medium,561869.0,10061,10061 Install Fence,1
11555,13091,Marlin Chase,2591,medium,562928.0,10100,10100 Irrigation Installation,1
11556,13423,Governors,2974,medium,884692.0,10140,10140 Sod Installation,1
11557,13253,River Mill,2912,medium,692624.0,10140,10140 Sod Installation,1
11558,13496,Hailey's Glen,3443,medium,316917.0,10140,10140 Sod Installation,1
11559,13468,Governors,2977,medium,869889.0,10140,10140 Sod Installation,1
11560,13503,Marsh Island,4307,medium,892519.0,10140,10140 Sod Installation,1
11561,13164,Welches Pond,4497,medium,1024665.0,10140,10140 Sod Installation,1
11562,13503,Marsh Island,4307,medium,892519.0,10180,10180 Shrub Installation,1
11563,13164,Welches Pond,4497,medium,1024665.0,10180,10180 Shrub Installation,1
11564,13278,Mosaic,2320,medium,818814.0,10180,10180 Shrub Installation,1
11565,13468,Governors,2977,medium,869889.0,10180,10180 Shrub Installation,1
11566,13423,Governors,2974,medium,884692.0,10180,10180 Shrub Installation,1
11567,13496,Hailey's Glen,3443,medium,316917.0,10180,10180 Shrub Installation,1
11568,13520,Hailey's Glen,2792,medium,606920.0,10260,10260 Install House Numbers,1
11569,13520,Hailey's Glen,2792,medium,606920.0,10300,10300 Install Driveway,1
11570,13277,Mosaic,1704,medium,561869.0,10380,10380 As Built Survey,1
11571,13278,Mosaic,2320,medium,818814.0,10380,10380 As Built Survey,1
11572,13091,Marlin Chase,2591,medium,562928.0,10420,10420 Powerwash,1
11573,13030,Peninsula,5546,high,1768191.0,10501,10501 Paint Retouch,1
11574,13277,Mosaic,1704,medium,561869.0,10620,10620 Punch Out Allocation,1
11575,13144,Marlin Chase,3055,medium,740636.0,10660,10660 Quality Inspection,1
11576,13349,Peninsula Lakes,2188,medium,442826.0,10660,10660 Quality Inspection,1
11577,13113,Marlin Chase,2814,medium,750956.0,10780,10780 Customer Walk,1
11578,13401,Welches Pond,2927,medium,731557.0,10780,10780 Customer Walk,1
11579,13360,Peninsula Lakes,3496,medium,575090.0,10820,10820 Settlement,1
11580,13092,Marlin Chase,2079,medium,433351.0,10820,10820 Settlement,1
11581,13092,Marlin Chase,2079,medium,433351.0,10888,10888 Release All Retainage,1
11582,13360,Peninsula Lakes,3496,medium,575090.0,10888,10888 Release All Retainage,1
11583,13360,Peninsula Lakes,3496,medium,575090.0,11585,11585 Exterior Paint Retainage,1
11584,13092,Marlin Chase,2079,medium,433351.0,11585,11585 Exterior Paint Retainage,1
11585,13092,Marlin Chase,2079,medium,433351.0,11980,11980 Sod Retainage,1
11586,13360,Peninsula Lakes,3496,medium,575090.0,11980,11980 Sod Retainage,1
11587,13360,Peninsula Lakes,3496,medium,575090.0,12060,12060 Irrigation Retainage,1
11588,13092,Marlin Chase,2079,medium,433351.0,12060,12060 Irrigation Retainage,1
11589,13092,Marlin Chase,2079,medium,433351.0,12100,12100 Shrub Retainage,1
11590,13360,Peninsula Lakes,3496,medium,575090.0,12100,12100 Shrub Retainage,1
11591,13092,Marlin Chase,2079,medium,433351.0,12180,12180 Driveway Retainage,1
11592,13360,Peninsula Lakes,3496,medium,575090.0,12180,12180 Driveway Retainage,1
11593,13360,Peninsula Lakes,3496,medium,575090.0,12180,12180.1 Driveway Top Coat Allocation,0
11594,13101,Marlin Chase,2461,medium,682900.0,99999,99999 HOME COMPLETE,1
11595,13440,Marlin Chase,3067,medium,714189.0,99999,99999 HOME COMPLETE,1
11596,13032,Welches Pond,2812,medium,643995.0,99999,99999 HOME COMPLETE,1
11597,13408,NewMarket,3940,medium,889253.0,0,appcheck Check Appliances for Damage,1
11598,13495,Welches Pond,2650,medium,674167.0,0,appcheck Check Appliances for Damage,1
11599,13388,Marsh Island,5848,high,750956.0,0,vancheck Check Vanity Tops/Windows for Damage,1
11600,13529,Governors,1901,medium,787652.0,6381,6381 Drywall Punch,1
11601,13164,Welches Pond,4497,medium,1024665.0,6887,6887 Install Outdoor Trash/Shower Encl.,1
11602,13388,Marsh Island,5848,high,750956.0,7220,7220 Install Deck Skirting/Flower Boxes,1
11603,13253,River Mill,2912,medium,692624.0,7220,7220 Install Deck Skirting/Flower Boxes,1
11604,13264,Welches Pond,3905,medium,915363.0,7861,7861 Interior Trim Punch,1
11605,13529,Governors,1901,medium,787652.0,8465,8465 Install Tiled Backsplash,1
11606,12832,Peninsula,4562,high,1090397.0,8940,8940 Plumbing Trim,2
11607,13264,Welches Pond,3905,medium,915363.0,8980,8980 Final Plumbing Inspection,6
11608,13088,Forest Hills,3580,medium,222544.0,8980,8980 Final Plumbing Inspection,1
11609,13339,Peninsula,5583,high,750956.0,9020,9020 Electric Trim,12
11610,13339,Peninsula,5583,high,750956.0,9100,9100 HVAC Trim / Set Unit,1
11611,13264,Welches Pond,3905,medium,915363.0,9110,9110 Gas Trim,1
11612,13520,Hailey's Glen,2792,medium,606920.0,9110,9110 Gas Trim,1
11613,13471,Cardinal Grove,2233,medium,517387.0,9500,9500 Blower Door/Ductblaster,1
11614,13468,Governors,2977,medium,869889.0,9500,9500 Blower Door/Ductblaster,1
11615,12832,Peninsula,4562,high,1090397.0,9755,9755 Rec. GE Appliance Pkg2 Allocation,1
11616,13485,Peninsula,4241,medium,706147.0,9755,9755 Rec. GE Appliance Pkg2 Allocation,1
11617,13477,Cardinal Grove,2589,medium,750956.0,9940,9940 Final Inspection,1
11618,13465,Cardinal Grove,1764,medium,569722.0,9940,9940 Final Inspection,1
11619,13485,Peninsula,4241,medium,706147.0,9980,9980 Final Cleaning,1
11620,13164,Welches Pond,4497,medium,1024665.0,9980,9980 Final Cleaning,1
11621,13264,Welches Pond,3905,medium,915363.0,9980,9980 Final Cleaning,1
11622,13477,Cardinal Grove,2589,medium,750956.0,9985,9985 Final Clean 2,1
11623,13465,Cardinal Grove,1764,medium,569722.0,9985,9985 Final Clean 2,1
11624,13112,Marlin Chase,3171,medium,634940.0,9990,9990 2nd Stage Termite Treatment,1
11625,13520,Hailey's Glen,2792,medium,606920.0,10020,10020 Final Grade,1
11626,13088,Forest Hills,3580,medium,222544.0,10100,10100 Irrigation Installation,1
11627,13112,Marlin Chase,3171,medium,634940.0,10100,10100 Irrigation Installation,1
11628,13091,Marlin Chase,2591,medium,562928.0,10140,10140 Sod Installation,1
11629,13277,Mosaic,1704,medium,561869.0,10140,10140 Sod Installation,1
11630,13277,Mosaic,1704,medium,561869.0,10180,10180 Shrub Installation,1
11631,13091,Marlin Chase,2591,medium,562928.0,10180,10180 Shrub Installation,1
11632,13264,Welches Pond,3905,medium,915363.0,10185,10185 Install Mist Away,11
11633,13476,Durham Farms,4277,medium,750956.0,10345,10345 Pour Concrete Steps,1
11634,13520,Hailey's Glen,2792,medium,606920.0,10380,10380 As Built Survey,1
11635,13144,Marlin Chase,3055,medium,740636.0,10380,10380 As Built Survey,1
11636,13164,Welches Pond,4497,medium,1024665.0,10380,10380 As Built Survey,1
11637,13258,River Mill,3064,medium,670416.0,10380,10380 As Built Survey,1
11638,13477,Cardinal Grove,2589,medium,750956.0,10420,10420 Powerwash,1
11639,13465,Cardinal Grove,1764,medium,569722.0,10420,10420 Powerwash,1
11640,13088,Forest Hills,3580,medium,222544.0,10420,10420 Powerwash,1
11641,13408,NewMarket,3940,medium,889253.0,10501,10501 Paint Retouch,1
11642,13485,Peninsula,4241,medium,706147.0,10501,10501 Paint Retouch,1
11643,13495,Welches Pond,2650,medium,674167.0,10501,10501 Paint Retouch,1
11644,13520,Hailey's Glen,2792,medium,606920.0,10501,10501 Paint Retouch,1
11645,12832,Peninsula,4562,high,1090397.0,10501,10501 Paint Retouch,1
11646,13495,Welches Pond,2650,medium,674167.0,10620,10620 Punch Out Allocation,1
11647,13520,Hailey's Glen,2792,medium,606920.0,10620,10620 Punch Out Allocation,1
11648,12832,Peninsula,4562,high,1090397.0,10620,10620 Punch Out Allocation,1
11649,13501,Hailey's Glen,2736,medium,694771.0,10660,10660 Quality Inspection,1
11650,13112,Marlin Chase,3171,medium,634940.0,10660,10660 Quality Inspection,1
11651,13091,Marlin Chase,2591,medium,562928.0,10660,10660 Quality Inspection,1
11652,13137,Marlin Chase,2330,medium,637264.0,10780,10780 Customer Walk,1
11653,13136,Marlin Chase,3170,medium,806102.0,10820,10820 Settlement,1
11654,13035,Forest Hills,4024,medium,816522.0,10820,10820 Settlement,1
11655,13136,Marlin Chase,3170,medium,806102.0,10888,10888 Release All Retainage,1
11656,13035,Forest Hills,4024,medium,816522.0,10888,10888 Release All Retainage,1
11657,13136,Marlin Chase,3170,medium,806102.0,11585,11585 Exterior Paint Retainage,1
11658,13035,Forest Hills,4024,medium,816522.0,11585,11585 Exterior Paint Retainage,1
11659,13136,Marlin Chase,3170,medium,806102.0,11980,11980 Sod Retainage,1
11660,13035,Forest Hills,4024,medium,816522.0,11980,11980 Sod Retainage,1
11661,13136,Marlin Chase,3170,medium,806102.0,12060,12060 Irrigation Retainage,1
11662,13035,Forest Hills,4024,medium,816522.0,12060,12060 Irrigation Retainage,1
11663,13136,Marlin Chase,3170,medium,806102.0,12100,12100 Shrub Retainage,1
11664,13035,Forest Hills,4024,medium,816522.0,12100,12100 Shrub Retainage,1
11665,13136,Marlin Chase,3170,medium,806102.0,12180,12180 Driveway Retainage,1
11666,13035,Forest Hills,4024,medium,816522.0,12180,12180 Driveway Retainage,1
11667,13035,Forest Hills,4024,medium,816522.0,12180,12180.1 Driveway Top Coat Allocation,0
11668,13092,Marlin Chase,2079,medium,433351.0,99999,99999 HOME COMPLETE,1
11669,13360,Peninsula Lakes,3496,medium,575090.0,99999,99999 HOME COMPLETE,1
11670,13088,Forest Hills,3580,medium,222544.0,0,appcheck Check Appliances for Damage,1
11671,13164,Welches Pond,4497,medium,1024665.0,0,appcheck Check Appliances for Damage,1
11672,13485,Peninsula,4241,medium,706147.0,6340,6340 Install Overhead Door,1
11673,13476,Durham Farms,4277,medium,750956.0,6381,6381 Drywall Punch,1
11674,13088,Forest Hills,3580,medium,222544.0,6820,6820 Receive Deck Skirting,1
11675,13164,Welches Pond,4497,medium,1024665.0,6885,6885 Install Screen Porch Enclosure,1
11676,13253,River Mill,2912,medium,692624.0,7180,7180 Install Exterior Railings,1
11677,13388,Marsh Island,5848,high,750956.0,7180,7180 Install Exterior Railings,1
11678,13088,Forest Hills,3580,medium,222544.0,7220,7220 Install Deck Skirting/Flower Boxes,1
11679,13258,River Mill,3064,medium,670416.0,7220,7220 Install Deck Skirting/Flower Boxes,1
11680,13495,Welches Pond,2650,medium,674167.0,7861,7861 Interior Trim Punch,1
11681,13258,River Mill,3064,medium,670416.0,8305,8305 Cabinet Punch,1
11682,13339,Peninsula,5583,high,750956.0,8460,8460 Install Countertops,1
11683,13388,Marsh Island,5848,high,750956.0,8460,8460 Install Countertops,1
11684,13258,River Mill,3064,medium,670416.0,8580,8580 Install Shower Enclosures,1
11685,13278,Mosaic,2320,medium,818814.0,8980,8980 Final Plumbing Inspection,1
11686,13253,River Mill,2912,medium,692624.0,8980,8980 Final Plumbing Inspection,1
11687,13485,Peninsula,4241,medium,706147.0,9060,9060 Final Electric Inspection,1
11688,13278,Mosaic,2320,medium,818814.0,9060,9060 Final Electric Inspection,1
11689,13164,Welches Pond,4497,medium,1024665.0,9260,9260 Structured Wiring Trim,1
11690,13442,Walden,4633,medium,656370.0,9500,9500 Blower Door/Ductblaster,5
11691,12832,Peninsula,4562,high,1090397.0,9500,9500 Blower Door/Ductblaster,1
11692,13423,Governors,2974,medium,884692.0,9500,9500 Blower Door/Ductblaster,1
11693,13485,Peninsula,4241,medium,706147.0,9740,9740 Fireplace Start Up,1
11694,13520,Hailey's Glen,2792,medium,606920.0,9740,9740 Fireplace Start Up,1
11695,13264,Welches Pond,3905,medium,915363.0,9755,9755 Rec. GE Appliance Pkg2 Allocation,5
11696,13408,NewMarket,3940,medium,889253.0,9755,9755 Rec. GE Appliance Pkg2 Allocation,1
11697,13164,Welches Pond,4497,medium,1024665.0,9755,9755 Rec. GE Appliance Pkg2 Allocation,1
11698,13349,Peninsula Lakes,2188,medium,442826.0,9940,9940 Final Inspection,1
11699,13471,Cardinal Grove,2233,medium,517387.0,9940,9940 Final Inspection,1
11700,13278,Mosaic,2320,medium,818814.0,9940,9940 Final Inspection,1
11701,13468,Governors,2977,medium,869889.0,9940,9940 Final Inspection,1
11702,13471,Cardinal Grove,2233,medium,517387.0,9985,9985 Final Clean 2,1
11703,13520,Hailey's Glen,2792,medium,606920.0,9990,9990 2nd Stage Termite Treatment,1
11704,13281,Marlin Chase,3558,medium,786910.0,10020,10020 Final Grade,1
11705,13088,Forest Hills,3580,medium,222544.0,10020,10020 Final Grade,1
11706,13088,Forest Hills,3580,medium,222544.0,10061,10061 Install Fence,1
11707,13520,Hailey's Glen,2792,medium,606920.0,10100,10100 Irrigation Installation,1
11708,13112,Marlin Chase,3171,medium,634940.0,10140,10140 Sod Installation,1
11709,13112,Marlin Chase,3171,medium,634940.0,10180,10180 Shrub Installation,1
11710,13529,Governors,1901,medium,787652.0,10301,10301 Driveway Apron,1
11711,13529,Governors,1901,medium,787652.0,10340,10340 Install Leadwalk & Comm. Sidewalk,1
11712,13423,Governors,2974,medium,884692.0,10420,10420 Powerwash,1
11713,13468,Governors,2977,medium,869889.0,10420,10420 Powerwash,1
11714,13503,Marsh Island,4307,medium,892519.0,10420,10420 Powerwash,1
11715,13471,Cardinal Grove,2233,medium,517387.0,10420,10420 Powerwash,1
11716,13088,Forest Hills,3580,medium,222544.0,10501,10501 Paint Retouch,1
11717,13164,Welches Pond,4497,medium,1024665.0,10501,10501 Paint Retouch,1
11718,13264,Welches Pond,3905,medium,915363.0,10501,10501 Paint Retouch,1
11719,13264,Welches Pond,3905,medium,915363.0,10620,10620 Punch Out Allocation,1
11720,13408,NewMarket,3940,medium,889253.0,10620,10620 Punch Out Allocation,1
11721,13164,Welches Pond,4497,medium,1024665.0,10620,10620 Punch Out Allocation,1
11722,13258,River Mill,3064,medium,670416.0,10620,10620 Punch Out Allocation,1
11723,13442,Walden,4633,medium,656370.0,10780,10780 Customer Walk,1
11724,13140,Marlin Chase,2824,medium,766881.0,10780,10780 Customer Walk,1
11725,13423,Governors,2974,medium,884692.0,10780,10780 Customer Walk,1
11726,13253,River Mill,2912,medium,692624.0,10780,10780 Customer Walk,1
11727,13468,Governors,2977,medium,869889.0,10780,10780 Customer Walk,1
11728,13476,Durham Farms,4277,medium,750956.0,10820,10820 Settlement,1
11729,13139,Marlin Chase,2554,medium,704067.0,10820,10820 Settlement,1
11730,13476,Durham Farms,4277,medium,750956.0,10888,10888 Release All Retainage,1
11731,13139,Marlin Chase,2554,medium,704067.0,10888,10888 Release All Retainage,1
11732,13476,Durham Farms,4277,medium,750956.0,11585,11585 Exterior Paint Retainage,1
11733,13139,Marlin Chase,2554,medium,704067.0,11585,11585 Exterior Paint Retainage,1
11734,13139,Marlin Chase,2554,medium,704067.0,11980,11980 Sod Retainage,1
11735,13139,Marlin Chase,2554,medium,704067.0,12060,12060 Irrigation Retainage,1
11736,13139,Marlin Chase,2554,medium,704067.0,12100,12100 Shrub Retainage,1
11737,13476,Durham Farms,4277,medium,750956.0,12180,12180.1 Driveway Top Coat Allocation,0
11738,13139,Marlin Chase,2554,medium,704067.0,12180,12180 Driveway Retainage,1
11739,13136,Marlin Chase,3170,medium,806102.0,99999,99999 HOME COMPLETE,1
11740,13035,Forest Hills,4024,medium,816522.0,99999,99999 HOME COMPLETE,1
11741,13258,River Mill,3064,medium,670416.0,0,appcheck Check Appliances for Damage,1
11742,13264,Welches Pond,3905,medium,915363.0,0,appcheck Check Appliances for Damage,1
11743,13277,Mosaic,1704,medium,561869.0,0,appcheck Check Appliances for Damage,1
11744,13520,Hailey's Glen,2792,medium,606920.0,0,appcheck Check Appliances for Damage,1
11745,13388,Marsh Island,5848,high,750956.0,4590,4590 Install Metal Roofing,3
11746,13164,Welches Pond,4497,medium,1024665.0,6340,6340 Install Overhead Door,1
11747,13495,Welches Pond,2650,medium,674167.0,6381,6381 Drywall Punch,1
11748,13339,Peninsula,5583,high,750956.0,6940,6940 Install Elevator,30
11749,13088,Forest Hills,3580,medium,222544.0,7180,7180 Install Exterior Railings,2
11750,13520,Hailey's Glen,2792,medium,606920.0,8465,8465 Install Tiled Backsplash,1
11751,13392,Marsh Island,2795,medium,771707.0,8920,8920 Install Water Heater/1st Trim,1
11752,13339,Peninsula,5583,high,750956.0,8920,8920 Install Water Heater/1st Trim,1
11753,13388,Marsh Island,5848,high,750956.0,8920,8920 Install Water Heater/1st Trim,1
11754,12832,Peninsula,4562,high,1090397.0,8980,8980 Final Plumbing Inspection,1
11755,13258,River Mill,3064,medium,670416.0,8980,8980 Final Plumbing Inspection,1
11756,13164,Welches Pond,4497,medium,1024665.0,9060,9060 Final Electric Inspection,2
11757,13529,Governors,1901,medium,787652.0,9060,9060 Final Electric Inspection,1
11758,13495,Welches Pond,2650,medium,674167.0,9110,9110 Gas Trim,1
11759,12832,Peninsula,4562,high,1090397.0,9110,9110 Gas Trim,1
11760,13164,Welches Pond,4497,medium,1024665.0,9500,9500 Blower Door/Ductblaster,1
11761,13164,Welches Pond,4497,medium,1024665.0,9820,9820 Install Gutters,1
11762,13388,Marsh Island,5848,high,750956.0,9820,9820 Install Gutters,1
11763,12832,Peninsula,4562,high,1090397.0,9940,9940 Final Inspection,1
11764,13152,Marlin Chase,2710,medium,768496.0,9940,9940 Final Inspection,1
11765,13529,Governors,1901,medium,787652.0,9980,9980 Final Cleaning,1
11766,13520,Hailey's Glen,2792,medium,606920.0,9985,9985 Final Clean 2,1
11767,13030,Peninsula,5546,high,1768191.0,9985,9985 Final Clean 2,1
11768,12832,Peninsula,4562,high,1090397.0,9985,9985 Final Clean 2,1
11769,13281,Marlin Chase,3558,medium,786910.0,9985,9985 Final Clean 2,1
11770,13278,Mosaic,2320,medium,818814.0,9990,9990 2nd Stage Termite Treatment,1
11771,13277,Mosaic,1704,medium,561869.0,9990,9990 2nd Stage Termite Treatment,1
11772,13253,River Mill,2912,medium,692624.0,9990,9990 2nd Stage Termite Treatment,1
11773,13258,River Mill,3064,medium,670416.0,10020,10020 Final Grade,1
11774,13281,Marlin Chase,3558,medium,786910.0,10100,10100 Irrigation Installation,1
11775,13520,Hailey's Glen,2792,medium,606920.0,10140,10140 Sod Installation,1
11776,13520,Hailey's Glen,2792,medium,606920.0,10180,10180 Shrub Installation,1
11777,13258,River Mill,3064,medium,670416.0,10260,10260 Install House Numbers,3
11778,13529,Governors,1901,medium,787652.0,10300,10300 Install Driveway,1
11779,13392,Marsh Island,2795,medium,771707.0,10301,10301 Driveway Apron,1
11780,13392,Marsh Island,2795,medium,771707.0,10340,10340 Install Leadwalk & Comm. Sidewalk,1
11781,13520,Hailey's Glen,2792,medium,606920.0,10420,10420 Powerwash,1
11782,13030,Peninsula,5546,high,1768191.0,10420,10420 Powerwash,1
11783,12832,Peninsula,4562,high,1090397.0,10420,10420 Powerwash,1
11784,13281,Marlin Chase,3558,medium,786910.0,10420,10420 Powerwash,1
11785,13529,Governors,1901,medium,787652.0,10501,10501 Paint Retouch,1
11786,13529,Governors,1901,medium,787652.0,10620,10620 Punch Out Allocation,1
11787,13477,Cardinal Grove,2589,medium,750956.0,10660,10660 Quality Inspection,1
11788,13465,Cardinal Grove,1764,medium,569722.0,10660,10660 Quality Inspection,1
11789,13507,Welches Pond,2852,medium,845914.0,10780,10780 Customer Walk,1
11790,13145,Marlin Chase,3204,medium,841553.0,10820,10820 Settlement,1
11791,13120,Marsh Island,4291,medium,851477.0,10820,10820 Settlement,1
11792,13401,Welches Pond,2927,medium,731557.0,10820,10820 Settlement,1
11793,13145,Marlin Chase,3204,medium,841553.0,10888,10888 Release All Retainage,1
11794,13120,Marsh Island,4291,medium,851477.0,10888,10888 Release All Retainage,1
11795,13401,Welches Pond,2927,medium,731557.0,10888,10888 Release All Retainage,1
11796,13145,Marlin Chase,3204,medium,841553.0,11585,11585 Exterior Paint Retainage,1
11797,13120,Marsh Island,4291,medium,851477.0,11585,11585 Exterior Paint Retainage,1
11798,13401,Welches Pond,2927,medium,731557.0,11585,11585 Exterior Paint Retainage,1
11799,13145,Marlin Chase,3204,medium,841553.0,11980,11980 Sod Retainage,1
11800,13120,Marsh Island,4291,medium,851477.0,11980,11980 Sod Retainage,1
11801,13401,Welches Pond,2927,medium,731557.0,11980,11980 Sod Retainage,1
11802,13145,Marlin Chase,3204,medium,841553.0,12060,12060 Irrigation Retainage,1
11803,13120,Marsh Island,4291,medium,851477.0,12060,12060 Irrigation Retainage,1
11804,13401,Welches Pond,2927,medium,731557.0,12060,12060 Irrigation Retainage,1
11805,13145,Marlin Chase,3204,medium,841553.0,12100,12100 Shrub Retainage,1
11806,13120,Marsh Island,4291,medium,851477.0,12100,12100 Shrub Retainage,1
11807,13401,Welches Pond,2927,medium,731557.0,12100,12100 Shrub Retainage,1
11808,13145,Marlin Chase,3204,medium,841553.0,12180,12180 Driveway Retainage,1
11809,13120,Marsh Island,4291,medium,851477.0,12180,12180 Driveway Retainage,1
11810,13120,Marsh Island,4291,medium,851477.0,12180,12180.1 Driveway Top Coat Allocation,0
11811,13401,Welches Pond,2927,medium,731557.0,12180,12180 Driveway Retainage,1
11812,13401,Welches Pond,2927,medium,731557.0,12180,12180.1 Driveway Top Coat Allocation,0
11813,13476,Durham Farms,4277,medium,750956.0,99999,99999 HOME COMPLETE,1
11814,13139,Marlin Chase,2554,medium,704067.0,99999,99999 HOME COMPLETE,1
11815,13520,Hailey's Glen,2792,medium,606920.0,6340,6340 Install Overhead Door,1
11816,13529,Governors,1901,medium,787652.0,6391,6391 Install Gas Meter,1
11817,13339,Peninsula,5583,high,750956.0,7140,7140 Exterior Painting,9
11818,13388,Marsh Island,5848,high,750956.0,7140,7140 Exterior Painting,1
11819,13164,Welches Pond,4497,medium,1024665.0,7140,7140 Exterior Painting,1
11820,13392,Marsh Island,2795,medium,771707.0,8460,8460 Install Countertops,3
11821,13388,Marsh Island,5848,high,750956.0,8465,8465 Install Tiled Backsplash,1
11822,13495,Welches Pond,2650,medium,674167.0,8940,8940 Plumbing Trim,1
11823,13030,Peninsula,5546,high,1768191.0,9500,9500 Blower Door/Ductblaster,1
11824,13485,Peninsula,4241,medium,706147.0,9500,9500 Blower Door/Ductblaster,1
11825,13264,Welches Pond,3905,medium,915363.0,9740,9740 Fireplace Start Up,1
11826,13495,Welches Pond,2650,medium,674167.0,9740,9740 Fireplace Start Up,1
11827,12832,Peninsula,4562,high,1090397.0,9740,9740 Fireplace Start Up,1
11828,13495,Welches Pond,2650,medium,674167.0,9755,9755 Rec. GE Appliance Pkg2 Allocation,1
11829,13091,Marlin Chase,2591,medium,562928.0,9755,9755 Rec. GE Appliance Pkg2 Allocation,1
11830,13258,River Mill,3064,medium,670416.0,9820,9820 Install Gutters,1
11831,13423,Governors,2974,medium,884692.0,9940,9940 Final Inspection,1
11832,13408,NewMarket,3940,medium,889253.0,9980,9980 Final Cleaning,1
11833,13495,Welches Pond,2650,medium,674167.0,9980,9980 Final Cleaning,1
11834,13485,Peninsula,4241,medium,706147.0,9985,9985 Final Clean 2,1
11835,13164,Welches Pond,4497,medium,1024665.0,9985,9985 Final Clean 2,1
11836,13485,Peninsula,4241,medium,706147.0,10020,10020 Final Grade,1
11837,13030,Peninsula,5546,high,1768191.0,10020,10020 Final Grade,1
11838,13281,Marlin Chase,3558,medium,786910.0,10140,10140 Sod Installation,1
11839,13281,Marlin Chase,3558,medium,786910.0,10180,10180 Shrub Installation,1
11840,13392,Marsh Island,2795,medium,771707.0,10300,10300 Install Driveway,1
11841,13485,Peninsula,4241,medium,706147.0,10420,10420 Powerwash,1
11842,13164,Welches Pond,4497,medium,1024665.0,10420,10420 Powerwash,1
11843,13278,Mosaic,2320,medium,818814.0,10420,10420 Powerwash,1
11844,13112,Marlin Chase,3171,medium,634940.0,10420,10420 Powerwash,1
11845,13281,Marlin Chase,3558,medium,786910.0,10660,10660 Quality Inspection,1
11846,13471,Cardinal Grove,2233,medium,517387.0,10660,10660 Quality Inspection,1
11847,13030,Peninsula,5546,high,1768191.0,10660,10660 Quality Inspection,1
11848,13503,Marsh Island,4307,medium,892519.0,10780,10780 Customer Walk,1
11849,13152,Marlin Chase,2710,medium,768496.0,10780,10780 Customer Walk,1
11850,13394,Peninsula Lakes,2154,medium,474879.0,10820,10820 Settlement,1
11851,13394,Peninsula Lakes,2154,medium,474879.0,10888,10888 Release All Retainage,1
11852,13394,Peninsula Lakes,2154,medium,474879.0,11585,11585 Exterior Paint Retainage,1
11853,13394,Peninsula Lakes,2154,medium,474879.0,11980,11980 Sod Retainage,1
11854,13394,Peninsula Lakes,2154,medium,474879.0,12060,12060 Irrigation Retainage,1
11855,13394,Peninsula Lakes,2154,medium,474879.0,12100,12100 Shrub Retainage,1
11856,13394,Peninsula Lakes,2154,medium,474879.0,12180,12180 Driveway Retainage,1
11857,13394,Peninsula Lakes,2154,medium,474879.0,12180,12180.1 Driveway Top Coat Allocation,0
11858,13145,Marlin Chase,3204,medium,841553.0,99999,99999 HOME COMPLETE,1
11859,13120,Marsh Island,4291,medium,851477.0,99999,99999 HOME COMPLETE,1
11860,13401,Welches Pond,2927,medium,731557.0,99999,99999 HOME COMPLETE,1
11861,13529,Governors,1901,medium,787652.0,7140,7140 Exterior Painting,1
11862,13277,Mosaic,1704,medium,561869.0,8980,8980 Final Plumbing Inspection,1
11863,13495,Welches Pond,2650,medium,674167.0,8980,8980 Final Plumbing Inspection,1
11864,13277,Mosaic,1704,medium,561869.0,9060,9060 Final Electric Inspection,1
11865,13339,Peninsula,5583,high,750956.0,9101,9101 HVAC Startup,1
11866,13462,Peninsula,4787,high,1490269.0,9140,9140 2nd Stage Air Seal,1
11867,13397,Peninsula,5533,high,750956.0,9140,9140 2nd Stage Air Seal,1
11868,13388,Marsh Island,5848,high,750956.0,9380,9380 Install Irrigation Well,1
11869,13264,Welches Pond,3905,medium,915363.0,9500,9500 Blower Door/Ductblaster,1
11870,13495,Welches Pond,2650,medium,674167.0,9500,9500 Blower Door/Ductblaster,1
11871,13496,Hailey's Glen,3443,medium,316917.0,9500,9500 Blower Door/Ductblaster,1
11872,13408,NewMarket,3940,medium,889253.0,9500,9500 Blower Door/Ductblaster,1
11873,13164,Welches Pond,4497,medium,1024665.0,9940,9940 Final Inspection,1
11874,13277,Mosaic,1704,medium,561869.0,9940,9940 Final Inspection,1
11875,13501,Hailey's Glen,2736,medium,694771.0,9940,9940 Final Inspection,1
11876,13278,Mosaic,2320,medium,818814.0,9980,9980 Final Cleaning,1
11877,13496,Hailey's Glen,3443,medium,316917.0,9980,9980 Final Cleaning,1
11878,13088,Forest Hills,3580,medium,222544.0,9985,9985 Final Clean 2,1
11879,13030,Peninsula,5546,high,1768191.0,9990,9990 2nd Stage Termite Treatment,1
11880,13529,Governors,1901,medium,787652.0,10020,10020 Final Grade,1
11881,13030,Peninsula,5546,high,1768191.0,10100,10100 Irrigation Installation,1
11882,13485,Peninsula,4241,medium,706147.0,10100,10100 Irrigation Installation,1
11883,13258,River Mill,3064,medium,670416.0,10100,10100 Irrigation Installation,1
11884,13088,Forest Hills,3580,medium,222544.0,10140,10140 Sod Installation,1
11885,13088,Forest Hills,3580,medium,222544.0,10180,10180 Shrub Installation,1
11886,13281,Marlin Chase,3558,medium,786910.0,10380,10380 As Built Survey,1
11887,13258,River Mill,3064,medium,670416.0,10420,10420 Powerwash,1
11888,13277,Mosaic,1704,medium,561869.0,10420,10420 Powerwash,1
11889,13485,Peninsula,4241,medium,706147.0,10660,10660 Quality Inspection,1
11890,13144,Marlin Chase,3055,medium,740636.0,10780,10780 Customer Walk,1
11891,13349,Peninsula Lakes,2188,medium,442826.0,10780,10780 Customer Walk,1
11892,13468,Governors,2977,medium,869889.0,10820,10820 Settlement,1
11893,13468,Governors,2977,medium,869889.0,10888,10888 Release All Retainage,1
11894,13468,Governors,2977,medium,869889.0,11585,11585 Exterior Paint Retainage,1
11895,13468,Governors,2977,medium,869889.0,11980,11980 Sod Retainage,1
11896,13468,Governors,2977,medium,869889.0,12060,12060 Irrigation Retainage,1
11897,13468,Governors,2977,medium,869889.0,12100,12100 Shrub Retainage,1
11898,13468,Governors,2977,medium,869889.0,12180,12180 Driveway Retainage,1
11899,13394,Peninsula Lakes,2154,medium,474879.0,99999,99999 HOME COMPLETE,1
11900,13339,Peninsula,5583,high,750956.0,4590,4590 Install Metal Roofing,1
11901,13258,River Mill,3064,medium,670416.0,7180,7180 Install Exterior Railings,1
11902,13397,Peninsula,5533,high,750956.0,8420,8420 1st Paint,1
11903,13339,Peninsula,5583,high,750956.0,8540,8540 Install Bath Accessories,1
11904,13339,Peninsula,5583,high,750956.0,8545,8545 Install Mirrors,1
11905,13339,Peninsula,5583,high,750956.0,8900,8900 Install Closet Shelving,1
11906,13392,Marsh Island,2795,medium,771707.0,9110,9110 Gas Trim,1
11907,13529,Governors,1901,medium,787652.0,9110,9110 Gas Trim,1
11908,13088,Forest Hills,3580,medium,222544.0,9500,9500 Blower Door/Ductblaster,1
11909,13529,Governors,1901,medium,787652.0,9740,9740 Fireplace Start Up,1
11910,13496,Hailey's Glen,3443,medium,316917.0,9755,9755 Rec. GE Appliance Pkg2 Allocation,1
11911,13264,Welches Pond,3905,medium,915363.0,9940,9940 Final Inspection,3
11912,13495,Welches Pond,2650,medium,674167.0,9940,9940 Final Inspection,6
11913,13503,Marsh Island,4307,medium,892519.0,9940,9940 Final Inspection,1
11914,13277,Mosaic,1704,medium,561869.0,9980,9980 Final Cleaning,1
11915,13264,Welches Pond,3905,medium,915363.0,9985,9985 Final Clean 2,1
11916,13495,Welches Pond,2650,medium,674167.0,9985,9985 Final Clean 2,1
11917,13529,Governors,1901,medium,787652.0,9985,9985 Final Clean 2,1
11918,13408,NewMarket,3940,medium,889253.0,9985,9985 Final Clean 2,1
11919,13258,River Mill,3064,medium,670416.0,9985,9985 Final Clean 2,1
11920,13529,Governors,1901,medium,787652.0,10100,10100 Irrigation Installation,1
11921,13408,NewMarket,3940,medium,889253.0,10140,10140 Sod Installation,1
11922,13258,River Mill,3064,medium,670416.0,10180,10180 Shrub Installation,1
11923,13339,Peninsula,5583,high,750956.0,10260,10260 Install House Numbers,1
11924,13529,Governors,1901,medium,787652.0,10380,10380 As Built Survey,1
11925,13264,Welches Pond,3905,medium,915363.0,10420,10420 Powerwash,1
11926,13495,Welches Pond,2650,medium,674167.0,10420,10420 Powerwash,1
11927,13496,Hailey's Glen,3443,medium,316917.0,10501,10501 Paint Retouch,1
11928,13496,Hailey's Glen,3443,medium,316917.0,10620,10620 Punch Out Allocation,1
11929,13088,Forest Hills,3580,medium,222544.0,10660,10660 Quality Inspection,1
11930,13164,Welches Pond,4497,medium,1024665.0,10660,10660 Quality Inspection,2
11931,13278,Mosaic,2320,medium,818814.0,10660,10660 Quality Inspection,1
11932,13501,Hailey's Glen,2736,medium,694771.0,10780,10780 Customer Walk,1
11933,13112,Marlin Chase,3171,medium,634940.0,10780,10780 Customer Walk,1
11934,13468,Governors,2977,medium,869889.0,99999,99999 HOME COMPLETE,1
11935,13496,Hailey's Glen,3443,medium,316917.0,0,appcheck Check Appliances for Damage,1
11936,13529,Governors,1901,medium,787652.0,0,appcheck Check Appliances for Damage,1
11937,13339,Peninsula,5583,high,750956.0,6340,6340 Install Overhead Door,4
11938,13388,Marsh Island,5848,high,750956.0,6340,6340 Install Overhead Door,1
11939,13388,Marsh Island,5848,high,750956.0,6940,6940 Install Elevator,25
11940,13462,Peninsula,4787,high,1490269.0,8420,8420 1st Paint,1
11941,13392,Marsh Island,2795,medium,771707.0,8940,8940 Plumbing Trim,1
11942,13388,Marsh Island,5848,high,750956.0,9100,9100 HVAC Trim / Set Unit,1
11943,13529,Governors,1901,medium,787652.0,9500,9500 Blower Door/Ductblaster,1
11944,13392,Marsh Island,2795,medium,771707.0,9740,9740 Fireplace Start Up,1
11945,13520,Hailey's Glen,2792,medium,606920.0,9755,9755 Rec. GE Appliance Pkg2 Allocation,1
11946,13529,Governors,1901,medium,787652.0,9755,9755 Rec. GE Appliance Pkg2 Allocation,1
11947,13253,River Mill,2912,medium,692624.0,9940,9940 Final Inspection,1
11948,13392,Marsh Island,2795,medium,771707.0,9980,9980 Final Cleaning,1
11949,13030,Peninsula,5546,high,1768191.0,10180,10180 Shrub Installation,1
11950,13088,Forest Hills,3580,medium,222544.0,10380,10380 As Built Survey,1
11951,13408,NewMarket,3940,medium,889253.0,10660,10660 Quality Inspection,1
11952,13258,River Mill,3064,medium,670416.0,10660,10660 Quality Inspection,1
11953,13277,Mosaic,1704,medium,561869.0,10660,10660 Quality Inspection,1
11954,13520,Hailey's Glen,2792,medium,606920.0,10660,10660 Quality Inspection,1
11955,13529,Governors,1901,medium,787652.0,10660,10660 Quality Inspection,1
11956,13091,Marlin Chase,2591,medium,562928.0,10780,10780 Customer Walk,1
11957,13138,Marlin Chase,3171,medium,859133.0,10820,10820 Settlement,1
11958,13140,Marlin Chase,2824,medium,766881.0,10820,10820 Settlement,1
11959,13423,Governors,2974,medium,884692.0,10820,10820 Settlement,1
11960,13501,Hailey's Glen,2736,medium,694771.0,10820,10820 Settlement,1
11961,13442,Walden,4633,medium,656370.0,10820,10820 Settlement,1
11962,13137,Marlin Chase,2330,medium,637264.0,10820,10820 Settlement,1
11963,13137,Marlin Chase,2330,medium,637264.0,10888,10888 Release All Retainage,1
11964,13140,Marlin Chase,2824,medium,766881.0,10888,10888 Release All Retainage,1
11965,13423,Governors,2974,medium,884692.0,10888,10888 Release All Retainage,1
11966,13501,Hailey's Glen,2736,medium,694771.0,10888,10888 Release All Retainage,1
11967,13442,Walden,4633,medium,656370.0,10888,10888 Release All Retainage,1
11968,13442,Walden,4633,medium,656370.0,11585,11585 Exterior Paint Retainage,1
11969,13137,Marlin Chase,2330,medium,637264.0,11585,11585 Exterior Paint Retainage,1
11970,13140,Marlin Chase,2824,medium,766881.0,11585,11585 Exterior Paint Retainage,1
11971,13423,Governors,2974,medium,884692.0,11585,11585 Exterior Paint Retainage,1
11972,13140,Marlin Chase,2824,medium,766881.0,11980,11980 Sod Retainage,1
11973,13423,Governors,2974,medium,884692.0,11980,11980 Sod Retainage,1
11974,13442,Walden,4633,medium,656370.0,11980,11980 Sod Retainage,1
11975,13137,Marlin Chase,2330,medium,637264.0,11980,11980 Sod Retainage,1
11976,13137,Marlin Chase,2330,medium,637264.0,12060,12060 Irrigation Retainage,1
11977,13140,Marlin Chase,2824,medium,766881.0,12060,12060 Irrigation Retainage,1
11978,13423,Governors,2974,medium,884692.0,12060,12060 Irrigation Retainage,1
11979,13442,Walden,4633,medium,656370.0,12060,12060 Irrigation Retainage,1
11980,13442,Walden,4633,medium,656370.0,12100,12100 Shrub Retainage,1
11981,13137,Marlin Chase,2330,medium,637264.0,12100,12100 Shrub Retainage,1
11982,13140,Marlin Chase,2824,medium,766881.0,12100,12100 Shrub Retainage,1
11983,13423,Governors,2974,medium,884692.0,12100,12100 Shrub Retainage,1
11984,13137,Marlin Chase,2330,medium,637264.0,12180,12180 Driveway Retainage,1
11985,13140,Marlin Chase,2824,medium,766881.0,12180,12180 Driveway Retainage,1
11986,13423,Governors,2974,medium,884692.0,12180,12180 Driveway Retainage,1
11987,13501,Hailey's Glen,2736,medium,694771.0,12180,12180 Driveway Retainage,1
11988,13501,Hailey's Glen,2736,medium,694771.0,12180,12180.1 Driveway Top Coat Allocation,0
11989,13442,Walden,4633,medium,656370.0,12180,12180 Driveway Retainage,1
11990,13442,Walden,4633,medium,656370.0,12180,12180.1 Driveway Top Coat Allocation,0
11991,13392,Marsh Island,2795,medium,771707.0,0,appcheck Check Appliances for Damage,1
11992,13476,Durham Farms,4277,medium,750956.0,6720,6720 Receive Siding Accents,5
11993,13397,Peninsula,5533,high,750956.0,7340,7340 Install Ceramic Tile,12
11994,13397,Peninsula,5533,high,750956.0,7350,7350 Install Shower Tile,12
11995,13397,Peninsula,5533,high,750956.0,7380,7380 Install Vinyl Floors,1
11996,13462,Peninsula,4787,high,1490269.0,8220,8220 Install Fireplace Surround/Mantel,1
11997,13392,Marsh Island,2795,medium,771707.0,8980,8980 Final Plumbing Inspection,1
11998,13529,Governors,1901,medium,787652.0,8980,8980 Final Plumbing Inspection,1
11999,13392,Marsh Island,2795,medium,771707.0,9500,9500 Blower Door/Ductblaster,1
12000,13520,Hailey's Glen,2792,medium,606920.0,9500,9500 Blower Door/Ductblaster,1
12001,13339,Peninsula,5583,high,750956.0,9700,9700 Install Hardwood Flooring,2
12002,13392,Marsh Island,2795,medium,771707.0,9755,9755 Rec. GE Appliance Pkg2 Allocation,1
12003,13030,Peninsula,5546,high,1768191.0,10140,10140 Sod Installation,1
12004,13485,Peninsula,4241,medium,706147.0,10180,10180 Shrub Installation,1
12005,13392,Marsh Island,2795,medium,771707.0,10501,10501 Paint Retouch,1
12006,13392,Marsh Island,2795,medium,771707.0,10620,10620 Punch Out Allocation,1
12007,13264,Welches Pond,3905,medium,915363.0,10660,10660 Quality Inspection,1
12008,13495,Welches Pond,2650,medium,674167.0,10660,10660 Quality Inspection,1
12009,13477,Cardinal Grove,2589,medium,750956.0,10780,10780 Customer Walk,1
12010,13465,Cardinal Grove,1764,medium,569722.0,10780,10780 Customer Walk,1
12011,13253,River Mill,2912,medium,692624.0,10820,10820 Settlement,1
12012,13507,Welches Pond,2852,medium,845914.0,10820,10820 Settlement,1
12013,13138,Marlin Chase,3171,medium,859133.0,10888,10888 Release All Retainage,1
12014,13253,River Mill,2912,medium,692624.0,10888,10888 Release All Retainage,1
12015,13507,Welches Pond,2852,medium,845914.0,10888,10888 Release All Retainage,1
12016,13138,Marlin Chase,3171,medium,859133.0,11585,11585 Exterior Paint Retainage,1
12017,13253,River Mill,2912,medium,692624.0,11585,11585 Exterior Paint Retainage,1
12018,13507,Welches Pond,2852,medium,845914.0,11585,11585 Exterior Paint Retainage,1
12019,13138,Marlin Chase,3171,medium,859133.0,11980,11980 Sod Retainage,1
12020,13253,River Mill,2912,medium,692624.0,11980,11980 Sod Retainage,1
12021,13507,Welches Pond,2852,medium,845914.0,11980,11980 Sod Retainage,1
12022,13138,Marlin Chase,3171,medium,859133.0,12060,12060 Irrigation Retainage,1
12023,13253,River Mill,2912,medium,692624.0,12060,12060 Irrigation Retainage,1
12024,13507,Welches Pond,2852,medium,845914.0,12060,12060 Irrigation Retainage,1
12025,13138,Marlin Chase,3171,medium,859133.0,12100,12100 Shrub Retainage,1
12026,13253,River Mill,2912,medium,692624.0,12100,12100 Shrub Retainage,1
12027,13507,Welches Pond,2852,medium,845914.0,12100,12100 Shrub Retainage,1
12028,13138,Marlin Chase,3171,medium,859133.0,12180,12180 Driveway Retainage,1
12029,13253,River Mill,2912,medium,692624.0,12180,12180 Driveway Retainage,1
12030,13253,River Mill,2912,medium,692624.0,12180,12180.1 Driveway Top Coat Allocation,0
12031,13507,Welches Pond,2852,medium,845914.0,12180,12180 Driveway Retainage,1
12032,13507,Welches Pond,2852,medium,845914.0,12180,12180.1 Driveway Top Coat Allocation,0
12033,13137,Marlin Chase,2330,medium,637264.0,99999,99999 HOME COMPLETE,1
12034,13138,Marlin Chase,3171,medium,859133.0,99999,99999 HOME COMPLETE,1
12035,13140,Marlin Chase,2824,medium,766881.0,99999,99999 HOME COMPLETE,1
12036,13423,Governors,2974,medium,884692.0,99999,99999 HOME COMPLETE,1
12037,13501,Hailey's Glen,2736,medium,694771.0,99999,99999 HOME COMPLETE,1
12038,13442,Walden,4633,medium,656370.0,99999,99999 HOME COMPLETE,1
12039,13397,Peninsula,5533,high,750956.0,7300,7300 Receive Interior Trim,1
12040,13397,Peninsula,5533,high,750956.0,7304,7304 Receive Goodie Box,1
12041,13462,Peninsula,4787,high,1490269.0,7340,7340 Install Ceramic Tile,8
12042,13462,Peninsula,4787,high,1490269.0,7350,7350 Install Shower Tile,7
12043,13397,Peninsula,5533,high,750956.0,7700,7700 Receive Interior Doors,1
12044,13397,Peninsula,5533,high,750956.0,7862,7862 Receive Cabinet Hardware Allocation,1
12045,13397,Peninsula,5533,high,750956.0,7866,7866 Receive Door Hardware,1
12046,13397,Peninsula,5533,high,750956.0,7900,7900 Receive Cabinets Allocation,1
12047,13397,Peninsula,5533,high,750956.0,7901,7901 Cabinet Delivery Charges,1
12048,13397,Peninsula,5533,high,750956.0,7940,7940 Receive Vanity Tops,1
12049,13397,Peninsula,5533,high,750956.0,8020,8020 Receive Interior Railing,1
12050,13462,Peninsula,4787,high,1490269.0,8020,8020 Receive Interior Railing,1
12051,13397,Peninsula,5533,high,750956.0,8260,8260 Install Interior Railing,1
12052,13392,Marsh Island,2795,medium,771707.0,8465,8465 Install Tiled Backsplash,1
12053,13520,Hailey's Glen,2792,medium,606920.0,8580,8580 Install Shower Enclosures,1
12054,13112,Marlin Chase,3171,medium,634940.0,9940,9940 Final Inspection,1
12055,13408,NewMarket,3940,medium,889253.0,9940,9940 Final Inspection,1
12056,13485,Peninsula,4241,medium,706147.0,9940,9940 Final Inspection,1
12057,13088,Forest Hills,3580,medium,222544.0,9990,9990 2nd Stage Termite Treatment,1
12058,13529,Governors,1901,medium,787652.0,9990,9990 2nd Stage Termite Treatment,1
12059,13392,Marsh Island,2795,medium,771707.0,10020,10020 Final Grade,1
12060,13258,River Mill,3064,medium,670416.0,10061,10061 Install Fence,1
12061,13278,Mosaic,2320,medium,818814.0,10140,10140 Sod Installation,2
12062,13164,Welches Pond,4497,medium,1024665.0,10745,10745 Install Window Coverings,11
12063,13281,Marlin Chase,3558,medium,786910.0,10780,10780 Customer Walk,1
12064,13471,Cardinal Grove,2233,medium,517387.0,10780,10780 Customer Walk,1
12065,13152,Marlin Chase,2710,medium,768496.0,10820,10820 Settlement,1
12066,13152,Marlin Chase,2710,medium,768496.0,10888,10888 Release All Retainage,1
12067,13503,Marsh Island,4307,medium,892519.0,10888,10888 Release All Retainage,1
12068,13503,Marsh Island,4307,medium,892519.0,11585,11585 Exterior Paint Retainage,1
12069,13152,Marlin Chase,2710,medium,768496.0,11585,11585 Exterior Paint Retainage,1
12070,13152,Marlin Chase,2710,medium,768496.0,11980,11980 Sod Retainage,1
12071,13503,Marsh Island,4307,medium,892519.0,11980,11980 Sod Retainage,1
12072,13503,Marsh Island,4307,medium,892519.0,12060,12060 Irrigation Retainage,1
12073,13152,Marlin Chase,2710,medium,768496.0,12060,12060 Irrigation Retainage,1
12074,13152,Marlin Chase,2710,medium,768496.0,12100,12100 Shrub Retainage,1
12075,13503,Marsh Island,4307,medium,892519.0,12100,12100 Shrub Retainage,1
12076,13503,Marsh Island,4307,medium,892519.0,12180,12180 Driveway Retainage,1
12077,13152,Marlin Chase,2710,medium,768496.0,12180,12180 Driveway Retainage,1
12078,13253,River Mill,2912,medium,692624.0,99999,99999 HOME COMPLETE,1
12079,13507,Welches Pond,2852,medium,845914.0,99999,99999 HOME COMPLETE,1
12080,12832,Peninsula,4562,high,1090397.0,0,cabcheck Check Cabinets for Damage,1
12081,13462,Peninsula,4787,high,1490269.0,8260,8260 Install Interior Railing,1
12082,13388,Marsh Island,5848,high,750956.0,9020,9020 Electric Trim,7
12083,13258,River Mill,3064,medium,670416.0,9500,9500 Blower Door/Ductblaster,1
12084,13278,Mosaic,2320,medium,818814.0,9985,9985 Final Clean 2,1
12085,13392,Marsh Island,2795,medium,771707.0,9990,9990 2nd Stage Termite Treatment,1
12086,13144,Marlin Chase,3055,medium,740636.0,10020,10020 Final Grade,1
12087,13392,Marsh Island,2795,medium,771707.0,10100,10100 Irrigation Installation,1
12088,13485,Peninsula,4241,medium,706147.0,10140,10140 Sod Installation,1
12089,13258,River Mill,3064,medium,670416.0,10140,10140 Sod Installation,1
12090,13392,Marsh Island,2795,medium,771707.0,10380,10380 As Built Survey,1
12091,13485,Peninsula,4241,medium,706147.0,10780,10780 Customer Walk,1
12092,13113,Marlin Chase,2814,medium,750956.0,10820,10820 Settlement,1
12093,13144,Marlin Chase,3055,medium,740636.0,10820,10820 Settlement,1
12094,13349,Peninsula Lakes,2188,medium,442826.0,10820,10820 Settlement,1
12095,13113,Marlin Chase,2814,medium,750956.0,10888,10888 Release All Retainage,1
12096,13144,Marlin Chase,3055,medium,740636.0,10888,10888 Release All Retainage,1
12097,13349,Peninsula Lakes,2188,medium,442826.0,10888,10888 Release All Retainage,1
12098,13113,Marlin Chase,2814,medium,750956.0,11585,11585 Exterior Paint Retainage,1
12099,13144,Marlin Chase,3055,medium,740636.0,11585,11585 Exterior Paint Retainage,1
12100,13349,Peninsula Lakes,2188,medium,442826.0,11585,11585 Exterior Paint Retainage,1
12101,13113,Marlin Chase,2814,medium,750956.0,11980,11980 Sod Retainage,1
12102,13144,Marlin Chase,3055,medium,740636.0,11980,11980 Sod Retainage,1
12103,13349,Peninsula Lakes,2188,medium,442826.0,11980,11980 Sod Retainage,1
12104,13113,Marlin Chase,2814,medium,750956.0,12060,12060 Irrigation Retainage,1
12105,13144,Marlin Chase,3055,medium,740636.0,12060,12060 Irrigation Retainage,1
12106,13349,Peninsula Lakes,2188,medium,442826.0,12060,12060 Irrigation Retainage,1
12107,13113,Marlin Chase,2814,medium,750956.0,12100,12100 Shrub Retainage,1
12108,13144,Marlin Chase,3055,medium,740636.0,12100,12100 Shrub Retainage,1
12109,13349,Peninsula Lakes,2188,medium,442826.0,12100,12100 Shrub Retainage,1
12110,13113,Marlin Chase,2814,medium,750956.0,12180,12180 Driveway Retainage,1
12111,13144,Marlin Chase,3055,medium,740636.0,12180,12180 Driveway Retainage,1
12112,13349,Peninsula Lakes,2188,medium,442826.0,12180,12180 Driveway Retainage,1
12113,13349,Peninsula Lakes,2188,medium,442826.0,12180,12180.1 Driveway Top Coat Allocation,0
12114,13152,Marlin Chase,2710,medium,768496.0,99999,99999 HOME COMPLETE,1
12115,13503,Marsh Island,4307,medium,892519.0,99999,99999 HOME COMPLETE,1
12116,13503,Marsh Island,4307,medium,892519.0,6340,6340 Install Overhead Door,1
12117,13339,Peninsula,5583,high,750956.0,6381,6381 Drywall Punch,1
12118,13462,Peninsula,4787,high,1490269.0,7300,7300 Receive Interior Trim,1
12119,13462,Peninsula,4787,high,1490269.0,7304,7304 Receive Goodie Box,1
12120,13462,Peninsula,4787,high,1490269.0,7700,7700 Receive Interior Doors,1
12121,13339,Peninsula,5583,high,750956.0,7861,7861 Interior Trim Punch,1
12122,13462,Peninsula,4787,high,1490269.0,7862,7862 Receive Cabinet Hardware Allocation,1
12123,13462,Peninsula,4787,high,1490269.0,7866,7866 Receive Door Hardware,1
12124,13462,Peninsula,4787,high,1490269.0,7900,7900 Receive Cabinets Allocation,1
12125,13462,Peninsula,4787,high,1490269.0,7901,7901 Cabinet Delivery Charges,1
12126,13462,Peninsula,4787,high,1490269.0,7940,7940 Receive Vanity Tops,1
12127,13258,River Mill,3064,medium,670416.0,9060,9060 Final Electric Inspection,1
12128,13388,Marsh Island,5848,high,750956.0,9101,9101 HVAC Startup,16
12129,13339,Peninsula,5583,high,750956.0,9260,9260 Structured Wiring Trim,1
12130,13529,Governors,1901,medium,787652.0,9940,9940 Final Inspection,1
12131,13088,Forest Hills,3580,medium,222544.0,9940,9940 Final Inspection,1
12132,13408,NewMarket,3940,medium,889253.0,9990,9990 2nd Stage Termite Treatment,1
12133,13258,River Mill,3064,medium,670416.0,9990,9990 2nd Stage Termite Treatment,1
12134,13144,Marlin Chase,3055,medium,740636.0,10100,10100 Irrigation Installation,1
12135,13392,Marsh Island,2795,medium,771707.0,10140,10140 Sod Installation,1
12136,13529,Governors,1901,medium,787652.0,10140,10140 Sod Installation,1
12137,13392,Marsh Island,2795,medium,771707.0,10180,10180 Shrub Installation,1
12138,13529,Governors,1901,medium,787652.0,10180,10180 Shrub Installation,1
12139,13408,NewMarket,3940,medium,889253.0,10420,10420 Powerwash,1
12140,13476,Durham Farms,4277,medium,750956.0,10460,10460 Drywall Touch Up,2
12141,13088,Forest Hills,3580,medium,222544.0,10780,10780 Customer Walk,1
12142,13278,Mosaic,2320,medium,818814.0,10780,10780 Customer Walk,1
12143,13112,Marlin Chase,3171,medium,634940.0,10820,10820 Settlement,1
12144,13112,Marlin Chase,3171,medium,634940.0,10888,10888 Release All Retainage,1
12145,13112,Marlin Chase,3171,medium,634940.0,11585,11585 Exterior Paint Retainage,1
12146,13112,Marlin Chase,3171,medium,634940.0,11980,11980 Sod Retainage,1
12147,13112,Marlin Chase,3171,medium,634940.0,12060,12060 Irrigation Retainage,1
12148,13112,Marlin Chase,3171,medium,634940.0,12100,12100 Shrub Retainage,1
12149,13112,Marlin Chase,3171,medium,634940.0,12180,12180 Driveway Retainage,1
12150,13113,Marlin Chase,2814,medium,750956.0,99999,99999 HOME COMPLETE,1
12151,13144,Marlin Chase,3055,medium,740636.0,99999,99999 HOME COMPLETE,1
12152,13349,Peninsula Lakes,2188,medium,442826.0,99999,99999 HOME COMPLETE,1
12153,13529,Governors,1901,medium,787652.0,6340,6340 Install Overhead Door,1
12154,13030,Peninsula,5546,high,1768191.0,7060,7060 Exterior Masonry Installation,6
12155,13462,Peninsula,4787,high,1490269.0,7860,7860 Install Interior Trim,4
12156,13397,Peninsula,5533,high,750956.0,7860,7860 Install Interior Trim,7
12157,13397,Peninsula,5533,high,750956.0,8220,8220 Install Fireplace Surround/Mantel,1
12158,13388,Marsh Island,5848,high,750956.0,8545,8545 Install Mirrors,1
12159,13339,Peninsula,5583,high,750956.0,8580,8580 Install Shower Enclosures,1
12160,13388,Marsh Island,5848,high,750956.0,8900,8900 Install Closet Shelving,1
12161,13388,Marsh Island,5848,high,750956.0,9260,9260 Structured Wiring Trim,1
12162,13258,River Mill,3064,medium,670416.0,9940,9940 Final Inspection,1
12163,13485,Peninsula,4241,medium,706147.0,9990,9990 2nd Stage Termite Treatment,1
12164,13144,Marlin Chase,3055,medium,740636.0,10140,10140 Sod Installation,1
12165,13144,Marlin Chase,3055,medium,740636.0,10180,10180 Shrub Installation,1
12166,13388,Marsh Island,5848,high,750956.0,10260,10260 Install House Numbers,1
12167,13529,Governors,1901,medium,787652.0,10420,10420 Powerwash,1
12168,13277,Mosaic,1704,medium,561869.0,10780,10780 Customer Walk,1
12169,13520,Hailey's Glen,2792,medium,606920.0,10780,10780 Customer Walk,1
12170,13408,NewMarket,3940,medium,889253.0,10780,10780 Customer Walk,1
12171,13164,Welches Pond,4497,medium,1024665.0,10780,10780 Customer Walk,1
12172,13091,Marlin Chase,2591,medium,562928.0,10820,10820 Settlement,1
12173,13091,Marlin Chase,2591,medium,562928.0,10888,10888 Release All Retainage,1
12174,13091,Marlin Chase,2591,medium,562928.0,11585,11585 Exterior Paint Retainage,1
12175,13091,Marlin Chase,2591,medium,562928.0,11980,11980 Sod Retainage,1
12176,13091,Marlin Chase,2591,medium,562928.0,12060,12060 Irrigation Retainage,1
12177,13091,Marlin Chase,2591,medium,562928.0,12100,12100 Shrub Retainage,1
12178,13091,Marlin Chase,2591,medium,562928.0,12180,12180 Driveway Retainage,1
12179,13112,Marlin Chase,3171,medium,634940.0,99999,99999 HOME COMPLETE,1
12180,13339,Peninsula,5583,high,750956.0,7180,7180 Install Exterior Railings,1
12181,13264,Welches Pond,3905,medium,915363.0,10780,10780 Customer Walk,1
12182,13495,Welches Pond,2650,medium,674167.0,10780,10780 Customer Walk,1
12183,13529,Governors,1901,medium,787652.0,10780,10780 Customer Walk,1
12184,13477,Cardinal Grove,2589,medium,750956.0,10820,10820 Settlement,1
12185,13465,Cardinal Grove,1764,medium,569722.0,10820,10820 Settlement,1
12186,13477,Cardinal Grove,2589,medium,750956.0,10888,10888 Release All Retainage,1
12187,13465,Cardinal Grove,1764,medium,569722.0,10888,10888 Release All Retainage,1
12188,13477,Cardinal Grove,2589,medium,750956.0,11585,11585 Exterior Paint Retainage,1
12189,13465,Cardinal Grove,1764,medium,569722.0,11585,11585 Exterior Paint Retainage,1
12190,13477,Cardinal Grove,2589,medium,750956.0,11980,11980 Sod Retainage,1
12191,13465,Cardinal Grove,1764,medium,569722.0,11980,11980 Sod Retainage,1
12192,13477,Cardinal Grove,2589,medium,750956.0,12060,12060 Irrigation Retainage,1
12193,13465,Cardinal Grove,1764,medium,569722.0,12060,12060 Irrigation Retainage,1
12194,13477,Cardinal Grove,2589,medium,750956.0,12100,12100 Shrub Retainage,1
12195,13465,Cardinal Grove,1764,medium,569722.0,12100,12100 Shrub Retainage,1
12196,13477,Cardinal Grove,2589,medium,750956.0,12180,12180 Driveway Retainage,1
12197,13465,Cardinal Grove,1764,medium,569722.0,12180,12180 Driveway Retainage,1
12198,13465,Cardinal Grove,1764,medium,569722.0,12180,12180.1 Driveway Top Coat Allocation,0
12199,13091,Marlin Chase,2591,medium,562928.0,99999,99999 HOME COMPLETE,1
12200,13258,River Mill,3064,medium,670416.0,4265,4265 Receive Window Screens,1
12201,13388,Marsh Island,5848,high,750956.0,8540,8540 Install Bath Accessories,1
12202,13397,Peninsula,5533,high,750956.0,8579,8579 Template Shower Enclosure,1
12203,13392,Marsh Island,2795,medium,771707.0,9060,9060 Final Electric Inspection,1
12204,13388,Marsh Island,5848,high,750956.0,9700,9700 Install Hardwood Flooring,1
12205,13339,Peninsula,5583,high,750956.0,9755,9755 Rec. GE Appliance Pkg2 Allocation,1
12206,13339,Peninsula,5583,high,750956.0,9820,9820 Install Gutters,1
12207,13339,Peninsula,5583,high,750956.0,9980,9980 Final Cleaning,1
12208,13339,Peninsula,5583,high,750956.0,10501,10501 Paint Retouch,1
12209,13339,Peninsula,5583,high,750956.0,10620,10620 Punch Out Allocation,1
12210,13030,Peninsula,5546,high,1768191.0,10745,10745 Install Window Coverings,1
12211,13030,Peninsula,5546,high,1768191.0,10780,10780 Customer Walk,1
12212,13281,Marlin Chase,3558,medium,786910.0,10820,10820 Settlement,1
12213,13503,Marsh Island,4307,medium,892519.0,10820,10820 Settlement,1
12214,13471,Cardinal Grove,2233,medium,517387.0,10820,10820 Settlement,1
12215,13281,Marlin Chase,3558,medium,786910.0,10888,10888 Release All Retainage,1
12216,13471,Cardinal Grove,2233,medium,517387.0,10888,10888 Release All Retainage,1
12217,13281,Marlin Chase,3558,medium,786910.0,11585,11585 Exterior Paint Retainage,1
12218,13471,Cardinal Grove,2233,medium,517387.0,11585,11585 Exterior Paint Retainage,1
12219,13281,Marlin Chase,3558,medium,786910.0,11980,11980 Sod Retainage,1
12220,13471,Cardinal Grove,2233,medium,517387.0,11980,11980 Sod Retainage,1
12221,13281,Marlin Chase,3558,medium,786910.0,12060,12060 Irrigation Retainage,1
12222,13471,Cardinal Grove,2233,medium,517387.0,12060,12060 Irrigation Retainage,1
12223,13281,Marlin Chase,3558,medium,786910.0,12100,12100 Shrub Retainage,1
12224,13471,Cardinal Grove,2233,medium,517387.0,12100,12100 Shrub Retainage,1
12225,13281,Marlin Chase,3558,medium,786910.0,12180,12180 Driveway Retainage,1
12226,13471,Cardinal Grove,2233,medium,517387.0,12180,12180 Driveway Retainage,1
12227,13471,Cardinal Grove,2233,medium,517387.0,12180,12180.1 Driveway Top Coat Allocation,0
12228,13477,Cardinal Grove,2589,medium,750956.0,99999,99999 HOME COMPLETE,1
12229,13465,Cardinal Grove,1764,medium,569722.0,99999,99999 HOME COMPLETE,1
12230,12832,Peninsula,4562,high,1090397.0,0,appcheck Check Appliances for Damage,1
12231,13462,Peninsula,4787,high,1490269.0,8300,8300 Install Cabinets,2
12232,13462,Peninsula,4787,high,1490269.0,9540,9540 Rec. GE Appliance Pkg1 Allocation,1
12233,13462,Peninsula,4787,high,1490269.0,9620,9620 Install Appliances,1
12234,13520,Hailey's Glen,2792,medium,606920.0,9940,9940 Final Inspection,1
12235,13030,Peninsula,5546,high,1768191.0,9940,9940 Final Inspection,1
12236,12832,Peninsula,4562,high,1090397.0,10020,10020 Final Grade,1
12237,13088,Forest Hills,3580,medium,222544.0,10820,10820 Settlement,1
12238,13485,Peninsula,4241,medium,706147.0,10820,10820 Settlement,1
12239,13088,Forest Hills,3580,medium,222544.0,10888,10888 Release All Retainage,1
12240,13485,Peninsula,4241,medium,706147.0,10888,10888 Release All Retainage,1
12241,13088,Forest Hills,3580,medium,222544.0,11585,11585 Exterior Paint Retainage,1
12242,13485,Peninsula,4241,medium,706147.0,11585,11585 Exterior Paint Retainage,1
12243,13088,Forest Hills,3580,medium,222544.0,11980,11980 Sod Retainage,1
12244,13485,Peninsula,4241,medium,706147.0,11980,11980 Sod Retainage,1
12245,13088,Forest Hills,3580,medium,222544.0,12060,12060 Irrigation Retainage,1
12246,13485,Peninsula,4241,medium,706147.0,12060,12060 Irrigation Retainage,1
12247,13088,Forest Hills,3580,medium,222544.0,12100,12100 Shrub Retainage,1
12248,13485,Peninsula,4241,medium,706147.0,12100,12100 Shrub Retainage,1
12249,13088,Forest Hills,3580,medium,222544.0,12180,12180 Driveway Retainage,1
12250,13088,Forest Hills,3580,medium,222544.0,12180,12180.1 Driveway Top Coat Allocation,0
12251,13485,Peninsula,4241,medium,706147.0,12180,12180 Driveway Retainage,1
12252,13281,Marlin Chase,3558,medium,786910.0,99999,99999 HOME COMPLETE,1
12253,13471,Cardinal Grove,2233,medium,517387.0,99999,99999 HOME COMPLETE,1
12254,13388,Marsh Island,5848,high,750956.0,4461,4461 Install Gas Lateral,1
12255,13462,Peninsula,4787,high,1490269.0,8579,8579 Template Shower Enclosure,1
12256,13388,Marsh Island,5848,high,750956.0,8580,8580 Install Shower Enclosures,4
12257,13339,Peninsula,5583,high,750956.0,8940,8940 Plumbing Trim,3
12258,13339,Peninsula,5583,high,750956.0,9060,9060 Final Electric Inspection,1
12259,13388,Marsh Island,5848,high,750956.0,9060,9060 Final Electric Inspection,1
12260,13339,Peninsula,5583,high,750956.0,9740,9740 Fireplace Start Up,1
12261,12832,Peninsula,4562,high,1090397.0,9980,9980 Final Cleaning,1
12262,13277,Mosaic,1704,medium,561869.0,9985,9985 Final Clean 2,1
12263,12832,Peninsula,4562,high,1090397.0,10100,10100 Irrigation Installation,1
12264,13462,Peninsula,4787,high,1490269.0,10460,10460 Drywall Touch Up,2
12265,13258,River Mill,3064,medium,670416.0,10780,10780 Customer Walk,1
12266,13164,Welches Pond,4497,medium,1024665.0,10820,10820 Settlement,1
12267,13278,Mosaic,2320,medium,818814.0,10820,10820 Settlement,1
12268,13164,Welches Pond,4497,medium,1024665.0,10888,10888 Release All Retainage,1
12269,13164,Welches Pond,4497,medium,1024665.0,11585,11585 Exterior Paint Retainage,1
12270,13164,Welches Pond,4497,medium,1024665.0,11980,11980 Sod Retainage,1
12271,13164,Welches Pond,4497,medium,1024665.0,12060,12060 Irrigation Retainage,1
12272,13164,Welches Pond,4497,medium,1024665.0,12100,12100 Shrub Retainage,1
12273,13164,Welches Pond,4497,medium,1024665.0,12180,12180 Driveway Retainage,1
12274,13088,Forest Hills,3580,medium,222544.0,99999,99999 HOME COMPLETE,1
12275,13485,Peninsula,4241,medium,706147.0,99999,99999 HOME COMPLETE,1
12276,13339,Peninsula,5583,high,750956.0,0,appcheck Check Appliances for Damage,1
12277,13339,Peninsula,5583,high,750956.0,0,cabcheck Check Cabinets for Damage,1
12278,13462,Peninsula,4787,high,1490269.0,8380,8380 Template Countertops,1
12279,13392,Marsh Island,2795,medium,771707.0,9985,9985 Final Clean 2,1
12280,13496,Hailey's Glen,3443,medium,316917.0,9985,9985 Final Clean 2,1
12281,13339,Peninsula,5583,high,750956.0,9990,9990 2nd Stage Termite Treatment,1
12282,13339,Peninsula,5583,high,750956.0,10300,10300 Install Driveway,3
12283,13339,Peninsula,5583,high,750956.0,10340,10340 Install Leadwalk & Comm. Sidewalk,3
12284,13392,Marsh Island,2795,medium,771707.0,10420,10420 Powerwash,1
12285,13496,Hailey's Glen,3443,medium,316917.0,10420,10420 Powerwash,1
12286,13099,Arbor-Lyn,2616,medium,381426.0,10780,10780 Customer Walk,1
12287,13408,NewMarket,3940,medium,889253.0,10820,10820 Settlement,1
12288,13258,River Mill,3064,medium,670416.0,10820,10820 Settlement,1
12289,13277,Mosaic,1704,medium,561869.0,10820,10820 Settlement,1
12290,13520,Hailey's Glen,2792,medium,606920.0,10820,10820 Settlement,1
12291,13529,Governors,1901,medium,787652.0,10820,10820 Settlement,1
12292,13277,Mosaic,1704,medium,561869.0,10888,10888 Release All Retainage,1
12293,13520,Hailey's Glen,2792,medium,606920.0,10888,10888 Release All Retainage,1
12294,13529,Governors,1901,medium,787652.0,10888,10888 Release All Retainage,1
12295,13408,NewMarket,3940,medium,889253.0,10888,10888 Release All Retainage,1
12296,13258,River Mill,3064,medium,670416.0,10888,10888 Release All Retainage,1
12297,13278,Mosaic,2320,medium,818814.0,10888,10888 Release All Retainage,1
12298,13408,NewMarket,3940,medium,889253.0,11585,11585 Exterior Paint Retainage,1
12299,13258,River Mill,3064,medium,670416.0,11585,11585 Exterior Paint Retainage,1
12300,13278,Mosaic,2320,medium,818814.0,11585,11585 Exterior Paint Retainage,1
12301,13277,Mosaic,1704,medium,561869.0,11585,11585 Exterior Paint Retainage,1
12302,13529,Governors,1901,medium,787652.0,11585,11585 Exterior Paint Retainage,1
12303,13277,Mosaic,1704,medium,561869.0,11980,11980 Sod Retainage,1
12304,13529,Governors,1901,medium,787652.0,11980,11980 Sod Retainage,1
12305,13408,NewMarket,3940,medium,889253.0,11980,11980 Sod Retainage,1
12306,13258,River Mill,3064,medium,670416.0,11980,11980 Sod Retainage,1
12307,13278,Mosaic,2320,medium,818814.0,11980,11980 Sod Retainage,1
12308,13408,NewMarket,3940,medium,889253.0,12060,12060 Irrigation Retainage,1
12309,13258,River Mill,3064,medium,670416.0,12060,12060 Irrigation Retainage,1
12310,13529,Governors,1901,medium,787652.0,12060,12060 Irrigation Retainage,1
12311,13277,Mosaic,1704,medium,561869.0,12100,12100 Shrub Retainage,1
12312,13529,Governors,1901,medium,787652.0,12100,12100 Shrub Retainage,1
12313,13408,NewMarket,3940,medium,889253.0,12100,12100 Shrub Retainage,1
12314,13258,River Mill,3064,medium,670416.0,12100,12100 Shrub Retainage,1
12315,13278,Mosaic,2320,medium,818814.0,12100,12100 Shrub Retainage,1
12316,13408,NewMarket,3940,medium,889253.0,12180,12180 Driveway Retainage,1
12317,13408,NewMarket,3940,medium,889253.0,12180,12180.1 Driveway Top Coat Allocation,0
12318,13258,River Mill,3064,medium,670416.0,12180,12180 Driveway Retainage,1
12319,13258,River Mill,3064,medium,670416.0,12180,12180.1 Driveway Top Coat Allocation,0
12320,13278,Mosaic,2320,medium,818814.0,12180,12180 Driveway Retainage,1
12321,13278,Mosaic,2320,medium,818814.0,12180,12180.1 Driveway Top Coat Allocation,0
12322,13277,Mosaic,1704,medium,561869.0,12180,12180 Driveway Retainage,1
12323,13277,Mosaic,1704,medium,561869.0,12180,12180.1 Driveway Top Coat Allocation,0
12324,13520,Hailey's Glen,2792,medium,606920.0,12180,12180 Driveway Retainage,1
12325,13529,Governors,1901,medium,787652.0,12180,12180 Driveway Retainage,1
12326,13164,Welches Pond,4497,medium,1024665.0,99999,99999 HOME COMPLETE,1
12327,13388,Marsh Island,5848,high,750956.0,6381,6381 Drywall Punch,1
12328,13397,Peninsula,5533,high,750956.0,7220,7220 Install Deck Skirting/Flower Boxes,1
12329,13397,Peninsula,5533,high,750956.0,8300,8300 Install Cabinets,2
12330,13397,Peninsula,5533,high,750956.0,9540,9540 Rec. GE Appliance Pkg1 Allocation,1
12331,13397,Peninsula,5533,high,750956.0,9541,9541 Receive N/S Appliance Pkg 1,1
12332,13397,Peninsula,5533,high,750956.0,9620,9620 Install Appliances,1
12333,12832,Peninsula,4562,high,1090397.0,10140,10140 Sod Installation,1
12334,13462,Peninsula,4787,high,1490269.0,10500,10500 Paint 2,4
12335,13264,Welches Pond,3905,medium,915363.0,10820,10820 Settlement,1
12336,13495,Welches Pond,2650,medium,674167.0,10820,10820 Settlement,1
12337,13264,Welches Pond,3905,medium,915363.0,10888,10888 Release All Retainage,1
12338,13495,Welches Pond,2650,medium,674167.0,10888,10888 Release All Retainage,1
12339,13264,Welches Pond,3905,medium,915363.0,11585,11585 Exterior Paint Retainage,1
12340,13495,Welches Pond,2650,medium,674167.0,11585,11585 Exterior Paint Retainage,1
12341,13264,Welches Pond,3905,medium,915363.0,11980,11980 Sod Retainage,1
12342,13495,Welches Pond,2650,medium,674167.0,11980,11980 Sod Retainage,1
12343,13264,Welches Pond,3905,medium,915363.0,12060,12060 Irrigation Retainage,1
12344,13495,Welches Pond,2650,medium,674167.0,12060,12060 Irrigation Retainage,1
12345,13264,Welches Pond,3905,medium,915363.0,12100,12100 Shrub Retainage,1
12346,13495,Welches Pond,2650,medium,674167.0,12100,12100 Shrub Retainage,1
12347,13264,Welches Pond,3905,medium,915363.0,12180,12180 Driveway Retainage,1
12348,13495,Welches Pond,2650,medium,674167.0,12180,12180 Driveway Retainage,1
12349,13277,Mosaic,1704,medium,561869.0,99999,99999 HOME COMPLETE,1
12350,13520,Hailey's Glen,2792,medium,606920.0,99999,99999 HOME COMPLETE,1
12351,13529,Governors,1901,medium,787652.0,99999,99999 HOME COMPLETE,1
12352,13408,NewMarket,3940,medium,889253.0,99999,99999 HOME COMPLETE,1
12353,13258,River Mill,3064,medium,670416.0,99999,99999 HOME COMPLETE,1
12354,13278,Mosaic,2320,medium,818814.0,99999,99999 HOME COMPLETE,1
12355,13388,Marsh Island,5848,high,750956.0,6390,6390 Schedule Gas Meter,1
12356,13397,Peninsula,5533,high,750956.0,7180,7180 Install Exterior Railings,1
12357,13339,Peninsula,5583,high,750956.0,9110,9110 Gas Trim,1
12358,13388,Marsh Island,5848,high,750956.0,10340,10340 Install Leadwalk & Comm. Sidewalk,1
12359,12832,Peninsula,4562,high,1090397.0,10660,10660 Quality Inspection,1
12360,13030,Peninsula,5546,high,1768191.0,10820,10820 Settlement,1
12361,13030,Peninsula,5546,high,1768191.0,10888,10888 Release All Retainage,1
12362,13030,Peninsula,5546,high,1768191.0,11585,11585 Exterior Paint Retainage,1
12363,13030,Peninsula,5546,high,1768191.0,12180,12180 Driveway Retainage,1
12364,13030,Peninsula,5546,high,1768191.0,12180,12180.1 Driveway Top Coat Allocation,0
12365,13264,Welches Pond,3905,medium,915363.0,99999,99999 HOME COMPLETE,1
12366,13495,Welches Pond,2650,medium,674167.0,99999,99999 HOME COMPLETE,1
12367,13388,Marsh Island,5848,high,750956.0,6391,6391 Install Gas Meter,1
12368,13339,Peninsula,5583,high,750956.0,6885,6885 Install Screen Porch Enclosure,1
12369,13397,Peninsula,5533,high,750956.0,8380,8380 Template Countertops,1
12370,13339,Peninsula,5583,high,750956.0,8980,8980 Final Plumbing Inspection,1
12371,13388,Marsh Island,5848,high,750956.0,9860,9860 Final Utility Connection,0
12372,13392,Marsh Island,2795,medium,771707.0,10660,10660 Quality Inspection,1
12373,13030,Peninsula,5546,high,1768191.0,99999,99999 HOME COMPLETE,1
12374,13462,Peninsula,4787,high,1490269.0,0,vancheck Check Vanity Tops/Windows for Damage,1
12375,13496,Hailey's Glen,3443,medium,316917.0,9940,9940 Final Inspection,1
12376,13388,Marsh Island,5848,high,750956.0,10301,10301 Driveway Apron,1
12377,13397,Peninsula,5533,high,750956.0,10460,10460 Drywall Touch Up,2
12378,13397,Peninsula,5533,high,750956.0,6884,6884 Measure Screen Porch Enclosure,1
12379,13397,Peninsula,5533,high,750956.0,9460,9460 Attic Insulation,1
12380,13496,Hailey's Glen,3443,medium,316917.0,10660,10660 Quality Inspection,1
12381,13462,Peninsula,4787,high,1490269.0,4590,4590 Install Metal Roofing,1
12382,13462,Peninsula,4787,high,1490269.0,6391,6391 Install Gas Meter,1
12383,13397,Peninsula,5533,high,750956.0,6391,6391 Install Gas Meter,1
12384,13462,Peninsula,4787,high,1490269.0,7220,7220 Install Deck Skirting/Flower Boxes,1
12385,13392,Marsh Island,2795,medium,771707.0,9940,9940 Final Inspection,1
12386,13339,Peninsula,5583,high,750956.0,10020,10020 Final Grade,1
12387,13397,Peninsula,5533,high,750956.0,10500,10500 Paint 2,5
12388,13388,Marsh Island,5848,high,750956.0,6887,6887 Install Outdoor Trash/Shower Encl.,1
12389,13339,Peninsula,5583,high,750956.0,9985,9985 Final Clean 2,1
12390,13339,Peninsula,5583,high,750956.0,10100,10100 Irrigation Installation,1
12391,13339,Peninsula,5583,high,750956.0,10180,10180 Shrub Installation,1
12392,12832,Peninsula,4562,high,1090397.0,10780,10780 Customer Walk,1
12393,13462,Peninsula,4787,high,1490269.0,7180,7180 Install Exterior Railings,1
12394,13388,Marsh Island,5848,high,750956.0,7861,7861 Interior Trim Punch,1
12395,13388,Marsh Island,5848,high,750956.0,10500,10500 Paint 2,7
12396,13392,Marsh Island,2795,medium,771707.0,10780,10780 Customer Walk,1
12397,13397,Peninsula,5533,high,750956.0,4981,4981 Deliver Sinks,1
12398,13397,Peninsula,5533,high,750956.0,8460,8460 Install Countertops,1
12399,13462,Peninsula,4787,high,1490269.0,9020,9020 Electric Trim,5
12400,13388,Marsh Island,5848,high,750956.0,10300,10300 Install Driveway,1
12401,13339,Peninsula,5583,high,750956.0,10380,10380 As Built Survey,1
12402,13462,Peninsula,4787,high,1490269.0,6940,6940 Install Elevator,4
12403,13462,Peninsula,4787,high,1490269.0,8460,8460 Install Countertops,1
12404,13397,Peninsula,5533,high,750956.0,8920,8920 Install Water Heater/1st Trim,1
12405,13388,Marsh Island,5848,high,750956.0,8940,8940 Plumbing Trim,2
12406,13388,Marsh Island,5848,high,750956.0,10020,10020 Final Grade,1
12407,13496,Hailey's Glen,3443,medium,316917.0,10780,10780 Customer Walk,1
12408,13397,Peninsula,5533,high,750956.0,7140,7140 Exterior Painting,1
12409,13462,Peninsula,4787,high,1490269.0,8920,8920 Install Water Heater/1st Trim,1
12410,13397,Peninsula,5533,high,750956.0,9020,9020 Electric Trim,3
12411,13397,Peninsula,5533,high,750956.0,9100,9100 HVAC Trim / Set Unit,1
12412,13397,Peninsula,5533,high,750956.0,9820,9820 Install Gutters,1
12413,13388,Marsh Island,5848,high,750956.0,9990,9990 2nd Stage Termite Treatment,1
12414,13388,Marsh Island,5848,high,750956.0,10100,10100 Irrigation Installation,1
12415,13339,Peninsula,5583,high,750956.0,10420,10420 Powerwash,1
12416,13462,Peninsula,4787,high,1490269.0,0,cabcheck Check Cabinets for Damage,1
12417,13462,Peninsula,4787,high,1490269.0,4542,4542 Measure/Order Window Coverings,1
12418,13397,Peninsula,5533,high,750956.0,8465,8465 Install Tiled Backsplash,1
12419,13462,Peninsula,4787,high,1490269.0,9100,9100 HVAC Trim / Set Unit,2
12420,13388,Marsh Island,5848,high,750956.0,9110,9110 Gas Trim,3
12421,13462,Peninsula,4787,high,1490269.0,9260,9260 Structured Wiring Trim,1
12422,13397,Peninsula,5533,high,750956.0,9260,9260 Structured Wiring Trim,1
12423,13339,Peninsula,5583,high,750956.0,9500,9500 Blower Door/Ductblaster,1
12424,13339,Peninsula,5583,high,750956.0,10140,10140 Sod Installation,1
12425,13388,Marsh Island,5848,high,750956.0,10140,10140 Sod Installation,1
12426,13388,Marsh Island,5848,high,750956.0,10180,10180 Shrub Installation,1
12427,12832,Peninsula,4562,high,1090397.0,10820,10820 Settlement,1
12428,12832,Peninsula,4562,high,1090397.0,10888,10888 Release All Retainage,1
12429,12832,Peninsula,4562,high,1090397.0,11585,11585 Exterior Paint Retainage,1
12430,12832,Peninsula,4562,high,1090397.0,12180,12180 Driveway Retainage,1
12431,12832,Peninsula,4562,high,1090397.0,12180,12180.1 Driveway Top Coat Allocation,0
12432,13462,Peninsula,4787,high,1490269.0,8465,8465 Install Tiled Backsplash,1
12433,13388,Marsh Island,5848,high,750956.0,9740,9740 Fireplace Start Up,2
12434,13392,Marsh Island,2795,medium,771707.0,10820,10820 Settlement,1
12435,13392,Marsh Island,2795,medium,771707.0,10888,10888 Release All Retainage,1
12436,13392,Marsh Island,2795,medium,771707.0,11585,11585 Exterior Paint Retainage,1
12437,13392,Marsh Island,2795,medium,771707.0,11980,11980 Sod Retainage,1
12438,13392,Marsh Island,2795,medium,771707.0,12060,12060 Irrigation Retainage,1
12439,13392,Marsh Island,2795,medium,771707.0,12100,12100 Shrub Retainage,1
12440,13392,Marsh Island,2795,medium,771707.0,12180,12180 Driveway Retainage,1
12441,13392,Marsh Island,2795,medium,771707.0,12180,12180.1 Driveway Top Coat Allocation,0
12442,12832,Peninsula,4562,high,1090397.0,99999,99999 HOME COMPLETE,1
12443,13397,Peninsula,5533,high,750956.0,4590,4590 Install Metal Roofing,1
12444,13462,Peninsula,4787,high,1490269.0,6340,6340 Install Overhead Door,1
12445,13462,Peninsula,4787,high,1490269.0,7861,7861 Interior Trim Punch,1
12446,13388,Marsh Island,5848,high,750956.0,8980,8980 Final Plumbing Inspection,1
12447,13462,Peninsula,4787,high,1490269.0,9060,9060 Final Electric Inspection,1
12448,13397,Peninsula,5533,high,750956.0,9060,9060 Final Electric Inspection,1
12449,13388,Marsh Island,5848,high,750956.0,10380,10380 As Built Survey,1
12450,13392,Marsh Island,2795,medium,771707.0,99999,99999 HOME COMPLETE,1
12451,13397,Peninsula,5533,high,750956.0,6340,6340 Install Overhead Door,1
12452,13462,Peninsula,4787,high,1490269.0,6381,6381 Drywall Punch,1
12453,13339,Peninsula,5583,high,750956.0,7060,7060 Exterior Masonry Installation,2
12454,13397,Peninsula,5533,high,750956.0,7060,7060 Exterior Masonry Installation,2
12455,13462,Peninsula,4787,high,1490269.0,9101,9101 HVAC Startup,1
12456,12649,Peninsula,5996,high,750956.0,9756,9756 Receive N/S Appliance Pkg 2,1
12457,13462,Peninsula,4787,high,1490269.0,10300,10300 Install Driveway,1
12458,13397,Peninsula,5533,high,750956.0,10300,10300 Install Driveway,1
12459,13462,Peninsula,4787,high,1490269.0,10340,10340 Install Leadwalk & Comm. Sidewalk,1
12460,13397,Peninsula,5533,high,750956.0,10340,10340 Install Leadwalk & Comm. Sidewalk,1
12461,13496,Hailey's Glen,3443,medium,316917.0,10820,10820 Settlement,1
12462,13496,Hailey's Glen,3443,medium,316917.0,10888,10888 Release All Retainage,1
12463,13496,Hailey's Glen,3443,medium,316917.0,12180,12180 Driveway Retainage,1
12464,13397,Peninsula,5533,high,750956.0,6885,6885 Install Screen Porch Enclosure,1
12465,13462,Peninsula,4787,high,1490269.0,7060,7060 Exterior Masonry Installation,2
12466,13462,Peninsula,4787,high,1490269.0,8540,8540 Install Bath Accessories,1
12467,13462,Peninsula,4787,high,1490269.0,8545,8545 Install Mirrors,1
12468,13462,Peninsula,4787,high,1490269.0,8580,8580 Install Shower Enclosures,1
12469,13462,Peninsula,4787,high,1490269.0,8900,8900 Install Closet Shelving,1
12470,13397,Peninsula,5533,high,750956.0,9101,9101 HVAC Startup,1
12471,13462,Peninsula,4787,high,1490269.0,9980,9980 Final Cleaning,1
12472,13462,Peninsula,4787,high,1490269.0,10020,10020 Final Grade,1
12473,13462,Peninsula,4787,high,1490269.0,10260,10260 Install House Numbers,1
12474,13462,Peninsula,4787,high,1490269.0,10380,10380 As Built Survey,1
12475,13496,Hailey's Glen,3443,medium,316917.0,99999,99999 HOME COMPLETE,1
12476,13462,Peninsula,4787,high,1490269.0,4981,4981 Deliver Sinks,1
12477,13462,Peninsula,4787,high,1490269.0,7140,7140 Exterior Painting,1
12478,13397,Peninsula,5533,high,750956.0,8540,8540 Install Bath Accessories,1
12479,13397,Peninsula,5533,high,750956.0,8545,8545 Install Mirrors,1
12480,13397,Peninsula,5533,high,750956.0,8580,8580 Install Shower Enclosures,1
12481,13397,Peninsula,5533,high,750956.0,8900,8900 Install Closet Shelving,1
12482,13462,Peninsula,4787,high,1490269.0,8940,8940 Plumbing Trim,2
12483,13462,Peninsula,4787,high,1490269.0,9460,9460 Attic Insulation,1
12484,13462,Peninsula,4787,high,1490269.0,9700,9700 Install Hardwood Flooring,1
12485,13462,Peninsula,4787,high,1490269.0,9755,9755 Rec. GE Appliance Pkg2 Allocation,1
12486,13462,Peninsula,4787,high,1490269.0,9756,9756 Receive N/S Appliance Pkg 2,1
12487,13462,Peninsula,4787,high,1490269.0,9820,9820 Install Gutters,1
12488,13388,Marsh Island,5848,high,750956.0,9980,9980 Final Cleaning,1
12489,13462,Peninsula,4787,high,1490269.0,9990,9990 2nd Stage Termite Treatment,1
12490,13462,Peninsula,4787,high,1490269.0,10100,10100 Irrigation Installation,1
12491,13397,Peninsula,5533,high,750956.0,10260,10260 Install House Numbers,1
12492,13462,Peninsula,4787,high,1490269.0,10501,10501 Paint Retouch,1
12493,13462,Peninsula,4787,high,1490269.0,10620,10620 Punch Out Allocation,1
12494,13339,Peninsula,5583,high,750956.0,10660,10660 Quality Inspection,1
12495,13462,Peninsula,4787,high,1490269.0,10745,10745 Install Window Coverings,1
12496,13462,Peninsula,4787,high,1490269.0,9500,9500 Blower Door/Ductblaster,1
12497,13462,Peninsula,4787,high,1490269.0,9660,9660 Install Carpet Flooring,1
12498,13397,Peninsula,5533,high,750956.0,9700,9700 Install Hardwood Flooring,1
12499,13388,Marsh Island,5848,high,750956.0,9755,9755 Rec. GE Appliance Pkg2 Allocation,1
12500,13462,Peninsula,4787,high,1490269.0,10140,10140 Sod Installation,1
12501,13462,Peninsula,4787,high,1490269.0,10180,10180 Shrub Installation,1
12502,13388,Marsh Island,5848,high,750956.0,10501,10501 Paint Retouch,1
12503,13388,Marsh Island,5848,high,750956.0,10620,10620 Punch Out Allocation,1
12504,13462,Peninsula,4787,high,1490269.0,8980,8980 Final Plumbing Inspection,1
12505,13462,Peninsula,4787,high,1490269.0,9110,9110 Gas Trim,1
12506,13388,Marsh Island,5848,high,750956.0,9500,9500 Blower Door/Ductblaster,1
12507,13397,Peninsula,5533,high,750956.0,9660,9660 Install Carpet Flooring,1
12508,13339,Peninsula,5583,high,750956.0,9940,9940 Final Inspection,1
12509,13462,Peninsula,4787,high,1490269.0,9940,9940 Final Inspection,1
12510,13462,Peninsula,4787,high,1490269.0,9985,9985 Final Clean 2,1
12511,13462,Peninsula,4787,high,1490269.0,10420,10420 Powerwash,1
12512,13339,Peninsula,5583,high,750956.0,10745,10745 Install Window Coverings,1
12513,13397,Peninsula,5533,high,750956.0,7861,7861 Interior Trim Punch,1
12514,13397,Peninsula,5533,high,750956.0,8940,8940 Plumbing Trim,2
12515,13462,Peninsula,4787,high,1490269.0,9740,9740 Fireplace Start Up,1
12516,13388,Marsh Island,5848,high,750956.0,9940,9940 Final Inspection,1
12517,13388,Marsh Island,5848,high,750956.0,9985,9985 Final Clean 2,1
12518,13388,Marsh Island,5848,high,750956.0,10420,10420 Powerwash,1
12519,13397,Peninsula,5533,high,750956.0,6381,6381 Drywall Punch,1
12520,13388,Marsh Island,5848,high,750956.0,0,cabcheck Check Cabinets for Damage,1
12521,13397,Peninsula,5533,high,750956.0,8980,8980 Final Plumbing Inspection,1
12522,13397,Peninsula,5533,high,750956.0,9110,9110 Gas Trim,1
12523,13397,Peninsula,5533,high,750956.0,9980,9980 Final Cleaning,1
12524,13397,Peninsula,5533,high,750956.0,9740,9740 Fireplace Start Up,1
12525,13397,Peninsula,5533,high,750956.0,9755,9755 Rec. GE Appliance Pkg2 Allocation,1
12526,13397,Peninsula,5533,high,750956.0,9756,9756 Receive N/S Appliance Pkg 2,1
12527,13397,Peninsula,5533,high,750956.0,10501,10501 Paint Retouch,1
12528,13397,Peninsula,5533,high,750956.0,10620,10620 Punch Out Allocation,1
12529,13397,Peninsula,5533,high,750956.0,9500,9500 Blower Door/Ductblaster,1
12530,13397,Peninsula,5533,high,750956.0,9940,9940 Final Inspection,1
12531,13397,Peninsula,5533,high,750956.0,9985,9985 Final Clean 2,1
12532,13397,Peninsula,5533,high,750956.0,10380,10380 As Built Survey,1
12533,13397,Peninsula,5533,high,750956.0,10420,10420 Powerwash,1
12534,13388,Marsh Island,5848,high,750956.0,0,appcheck Check Appliances for Damage,1
12535,13397,Peninsula,5533,high,750956.0,10020,10020 Final Grade,1
12536,13339,Peninsula,5583,high,750956.0,10780,10780 Customer Walk,1
12537,13397,Peninsula,5533,high,750956.0,9990,9990 2nd Stage Termite Treatment,1
12538,13397,Peninsula,5533,high,750956.0,10100,10100 Irrigation Installation,1
12539,13462,Peninsula,4787,high,1490269.0,0,appcheck Check Appliances for Damage,1
12540,13397,Peninsula,5533,high,750956.0,10140,10140 Sod Installation,1
12541,13397,Peninsula,5533,high,750956.0,10180,10180 Shrub Installation,1
12542,13397,Peninsula,5533,high,750956.0,10660,10660 Quality Inspection,1
12543,13388,Marsh Island,5848,high,750956.0,10660,10660 Quality Inspection,1
12544,13339,Peninsula,5583,high,750956.0,10820,10820 Settlement,1
12545,13339,Peninsula,5583,high,750956.0,10888,10888 Release All Retainage,1
12546,13339,Peninsula,5583,high,750956.0,11585,11585 Exterior Paint Retainage,1
12547,13339,Peninsula,5583,high,750956.0,12180,12180 Driveway Retainage,1
12548,13339,Peninsula,5583,high,750956.0,12180,12180.1 Driveway Top Coat Allocation,0
12549,13462,Peninsula,4787,high,1490269.0,10660,10660 Quality Inspection,1
12550,13339,Peninsula,5583,high,750956.0,99999,99999 HOME COMPLETE,1
12551,13397,Peninsula,5533,high,750956.0,10780,10780 Customer Walk,1
12552,13099,Arbor-Lyn,2616,medium,381426.0,10820,10820 Settlement,1
12553,13388,Marsh Island,5848,high,750956.0,10780,10780 Customer Walk,1
12554,13462,Peninsula,4787,high,1490269.0,10780,10780 Customer Walk,1
12555,13397,Peninsula,5533,high,750956.0,10820,10820 Settlement,1
12556,13397,Peninsula,5533,high,750956.0,10888,10888 Release All Retainage,1
12557,13397,Peninsula,5533,high,750956.0,11585,11585 Exterior Paint Retainage,1
12558,13397,Peninsula,5533,high,750956.0,12180,12180 Driveway Retainage,1
12559,13397,Peninsula,5533,high,750956.0,99999,99999 HOME COMPLETE,1
12560,13388,Marsh Island,5848,high,750956.0,10820,10820 Settlement,1
12561,13388,Marsh Island,5848,high,750956.0,10888,10888 Release All Retainage,1
12562,13388,Marsh Island,5848,high,750956.0,11585,11585 Exterior Paint Retainage,1
12563,13388,Marsh Island,5848,high,750956.0,11980,11980 Sod Retainage,1
12564,13388,Marsh Island,5848,high,750956.0,12060,12060 Irrigation Retainage,1
12565,13388,Marsh Island,5848,high,750956.0,12100,12100 Shrub Retainage,1
12566,13388,Marsh Island,5848,high,750956.0,12180,12180 Driveway Retainage,1
12567,13388,Marsh Island,5848,high,750956.0,12180,12180.1 Driveway Top Coat Allocation,0
12568,13388,Marsh Island,5848,high,750956.0,99999,99999 HOME COMPLETE,1
12569,13462,Peninsula,4787,high,1490269.0,10820,10820 Settlement,1
12570,13462,Peninsula,4787,high,1490269.0,10888,10888 Release All Retainage,1
12571,13462,Peninsula,4787,high,1490269.0,11585,11585 Exterior Paint Retainage,1
12572,13462,Peninsula,4787,high,1490269.0,12180,12180 Driveway Retainage,1
12573,13462,Peninsula,4787,high,1490269.0,99999,99999 HOME COMPLETE,1
